# HAL

Schedule from MS Project, 2005-06-09 to 2005-06-27.
CBOE

## Calendars

- Standard: Mon-Fri 08:00-12:00, 13:00-17:00; Sat-Sun off.

## Resources

| Resource |
| --- |
| Rajeev Jain |
| Keval Desai |
| Crystal Chen |
| Matt Sochaki |
| Vivke |
| Chris Hield |
| Brad Shively |

## Schedule

| ID | WBS | Task | Duration | Start | Finish | Predecessors | Total slack | Constraint | Resources | Work |
| --- | --- | --- | --- | --- | --- | --- | --- | --- | --- | --- |
| 1 | 1 | **First Iteration** | 13d | 2005-06-09 | 2005-06-27 |  | 0d |  |  | 271.6h |
| 2 | 1.1 | Evaluate Order against NBBO and CBOE Market | 2d | 2005-06-09 | 2005-06-10 |  | 8d |  | Crystal Chen | 16h |
| 3 | 1.2 | Add new trading properties. | 2d | 2005-06-09 | 2005-06-10 |  | 8d |  | Keval Desai | 16h |
| 4 | 1.3 | Accept HAL order and evaluate if the order can be HAL Auctioned and then call to start HAL auction. | 5d | 2005-06-13 | 2005-06-17 |  | 3d | start no earlier than 2005-06-13 | Keval Desai | 40h |
| 5 | 1.4 | Start HAL Auction. | 5d | 2005-06-16 | 2005-06-22 |  | 0d | start no earlier than 2005-06-16 | Rajeev Jain [90%] | 36h |
| 6 | 1.5 | Accept cancel on Flashing order. | 4d | 2005-06-10 | 2005-06-15 |  | 5d | start no earlier than 2005-06-10 | Rajeev Jain [90%] | 28.8h |
| 7 | 1.6 | End flash without starting QT. | 3d | 2005-06-09 | 2005-06-13 |  | 7d |  | Matt Sochaki [25%] | 6h |
| 8 | 1.7 | Processing to “Trade & Ship” | 5d | 2005-06-13 | 2005-06-17 |  | 3d | start no earlier than 2005-06-13 | Crystal Chen | 40h |
| 9 | 1.8 | Change BOTR driver to feed volume data into TipsAdapter. | 3d | 2005-06-15 | 2005-06-17 |  | 6d | start no earlier than 2005-06-15 | Matt Sochaki [25%] | 6h |
| 10 | 1.9 | Quantify performance impact of volume information with BOTR. | 1d | 2005-06-09 | 2005-06-09 |  | 12d |  | Rajeev Jain [90%] | 7.2h |
| 11 | 1.10 | Feature Integration & Integration Testing with TPF. | 3d | 2005-06-23 | 2005-06-27 | 2, 3, 4, 5, 6, 7, 8 | 0d |  | Rajeev Jain [90%]; Keval Desai; Crystal Chen; Matt Sochaki [25%] | 75.6h |
