Schedule from MS Project, 2006-10-26 to 2006-12-01.
Cognizant Technology Solutions

## Calendars

- Standard: Mon-Fri 08:00-12:00, 13:00-17:00; Sat-Sun off.

## Resources

| Resource |
| --- |
| Cognizant |
| 2 |
| CBOE |
| Piwnicki |
| Bobbie |

## Schedule

| ID | WBS | Task | Duration | Start | Finish | Predecessors | Baseline start | Baseline finish | Baseline duration | Total slack | Free slack | Constraint | Resources | Work |
| --- | --- | --- | --- | --- | --- | --- | --- | --- | --- | --- | --- | --- | --- | --- |
| 1 | 1 | **Rollout Task** | 25.62d | 2006-10-26 16:00 | 2006-12-01 12:00 |  | 2006-05-02 08:00 | 2006-05-15 14:15 | 9.66d | 0d |  |  |  | 498.75h |
| 2 | 1.1 | **Database changes** | 0.38d | 2006-10-26 16:00 | 2006-10-27 10:00 |  | 2006-05-02 08:00 | 2006-05-02 08:00 | 0d | 15.05d | 0d |  |  | 3h |
| 3 | 1.1.1 | Version verification on all boxes | 1h | 2006-10-27 09:00 | 2006-10-27 10:00 | 4 | 2006-05-02 08:00 | 2006-05-02 08:00 | 0h | 15.05d |  | start no earlier than 2006-10-26 08:00 | CBOE | 1h |
| 4 | 1.1.2 | DBA creates "pseudo" tables in the infra schema and "links" to the current SMS tables | 1h | 2006-10-27 08:00 | 2006-10-27 09:00 | 5 |  |  |  | 15.05d | 0d | start no earlier than 2006-10-26 08:00 | CBOE | 1h |
| 5 | 1.1.3 | ITG checkout Script | 1h | 2006-10-26 16:00 | 2006-10-26 17:00 |  | 2006-05-02 08:00 | 2006-05-02 08:00 | 0h | 15.05d | 0d | finish no earlier than 2006-10-26 17:00 | CBOE | 1h |
| 6 | 1.2 | **Install and perform tests on GC A Side** | 1.57d | 2006-10-27 10:00 | 2006-10-30 15:35 | 2 | 2006-05-02 08:00 | 2006-05-03 11:30 | 1.44d | 15.05d | 0d |  | Cognizant | 42.58h |
| 7 | 1.2.1 | **Install on GC "A"; include EventChannel additions for Channel Broker (AMQ Channel)** | 0.74d | 2006-10-27 10:00 | 2006-10-27 16:55 |  | 2006-05-02 08:00 | 2006-05-02 15:20 | 0.79d | 15.05d | 0d |  | Cognizant | 11.5h |
| 8 | 1.2.1.2 | Server Side Full Cleanup and Infra shutdown and startup | 3.5h | 2006-10-27 10:00 | 2006-10-27 14:30 |  | 2006-05-02 10:00 | 2006-05-02 14:00 | 3h | 15.05d | 0d | start no earlier than 2006-10-27 09:00 | Cognizant | 3.5h |
| 9 | 1.2.1.2 | Check: SMSServer is going to run on infra side. Before starting up infra process, disable the SMSServer on the tradeeng A side. | 30min | 2006-10-27 14:30 | 2006-10-27 15:00 | 8 | 2006-05-02 08:00 | 2006-05-02 10:00 | 2h | 15.05d | 0d | start no earlier than 2006-05-02 08:00 | Cognizant | 0.5h |
| 10 | 1.2.1.3 | Check:Kill one CAS process to ensure quotes are cancelled | 20min | 2006-10-27 15:00 | 2006-10-27 15:20 | 9 |  |  |  | 15.05d | 0d |  |  |  |
| 11 | 1.2.1.3 | Time server full startup after cleanup (See Server Startup Timing Page) | 1h | 2006-10-27 15:20 | 2006-10-27 16:20 | 10 | 2006-05-02 14:00 | 2006-05-02 15:00 | 1h | 15.05d | 0d | start no earlier than 2006-10-27 08:00 | Cognizant | 1h |
| 12 | 1.2.1.4 | Backup for server Timings | 20min | 2006-10-27 16:20 | 2006-10-27 16:40 | 11 | 2006-05-02 15:00 | 2006-05-02 15:20 | 20min | 15.05d | 0d |  | Cognizant | 0.33h |
| 13 | 1.2.1.6 | Check: Sign off on Server Timings | 15min | 2006-10-27 16:40 | 2006-10-27 16:55 | 12 | 2006-05-02 15:20 | 2006-05-02 15:20 | 0h | 15.05d | 0.34d |  | CBOE | 0.25h |
| 14 | 1.2.2 | **User Login test** | 0.16d | 2006-10-27 16:55 | 2006-10-30 09:10 | 7 |  |  |  | 15.05d | 0d |  | Cognizant | 2.5h |
| 15 | 1.2.2.1 | Initial setup like bouncing Global Server and SACAS. | 30min | 2006-10-27 16:55 | 2006-10-30 08:25 |  |  |  |  | 15.05d | 0d |  | Cognizant | 0.5h |
| 16 | 1.2.2.2 | Login Test for 1 and 2 Users | 15min | 2006-10-30 08:25 | 2006-10-30 08:40 | 15 |  |  |  | 15.05d | 0d |  | Cognizant | 0.25h |
| 17 | 1.2.2.3 | Product State Update to CLOSE on VLO (visually timing Single class CLOSED with SAGUI) | 10min | 2006-10-30 08:40 | 2006-10-30 08:50 | 16 |  |  |  | 15.05d | 0d |  | Cognizant | 0.17h |
| 18 | 1.2.2.4 | Backup for Login User Test and Product state Update through SAGUI | 20min | 2006-10-30 08:50 | 2006-10-30 09:10 | 17 |  |  |  | 15.05d |  |  | Cognizant | 0.33h |
| 19 | 1.2.3 | **60 User Login Test** | 0.19d | 2006-10-30 09:10 | 2006-10-30 10:40 | 14 | 2006-03-30 11:20 | 2006-03-30 13:45 | 0.18d | 15.05d | 0d |  | Cognizant | 3h |
| 20 | 1.2.3.1 | bouncing Global Server process, SACAS and all other CASes for 60 User login Test and SAGUI login test | 30min | 2006-10-30 09:10 | 2006-10-30 09:40 |  | 2006-03-30 11:20 | 2006-03-30 11:45 | 25min | 15.05d | 0d |  | Cognizant | 0.5h |
| 21 | 1.2.3.2 | User login test and 60 user login test, test execution | 20min | 2006-10-30 09:40 | 2006-10-30 10:00 | 20 | 2006-03-30 11:45 | 2006-03-30 13:15 | 30min | 15.05d | 0d |  | Cognizant | 0.33h |
| 22 | 1.2.3.3 | Backup and Reporting | 20min | 2006-10-30 10:00 | 2006-10-30 10:20 | 21 | 2006-03-30 13:15 | 2006-03-30 13:45 | 30min | 15.05d | 0d |  | Cognizant | 0.33h |
| 23 | 1.2.3.4 | Check: Sign Off on Checkout Scripts, Logs and Results | 20min | 2006-10-30 10:20 | 2006-10-30 10:40 | 22 |  |  |  | 15.05d |  |  | CBOE | 0.33h |
| 24 | 1.2.2 | **ITG Checkout Script** | 0.19d | 2006-10-30 10:40 | 2006-10-30 13:10 | 19 | 2006-05-02 15:20 | 2006-05-02 16:50 | 0.19d | 15.05d | 0d |  | Cognizant | 3h |
| 25 | 1.2.1 | ITG Checkout for W_MAIN , ONE_MAIN session s | 40min | 2006-10-30 10:40 | 2006-10-30 11:20 | 13 | 2006-05-02 15:20 | 2006-05-02 16:00 | 40min | 15.05d | 0d |  | Cognizant | 0.67h |
| 26 | 1.2.5 | Backup for ITG Checkout (endOfPerformanceReport) | 20min | 2006-10-30 11:20 | 2006-10-30 11:40 | 25 | 2006-05-02 16:00 | 2006-05-02 16:20 | 20min | 15.05d | 0d |  | Cognizant | 0.33h |
| 27 | 1.2.4.3 | Check: Sign off on Checkout Scripts | 30min | 2006-10-30 11:40 | 2006-10-30 13:10 | 26 | 2006-05-02 16:20 | 2006-05-02 16:50 | 30min | 15.05d |  |  | CBOE | 0.5h |

| ID | WBS | Task | Duration | Start | Finish | Predecessors | Baseline start | Baseline finish | Baseline duration | Total slack | Free slack | Constraint | Resources | Work |
| --- | --- | --- | --- | --- | --- | --- | --- | --- | --- | --- | --- | --- | --- | --- |
| 28 | 1.2.4 | **GC failover to "B" side** | 0.3d | 2006-10-30 13:10 | 2006-10-30 15:35 | 24 | 2006-05-03 08:55 | 2006-05-03 11:30 | 0.32d | 15.05d |  |  | Cognizant | 4.17h |
| 29 | 1.2.4.1 | Initial setup for test Drivers (starting processes on GC Slave.) | 30min | 2006-10-30 13:10 | 2006-10-30 13:40 |  | 2006-05-03 08:55 | 2006-05-03 09:25 | 30min | 15.05d | 0d |  | Cognizant | 0.5h |
| 30 | 1.2.4.2 | Quote/Order BC20 Hybrid and ONE_MAIN traffic going before/during/after failover. Should not hang to verify no Global Dependency introduced. Test Execution | 45min | 2006-10-30 13:40 | 2006-10-30 14:25 | 29 | 2006-05-03 09:25 | 2006-05-03 10:10 | 45min | 15.05d | 0d |  | Cognizant | 0.75h |
| 31 | 1.2.4.5 | Generate Report for Failover Timings for all GC Processes (taking time from log files) | 30min | 2006-10-30 14:25 | 2006-10-30 14:55 | 30 | 2006-05-03 11:00 | 2006-05-03 11:30 | 30min | 15.05d | 0d |  | Cognizant | 0.5h |
| 32 | 1.2.5.4 | Check: SMSServer master is running on Infra A side, while SMSServer slave is running on Tradeng B (Tradeeng SMS must be made Master) | 20min | 2006-10-30 14:55 | 2006-10-30 15:15 | 31 |  |  |  | 15.05d | 0d |  |  |  |
| 33 | 1.2.5.5 | Check: Kill one CAS process to ensure quotes are cancelled | 20min | 2006-10-30 15:15 | 2006-10-30 15:35 | 32 |  |  |  | 15.05d |  |  |  |  |
| 34 | 1.2.6 | **User Login test** | 0.18d | 2006-10-30 08:00 | 2006-10-30 09:25 |  |  |  |  | 15.7d |  |  | Cognizant | 2.83h |
| 35 | 1.2.6.1 | Initial setup like bouncing Global Server and SACAS. | 30min | 2006-10-30 08:00 | 2006-10-30 08:30 |  |  |  |  | 14.77d | 0d | start no earlier than 2006-10-30 08:00 | Cognizant | 0.5h |
| 36 | 1.2.6.2 | Login Test for 1 and 2 Users | 15min | 2006-10-30 08:30 | 2006-10-30 08:45 | 35 |  |  |  | 14.77d | 0d | start no earlier than 2006-10-30 08:00 | Cognizant | 0.25h |
| 37 | 1.2.6.3 | Backup for Login User Test and Product state Update through SAGUI | 20min | 2006-10-30 08:45 | 2006-10-30 09:05 | 36 |  |  |  | 14.77d | 0d |  | Cognizant | 0.33h |
| 38 | 1.2.6.4 | Check: Sign Off on Logs and Results | 20min | 2006-10-30 09:05 | 2006-10-30 09:25 | 37 |  |  |  | 14.77d |  |  | CBOE | 0.33h |
| 39 | 1.2.7 | **ITG Checkout Script** | 0.19d | 2006-10-27 10:00 | 2006-10-27 11:30 |  | 2006-05-02 15:20 | 2006-05-02 16:50 | 0.19d | 16.44d |  |  | Cognizant | 3h |
| 40 | 1.2.1 | ITG Checkout for W_MAIN , ONE_MAIN session s | 40min | 2006-10-27 10:00 | 2006-10-27 10:40 |  | 2006-05-02 15:20 | 2006-05-02 16:00 | 40min | 16.44d | 0d |  | Cognizant | 0.67h |
| 41 | 1.2.5 | Backup for ITG Checkout (endOfPerformanceReport) | 20min | 2006-10-27 10:40 | 2006-10-27 11:00 | 40 | 2006-05-02 16:00 | 2006-05-02 16:20 | 20min | 16.44d | 0d |  | Cognizant | 0.33h |
| 42 | 1.2.7.3 | Check: Sign off on Checkout Scripts | 30min | 2006-10-27 11:00 | 2006-10-27 11:30 | 41 | 2006-05-02 16:20 | 2006-05-02 16:50 | 30min | 16.44d |  |  | CBOE | 0.5h |
| 43 | 1.3 | **Install and perform tests on GC B Side** | 1.99d | 2006-10-30 15:35 | 2006-11-01 15:30 | 6 | 2006-05-03 11:30 | 2006-05-04 11:50 | 1.04d | 15.05d | 0d |  | Cognizant | 74.92h |
| 44 | 1.3.1 | **Install GC "B" side** | 0.31d | 2006-10-30 15:35 | 2006-10-31 09:05 |  | 2006-05-03 11:30 | 2006-05-03 16:30 | 0.5d | 15.05d | 0d |  | Cognizant | 6.83h |
| 45 | 1.3.1.1 | Server Side Full Cleanup and Infra shutdown and startup | 2.5h | 2006-10-30 15:35 | 2006-10-31 09:05 |  | 2006-05-02 10:00 | 2006-05-02 14:00 | 3h | 15.05d |  | start no earlier than 2006-10-27 09:00 | Cognizant | 2.5h |
| 46 | 1.3.1.1 | Cleanup, createCurrentBusinessDay,starting all GC Processes on B side | 1h | 2006-10-30 15:35 | 2006-10-30 16:35 |  | 2006-05-03 11:30 | 2006-05-03 15:30 | 3h | 15.14d | 0d |  | Cognizant | 1h |
| 47 | 1.3.1.3 | Check: SMSServer is going to run on infra side. Before starting up infra process, disable the SMSServer on the tradeeng A side. | 30min | 2006-10-30 16:35 | 2006-10-31 08:05 | 46 | 2006-05-02 08:00 | 2006-05-02 10:00 | 2h | 15.14d | 0d | start no earlier than 2006-05-02 08:00 | Cognizant | 0.5h |
| 48 | 1.3.1.3 | Backup for GC Upgrade | 20min | 2006-10-31 08:05 | 2006-10-31 08:25 | 47 | 2006-05-03 16:10 | 2006-05-03 16:30 | 20min | 15.14d | 1.76d |  | Cognizant | 0.33h |
| 49 | 1.3.2 | **ITG Checkout Script** | 0.17d | 2006-10-31 09:05 | 2006-10-31 10:25 | 44 | 2006-05-02 15:20 | 2006-05-02 16:50 | 0.19d | 15.05d | 0d |  | Cognizant | 2.67h |
| 50 | 1.2.1 | ITG Checkout for W_MAIN , ONE_MAIN session s | 40min | 2006-10-31 09:05 | 2006-10-31 09:45 |  | 2006-05-02 15:20 | 2006-05-02 16:00 | 40min | 15.05d | 0d |  | Cognizant | 0.67h |
| 51 | 1.2.5 | Backup for ITG Checkout (endOfPerformanceReport) | 20min | 2006-10-31 09:45 | 2006-10-31 10:05 | 50 | 2006-05-02 16:00 | 2006-05-02 16:20 | 20min | 15.05d | 0d |  | Cognizant | 0.33h |
| 52 | 1.3.2.3 | Check: Sign off on Checkout Scripts | 20min | 2006-10-31 10:05 | 2006-10-31 10:25 | 51 | 2006-05-02 16:20 | 2006-05-02 16:50 | 30min | 15.05d |  |  | CBOE | 0.33h |

| ID | WBS | Task | Duration | Start | Finish | Predecessors | Baseline start | Baseline finish | Baseline duration | Total slack | Free slack | Constraint | Resources | Work |
| --- | --- | --- | --- | --- | --- | --- | --- | --- | --- | --- | --- | --- | --- | --- |
| 53 | 1.3.3 | **SMS failover from Infra A to Infra B** | 0.36d | 2006-10-31 10:25 | 2006-10-31 14:20 | 49 | 2006-05-03 08:55 | 2006-05-03 11:30 | 0.32d | 15.05d | 0d |  | Cognizant | 5.83h |
| 54 | 1.3.3.1 | Initial setup for test Drivers (starting processes on GC Slave.) | 30min | 2006-10-31 10:25 | 2006-10-31 10:55 |  | 2006-05-03 08:55 | 2006-05-03 09:25 | 30min | 15.05d | 0d |  | Cognizant | 0.5h |
| 55 | 1.3.3.2 | Quote/Order BC20 Hybrid and ONE_MAIN traffic going before/during/after failover. Should not hang to verify no Global Dependency introduced. Test Execution | 45min | 2006-10-31 10:55 | 2006-10-31 11:40 | 54 | 2006-05-03 09:25 | 2006-05-03 10:10 | 45min | 15.05d | 0d |  | Cognizant | 0.75h |
| 56 | 1.3.3.3 | ITG Checkout script (for W_MAIN and ONE_MAIN Session) | 30min | 2006-10-31 11:40 | 2006-10-31 13:10 | 55 | 2006-05-03 10:10 | 2006-05-03 10:40 | 30min | 15.05d | 0d |  | Cognizant | 0.5h |
| 57 | 1.3.3.4 | Backup for Failover and ITG Checkout | 20min | 2006-10-31 13:10 | 2006-10-31 13:30 | 56 | 2006-05-03 10:40 | 2006-05-03 11:00 | 20min | 15.05d | 0d |  | Cognizant | 0.33h |
| 58 | 1.3.3.5 | Generate Report for Failover Timings for all GC Processes (taking time from log files) | 30min | 2006-10-31 13:30 | 2006-10-31 14:00 | 57 | 2006-05-03 11:00 | 2006-05-03 11:30 | 30min | 15.05d | 0d |  | Cognizant | 0.5h |
| 59 | 1.3.3.6 | Check: Sign Off on Checkout Scripts, Logs and Results | 20min | 2006-10-31 14:00 | 2006-10-31 14:20 | 58 | 2006-05-03 11:30 | 2006-05-03 11:30 | 0h | 15.05d |  |  | CBOE | 0.33h |
| 60 | 1.3.4 | **User Login test** | 0.18d | 2006-10-31 14:20 | 2006-10-31 15:45 | 53 |  |  |  | 15.05d | 0d |  | Cognizant | 2.83h |
| 61 | 1.3.4.1 | Initial setup like bouncing Global Server and SACAS. | 30min | 2006-10-31 14:20 | 2006-10-31 14:50 |  |  |  |  | 15.05d | 0d | start no earlier than 2006-10-30 08:00 | Cognizant | 0.5h |
| 62 | 1.3.4.2 | Login Test for 1 and 2 Users | 15min | 2006-10-31 14:50 | 2006-10-31 15:05 | 61 |  |  |  | 15.05d | 0d | start no earlier than 2006-10-30 08:00 | Cognizant | 0.25h |
| 63 | 1.3.4.3 | Backup for Login User Test and Product state Update through SAGUI | 20min | 2006-10-31 15:05 | 2006-10-31 15:25 | 62 |  |  |  | 15.05d | 0d |  | Cognizant | 0.33h |
| 64 | 1.3.4.4 | Check: Sign Off on Logs and Results | 20min | 2006-10-31 15:25 | 2006-10-31 15:45 | 63 |  |  |  | 15.05d |  |  | CBOE | 0.33h |
| 65 | 1.3.5 | **60 User Login Test** | 0.19d | 2006-10-30 15:35 | 2006-10-31 08:05 |  | 2006-03-30 11:20 | 2006-03-30 13:45 | 0.18d | 16.85d |  |  | Cognizant | 3h |
| 66 | 1.3.5.1 | bouncing Global Server process, SACAS and all other CASes for 60 User login Test and SAGUI login test | 30min | 2006-10-30 15:35 | 2006-10-30 16:05 |  | 2006-03-30 11:20 | 2006-03-30 11:45 | 25min | 16.85d | 0d |  | Cognizant | 0.5h |
| 67 | 1.3.5.2 | User login test and 60 user login test, test execution | 20min | 2006-10-30 16:05 | 2006-10-30 16:25 | 66 | 2006-03-30 11:45 | 2006-03-30 13:15 | 30min | 16.85d | 0d |  | Cognizant | 0.33h |
| 68 | 1.3.5.3 | Backup and Reporting | 20min | 2006-10-30 16:25 | 2006-10-30 16:45 | 67 | 2006-03-30 13:15 | 2006-03-30 13:45 | 30min | 16.85d | 0d |  | Cognizant | 0.33h |
| 69 | 1.3.5.4 | Check: Sign Off on Checkout Scripts, Logs and Results | 20min | 2006-10-30 16:45 | 2006-10-31 08:05 | 68 |  |  |  | 16.85d |  |  | CBOE | 0.33h |
| 70 | 1.3.6 | **Create Real Infra Tables** | 0.12d | 2006-10-31 15:45 | 2006-10-31 16:45 | 60 | 2006-05-02 08:00 | 2006-05-02 08:00 | 0d | 15.05d | 0d |  | CBOE | 2h |
| 71 | 1.3.6.1 | the "pseudo" tables will be dropped and real table will be created in the infra database. | 1h | 2006-10-31 15:45 | 2006-10-31 16:45 |  |  |  |  | 15.05d |  | start no earlier than 2006-10-26 08:00 | CBOE | 1h |
| 72 | 1.3.7 | **SMSServer Double Failover: A to B and B to A** | 0.33d | 2006-10-31 16:45 | 2006-11-01 10:25 | 70 | 2006-05-03 08:55 | 2006-05-03 11:30 | 0.32d | 15.05d | 0d |  | Cognizant | 5.33h |
| 73 | 1.3.7.1 | Initial setup for test Drivers (starting processes on GC Slave.) | 30min | 2006-10-31 16:45 | 2006-11-01 08:15 |  | 2006-05-03 08:55 | 2006-05-03 09:25 | 30min | 15.05d | 0d |  | Cognizant | 0.5h |
| 74 | 1.3.7.2 | Quote/Order BC20 Hybrid and ONE_MAIN traffic going before/during/after failover. Should not hang to verify no Global Dependency introduced. Test Execution | 30min | 2006-11-01 08:15 | 2006-11-01 08:45 | 73 | 2006-05-03 09:25 | 2006-05-03 10:10 | 45min | 15.05d | 0d |  | Cognizant | 0.5h |
| 75 | 1.3.7.3 | ITG Checkout script (for W_MAIN and ONE_MAIN Session) | 30min | 2006-11-01 08:45 | 2006-11-01 09:15 | 74 | 2006-05-03 10:10 | 2006-05-03 10:40 | 30min | 15.05d | 0d |  | Cognizant | 0.5h |
| 76 | 1.3.7.4 | Backup for Failover and ITG Checkout | 20min | 2006-11-01 09:15 | 2006-11-01 09:35 | 75 | 2006-05-03 10:40 | 2006-05-03 11:00 | 20min | 15.05d | 0d |  | Cognizant | 0.33h |
| 77 | 1.3.7.5 | Generate Report for Failover Timings for all GC Processes (taking time from log files) | 30min | 2006-11-01 09:35 | 2006-11-01 10:05 | 76 | 2006-05-03 11:00 | 2006-05-03 11:30 | 30min | 15.05d | 0d |  | Cognizant | 0.5h |
| 78 | 1.3.7.6 | Check: Sign Off on Checkout Scripts, Logs and Results | 20min | 2006-11-01 10:05 | 2006-11-01 10:25 | 77 | 2006-05-03 11:30 | 2006-05-03 11:30 | 0h | 15.05d |  |  | CBOE | 0.33h |

| ID | WBS | Task | Duration | Start | Finish | Predecessors | Baseline start | Baseline finish | Baseline duration | Total slack | Free slack | Constraint | Resources | Work |
| --- | --- | --- | --- | --- | --- | --- | --- | --- | --- | --- | --- | --- | --- | --- |
| 79 | 1.3.8 | **Kill one CAS process (e.g., devcas5), ensure quotes are cancelled** | 0.18d | 2006-11-01 10:25 | 2006-11-01 11:50 | 72 |  |  |  | 15.05d |  |  |  | 2.83h |
| 80 | 1.3.8.1 | **User Login test** | 0.18d | 2006-11-01 10:25 | 2006-11-01 11:50 |  |  |  |  | 15.05d | 0d |  | Cognizant | 2.83h |
| 81 | 1.3.8.1.1 | Initial setup like bouncing Global Server and SACAS. | 30min | 2006-11-01 10:25 | 2006-11-01 10:55 |  |  |  |  | 15.05d | 0d | start no earlier than 2006-10-30 08:00 | Cognizant | 0.5h |
| 82 | 1.3.8.1.2 | Login Test for 1 and 2 Users | 15min | 2006-11-01 10:55 | 2006-11-01 11:10 | 81 |  |  |  | 15.05d | 0d | start no earlier than 2006-10-30 08:00 | Cognizant | 0.25h |
| 83 | 1.3.8.1.3 | Backup for Login User Test and Product state Update through SAGUI | 20min | 2006-11-01 11:10 | 2006-11-01 11:30 | 82 |  |  |  | 15.05d | 0d |  | Cognizant | 0.33h |
| 84 | 1.3.8.1.4 | Check: Sign Off on Logs and Results | 20min | 2006-11-01 11:30 | 2006-11-01 11:50 | 83 |  |  |  | 15.05d |  |  | CBOE | 0.33h |
| 85 | 1.3.9 | **GC fail back to "A" side** | 0.33d | 2006-11-01 11:50 | 2006-11-01 15:30 | 80 | 2006-05-03 08:55 | 2006-05-03 11:30 | 0.32d | 15.05d |  |  | Cognizant | 5.33h |
| 86 | 1.3.9.1 | Initial setup for test Drivers (starting processes on GC Slave.) | 30min | 2006-11-01 11:50 | 2006-11-01 13:20 |  | 2006-05-03 08:55 | 2006-05-03 09:25 | 30min | 15.05d | 0d |  | Cognizant | 0.5h |
| 87 | 1.3.9.2 | Quote/Order BC20 Hybrid and ONE_MAIN traffic going before/during/after failover. Should not hang to verify no Global Dependency introduced. Test Execution | 30min | 2006-11-01 13:20 | 2006-11-01 13:50 | 86 | 2006-05-03 09:25 | 2006-05-03 10:10 | 45min | 15.05d | 0d |  | Cognizant | 0.5h |
| 88 | 1.3.9.3 | ITG Checkout script (for W_MAIN and ONE_MAIN Session) | 30min | 2006-11-01 13:50 | 2006-11-01 14:20 | 87 | 2006-05-03 10:10 | 2006-05-03 10:40 | 30min | 15.05d | 0d |  | Cognizant | 0.5h |
| 89 | 1.3.9.4 | Backup for Failover and ITG Checkout | 20min | 2006-11-01 14:20 | 2006-11-01 14:40 | 88 | 2006-05-03 10:40 | 2006-05-03 11:00 | 20min | 15.05d | 0d |  | Cognizant | 0.33h |
| 90 | 1.3.9.5 | Generate Report for Failover Timings for all GC Processes (taking time from log files) | 30min | 2006-11-01 14:40 | 2006-11-01 15:10 | 89 | 2006-05-03 11:00 | 2006-05-03 11:30 | 30min | 15.05d | 0d |  | Cognizant | 0.5h |
| 91 | 1.3.9.6 | Check: Sign Off on Checkout Scripts, Logs and Results | 20min | 2006-11-01 15:10 | 2006-11-01 15:30 | 90 | 2006-05-03 11:30 | 2006-05-03 11:30 | 0h | 15.05d |  |  | CBOE | 0.33h |
| 92 | 1.3.10 | **User Login test** | 0.18d | 2006-10-30 15:35 | 2006-10-30 17:00 |  |  |  |  | 15.65d | 0d |  | Cognizant | 2.83h |
| 93 | 1.3.10.1 | Initial setup like bouncing Global Server and SACAS. | 30min | 2006-10-30 15:35 | 2006-10-30 16:05 |  |  |  |  | 15.65d | 0d | start no earlier than 2006-10-30 08:00 | Cognizant | 0.5h |
| 94 | 1.3.10.2 | Login Test for 1 and 2 Users | 15min | 2006-10-30 16:05 | 2006-10-30 16:20 | 93 |  |  |  | 15.65d | 0d | start no earlier than 2006-10-30 08:00 | Cognizant | 0.25h |
| 95 | 1.3.10.3 | Backup for Login User Test and Product state Update through SAGUI | 20min | 2006-10-30 16:20 | 2006-10-30 16:40 | 94 |  |  |  | 15.65d | 0d |  | Cognizant | 0.33h |
| 96 | 1.3.10.4 | Check: Sign Off on Logs and Results | 20min | 2006-10-30 16:40 | 2006-10-30 17:00 | 95 |  |  |  | 15.65d |  |  | CBOE | 0.33h |
| 97 | 1.3.11 | **ITG Checkout Script(Using new CAS)** | 0.23d | 2006-10-31 08:00 | 2006-10-31 09:50 | 92 | 2006-05-02 15:20 | 2006-05-02 16:50 | 0.19d | 15.65d | 0d |  | Cognizant | 3.67h |
| 98 | 1.2.1 | ITG Checkout for W_MAIN , ONE_MAIN session s | 1h | 2006-10-31 08:00 | 2006-10-31 09:00 |  | 2006-05-02 15:20 | 2006-05-02 16:00 | 40min | 15.65d | 0d |  | Cognizant | 1h |
| 99 | 1.2.5 | Backup for ITG Checkout (endOfPerformanceReport) | 30min | 2006-10-31 09:00 | 2006-10-31 09:30 | 98 | 2006-05-02 16:00 | 2006-05-02 16:20 | 20min | 15.65d | 0d |  | Cognizant | 0.5h |
| 100 | 1.3.11.3 | Check: Sign off on Checkout Scripts | 20min | 2006-10-31 09:30 | 2006-10-31 09:50 | 99 | 2006-05-02 16:20 | 2006-05-02 16:50 | 30min | 15.65d |  |  | CBOE | 0.33h |
| 101 | 1.12 | **Multi-class Quote step-up test with BOTR [Scenario 3]** | 0.36d | 2006-10-31 09:50 | 2006-10-31 13:45 | 97 | 2006-05-05 08:10 | 2006-05-05 11:15 | 0.39d | 15.65d | 0d |  | Cognizant | 5.83h |
| 102 | 1.12.1 | BC Cleanup, Initial Driver Setup, | 20min | 2006-10-31 09:50 | 2006-10-31 10:10 |  | 2006-05-05 08:10 | 2006-05-05 08:30 | 20min | 15.65d | 0d |  | Cognizant | 0.33h |
| 103 | 1.12.2 | Test Execution with BOTR | 1h | 2006-10-31 10:10 | 2006-10-31 11:10 | 102 | 2006-05-05 08:30 | 2006-05-05 09:30 | 1h | 15.65d | 0d |  | Cognizant | 1h |
| 104 | 1.12.4 | endOfPerformance and Backup | 45min | 2006-10-31 11:10 | 2006-10-31 11:55 | 103 | 2006-05-05 10:00 | 2006-05-05 10:45 | 45min | 15.65d | 0d |  | Cognizant | 0.75h |
| 105 | 1.12.5 | Reporting through KR site | 30min | 2006-10-31 11:55 | 2006-10-31 13:25 | 104 | 2006-05-05 10:45 | 2006-05-05 11:15 | 30min | 15.65d | 0d |  | Cognizant | 0.5h |
| 106 | 1.3.12.5 | Check: Sign Off on Logs and Results | 20min | 2006-10-31 13:25 | 2006-10-31 13:45 | 105 | 2006-05-05 11:15 | 2006-05-05 11:15 | 0h | 15.65d |  |  | CBOE | 0.33h |

| ID | WBS | Task | Duration | Start | Finish | Predecessors | Baseline start | Baseline finish | Baseline duration | Total slack | Free slack | Constraint | Resources | Work |
| --- | --- | --- | --- | --- | --- | --- | --- | --- | --- | --- | --- | --- | --- | --- |
| 107 | 1.12 | **Multi-class Quote step-up test No BOTR [Scenario 2]** | 0.33d | 2006-10-31 13:45 | 2006-10-31 16:25 | 101 | 2006-05-05 08:10 | 2006-05-05 11:15 | 0.39d | 15.65d | 0d |  | Cognizant | 5.33h |
| 108 | 1.12.1 | BC Cleanup, Initial Driver Setup, | 20min | 2006-10-31 13:45 | 2006-10-31 14:05 |  | 2006-05-05 08:10 | 2006-05-05 08:30 | 20min | 15.65d | 0d |  | Cognizant | 0.33h |
| 109 | 1.12.2 | Test Execution with NO BOTR | 45min | 2006-10-31 14:05 | 2006-10-31 14:50 | 108 | 2006-05-05 08:30 | 2006-05-05 09:30 | 1h | 15.65d | 0d |  | Cognizant | 0.75h |
| 110 | 1.12.4 | endOfPerformance and Backup | 45min | 2006-10-31 14:50 | 2006-10-31 15:35 | 109 | 2006-05-05 10:00 | 2006-05-05 10:45 | 45min | 15.65d | 0d |  | Cognizant | 0.75h |
| 111 | 1.12.5 | Reporting through KR site | 30min | 2006-10-31 15:35 | 2006-10-31 16:05 | 110 | 2006-05-05 10:45 | 2006-05-05 11:15 | 30min | 15.65d | 0d |  | Cognizant | 0.5h |
| 112 | 1.3.13.5 | Check: Sign Off on Logs and Results | 20min | 2006-10-31 16:05 | 2006-10-31 16:25 | 111 | 2006-05-05 11:15 | 2006-05-05 11:15 | 0h | 15.65d |  |  | CBOE | 0.33h |
| 113 | 1.10 | **Install Infra 8.5 on SACAS** | 0.12d | 2006-10-31 16:25 | 2006-11-01 08:25 | 107 | 2006-05-04 11:50 | 2006-05-04 14:50 | 0.25d | 15.65d | 0d |  | Cognizant | 2h |
| 114 | 1.10.1 | Configuration and starting processes | 20min | 2006-10-31 16:25 | 2006-10-31 16:45 |  | 2006-05-04 11:50 | 2006-05-04 13:50 | 1h | 15.65d | 0d |  | Cognizant | 0.33h |
| 115 | 1.10.3 | Backup and Reporting | 20min | 2006-10-31 16:45 | 2006-11-01 08:05 | 114 | 2006-05-04 14:30 | 2006-05-04 14:50 | 20min | 15.65d | 0d |  | Cognizant | 0.33h |
| 116 | 1.3.14.3 | Check: Sign Off on Checkout Scripts, Logs and Results | 20min | 2006-11-01 08:05 | 2006-11-01 08:25 | 115 | 2006-05-04 14:50 | 2006-05-04 14:50 | 0h | 15.65d |  |  | CBOE | 0.33h |
| 117 | 1.3.15 | **ITG Checkout Script** | 0.17d | 2006-11-01 08:25 | 2006-11-01 09:45 | 113 | 2006-05-02 15:20 | 2006-05-02 16:50 | 0.19d | 15.65d | 0.59d |  | Cognizant | 2.67h |
| 118 | 1.2.1 | ITG Checkout script | 40min | 2006-11-01 08:25 | 2006-11-01 09:05 |  | 2006-05-02 15:20 | 2006-05-02 16:00 | 40min | 15.65d | 0d |  | Cognizant | 0.67h |
| 119 | 1.2.5 | Backup for ITG Checkout (endOfPerformanceReport) | 20min | 2006-11-01 09:05 | 2006-11-01 09:25 | 118 | 2006-05-02 16:00 | 2006-05-02 16:20 | 20min | 15.65d | 0d |  | Cognizant | 0.33h |
| 120 | 1.3.15.3 | Check: Sign off on Checkout Scripts | 20min | 2006-11-01 09:25 | 2006-11-01 09:45 | 119 | 2006-05-02 16:20 | 2006-05-02 16:50 | 30min | 15.65d |  |  | CBOE | 0.33h |
| 121 | 1.4 | **Install and Perform Tests on Hybrid BC A Side** | 2.03d | 2006-11-01 15:30 | 2006-11-03 15:45 | 43 | 2006-05-04 11:50 | 2006-05-09 10:40 | 2.85d | 15.05d | 0d |  | Cognizant | 58.25h |
| 122 | 1.10 | **Install Hybrid BC (A)** | 0.27d | 2006-11-01 15:30 | 2006-11-02 08:40 | 117 | 2006-05-04 11:50 | 2006-05-04 14:50 | 0.25d | 15.05d | 0d |  | Cognizant | 4.33h |
| 123 | 1.10.1 | Configuration and starting processes | 1.5h | 2006-11-01 15:30 | 2006-11-01 17:00 | 48 | 2006-05-04 11:50 | 2006-05-04 13:50 | 1h | 15.05d | 0d |  | Cognizant | 1.5h |
| 124 | 1.10.3 | Backup and Reporting | 20min | 2006-11-02 08:00 | 2006-11-02 08:20 | 123 | 2006-05-04 14:30 | 2006-05-04 14:50 | 20min | 15.05d | 0d |  | Cognizant | 0.33h |
| 125 | 1.4.1.3 | Check: Sign Off on Checkout Scripts, Logs and Results | 20min | 2006-11-02 08:20 | 2006-11-02 08:40 | 124 | 2006-05-04 14:50 | 2006-05-04 14:50 | 0h | 15.05d | 0.12d |  | CBOE | 0.33h |
| 126 | 1.4.2 | **ITG Checkout Script** | 0.12d | 2006-11-02 08:40 | 2006-11-02 09:40 | 122 | 2006-05-02 15:20 | 2006-05-02 16:50 | 0.19d | 15.05d | 0d |  | Cognizant | 2h |
| 127 | 1.2.1 | ITG Checkout for W_MAIN Only | 20min | 2006-11-02 08:40 | 2006-11-02 09:00 |  | 2006-05-02 15:20 | 2006-05-02 16:00 | 40min | 15.05d | 0d |  | Cognizant | 0.33h |
| 128 | 1.2.5 | Backup for ITG Checkout (endOfPerformanceReport) | 20min | 2006-11-02 09:00 | 2006-11-02 09:20 | 127 | 2006-05-02 16:00 | 2006-05-02 16:20 | 20min | 15.05d | 0d |  | Cognizant | 0.33h |
| 129 | 1.4.2.3 | Check: Sign off on Checkout Scripts | 20min | 2006-11-02 09:20 | 2006-11-02 09:40 | 128 | 2006-05-02 16:20 | 2006-05-02 16:50 | 30min | 15.05d |  |  | CBOE | 0.33h |
| 130 | 1.4.3 | **Global Dependency Test** | 0.15d | 2006-11-02 09:40 | 2006-11-02 10:50 | 126 | 2006-05-04 14:50 | 2006-05-04 15:40 | 0.1d | 15.05d | 0d |  | Cognizant | 2.33h |
| 131 | 1.4.3.1 | Test Execution | 30min | 2006-11-02 09:40 | 2006-11-02 10:10 | 125 | 2006-05-04 14:50 | 2006-05-04 15:20 | 30min | 15.05d | 0d | start no earlier than 2006-05-05 08:00 | Cognizant | 0.5h |
| 132 | 1.4.3.2 | Log Backup and Reporting | 20min | 2006-11-02 10:10 | 2006-11-02 10:30 | 131 | 2006-05-04 15:20 | 2006-05-04 15:40 | 20min | 15.05d | 0d |  | Cognizant | 0.33h |
| 133 | 1.4.3.3 | Check:Log and Results verification | 20min | 2006-11-02 10:30 | 2006-11-02 10:50 | 132 | 2006-05-04 15:40 | 2006-05-04 15:40 | 0h | 15.05d | 0d |  | Cognizant | 0.33h |

| ID | WBS | Task | Duration | Start | Finish | Predecessors | Baseline start | Baseline finish | Baseline duration | Total slack | Free slack | Constraint | Resources | Work |
| --- | --- | --- | --- | --- | --- | --- | --- | --- | --- | --- | --- | --- | --- | --- |
| 134 | 1.4.4 | **Mult Class Quote Step-up with Quotes only single user logout (Scenario 0)** | 0.3d | 2006-11-02 10:50 | 2006-11-02 14:15 | 130 |  |  |  | 15.05d | 0d |  | Cognizant | 4.83h |
| 135 | 1.4.4.1 | BC Cleanup, Initial Driver Setup, | 20min | 2006-11-02 10:50 | 2006-11-02 11:10 | 133 |  |  |  | 15.05d | 0d | start no earlier than 2006-04-24 08:00 | Cognizant | 0.33h |
| 136 | 1.4.4.2 | Test Execution for No BOTR | 1h | 2006-11-02 11:10 | 2006-11-02 13:10 | 135 |  |  |  | 15.05d | 0d | start no earlier than 2006-04-24 08:00 | Cognizant | 1h |
| 137 | 1.4.4.3 | endOfPerformance and Backup | 30min | 2006-11-02 13:10 | 2006-11-02 13:40 | 136 |  |  |  | 15.05d | 0d |  | Cognizant | 0.5h |
| 138 | 1.4.4.4 | Reporting through KR site | 15min | 2006-11-02 13:40 | 2006-11-02 13:55 | 137 |  |  |  | 15.05d | 0d |  | Cognizant | 0.25h |
| 139 | 1.4.4.5 | Check: Sign Off on Logs and Results | 20min | 2006-11-02 13:55 | 2006-11-02 14:15 | 138 |  |  |  | 15.05d |  |  | CBOE | 0.33h |
| 140 | 1.4.5 | **Sinlge Class Quote Step-up with BOTR (Scenario 1)** | 0.3d | 2006-11-02 14:15 | 2006-11-02 16:40 | 134 |  |  |  | 15.05d | 0d |  | Cognizant | 4.83h |
| 141 | 1.4.5.1 | BC Cleanup, Initial Driver Setup, | 20min | 2006-11-02 14:15 | 2006-11-02 14:35 |  |  |  |  | 15.05d | 0d | start no earlier than 2006-04-24 08:00 | Cognizant | 0.33h |
| 142 | 1.4.5.2 | Test Execution with BOTR | 1h | 2006-11-02 14:35 | 2006-11-02 15:35 | 141 |  |  |  | 15.05d | 0d | start no earlier than 2006-04-24 08:00 | Cognizant | 1h |
| 143 | 1.4.5.3 | endOfPerformance and Backup | 30min | 2006-11-02 15:35 | 2006-11-02 16:05 | 142 |  |  |  | 15.05d | 0d |  | Cognizant | 0.5h |
| 144 | 1.4.5.4 | Reporting through KR site | 15min | 2006-11-02 16:05 | 2006-11-02 16:20 | 143 |  |  |  | 15.05d | 0d |  | Cognizant | 0.25h |
| 145 | 1.4.5.5 | Check: Sign Off on Logs and Results | 20min | 2006-11-02 16:20 | 2006-11-02 16:40 | 144 |  |  |  | 15.05d |  |  | CBOE | 0.33h |
| 146 | 1.12 | **Multi-class Quote step-up test with BOTR [Scenario 3]** | 0.31d | 2006-11-03 09:30 | 2006-11-03 12:00 | 140 | 2006-05-05 08:10 | 2006-05-05 11:15 | 0.39d | 15.4d |  |  | Cognizant | 5h |
| 147 | 1.12.1 | BC Cleanup, Initial Driver Setup, | 20min | 2006-11-03 09:30 | 2006-11-03 09:50 | 163 | 2006-05-05 08:10 | 2006-05-05 08:30 | 20min | 15.4d | 0d |  | Cognizant | 0.33h |
| 148 | 1.12.2 | Test Execution with BOTR | 1h | 2006-11-03 09:50 | 2006-11-03 10:50 | 147 | 2006-05-05 08:30 | 2006-05-05 09:30 | 1h | 15.4d | 0d |  | Cognizant | 1h |
| 149 | 1.12.4 | endOfPerformance and Backup | 30min | 2006-11-03 10:50 | 2006-11-03 11:20 | 148 | 2006-05-05 10:00 | 2006-05-05 10:45 | 45min | 15.4d | 0d |  | Cognizant | 0.5h |
| 150 | 1.12.5 | Reporting through KR site | 20min | 2006-11-03 11:20 | 2006-11-03 11:40 | 149 | 2006-05-05 10:45 | 2006-05-05 11:15 | 30min | 15.4d | 0d |  | Cognizant | 0.33h |
| 151 | 1.4.6.5 | Check: Sign Off on Logs and Results | 20min | 2006-11-03 11:40 | 2006-11-03 12:00 | 150 | 2006-05-05 11:15 | 2006-05-05 11:15 | 0h | 15.4d |  |  | CBOE | 0.33h |
| 152 | 1.14 | **Multi-class Order step-up test [Scenario 4]** | 0.28d | 2006-11-01 15:30 | 2006-11-02 08:45 |  | 2006-05-05 15:00 | 2006-05-05 16:55 | 0.24d | 16.15d |  |  | Cognizant | 4.5h |
| 153 | 1.14.1 | BC Cleanup, Initial Driver Setup, | 20min | 2006-11-01 15:30 | 2006-11-01 15:50 |  | 2006-05-05 15:00 | 2006-05-05 15:20 | 20min | 16.15d | 0d |  | Cognizant | 0.33h |
| 154 | 1.14.2 | Test Execution | 1h | 2006-11-01 15:50 | 2006-11-01 16:50 | 153 | 2006-05-05 15:20 | 2006-05-05 16:20 | 1h | 16.15d | 0d |  | Cognizant | 1h |
| 155 | 1.14.3 | endOfPerformance and Backup | 20min | 2006-11-01 16:50 | 2006-11-02 08:10 | 154 | 2006-05-05 16:20 | 2006-05-05 16:40 | 20min | 16.15d | 0d |  | Cognizant | 0.33h |
| 156 | 1.14.4 | Reporting through KR site | 15min | 2006-11-02 08:10 | 2006-11-02 08:25 | 155 | 2006-05-05 16:40 | 2006-05-05 16:55 | 15min | 16.15d | 0d |  | Cognizant | 0.25h |
| 157 | 1.4.7.5 | Check: Sign Off on Logs and Results | 20min | 2006-11-02 08:25 | 2006-11-02 08:45 | 156 | 2006-05-05 16:55 | 2006-05-05 16:55 | 0h | 16.15d | 1.09d |  | CBOE | 0.33h |

| ID | WBS | Task | Duration | Start | Finish | Predecessors | Baseline start | Baseline finish | Baseline duration | Total slack | Free slack | Resources | Work |
| --- | --- | --- | --- | --- | --- | --- | --- | --- | --- | --- | --- | --- | --- |
| 158 | 1.4.8 | **Hybrid test scenario 5 (Product State Change Test)** | 0.23d | 2006-11-02 16:40 | 2006-11-03 09:30 | 140 | 2006-05-04 15:40 | 2006-05-05 08:10 | 0.19d | 15.05d | 0d | Cognizant | 3.67h |
| 159 | 1.4.8.1 | BC Cleanup, Initial Driver Setup, | 20min | 2006-11-02 16:40 | 2006-11-02 17:00 | 133 | 2006-05-04 15:40 | 2006-05-04 16:00 | 20min | 15.05d | 0d | Cognizant | 0.33h |
| 160 | 1.4.8.2 | Test Execution - Global Server Bounce | 40min | 2006-11-03 08:00 | 2006-11-03 08:40 | 159 | 2006-05-04 16:00 | 2006-05-04 16:40 | 40min | 15.05d | 0d | Cognizant | 0.67h |
| 161 | 1.4.8.3 | Monitor and Backup logs | 20min | 2006-11-03 08:40 | 2006-11-03 09:00 | 160 | 2006-05-04 16:40 | 2006-05-04 17:00 | 20min | 15.05d | 0d | Cognizant | 0.33h |
| 162 | 1.4.8.4 | Reporting through KR site | 10min | 2006-11-03 09:00 | 2006-11-03 09:10 | 161 | 2006-05-05 08:00 | 2006-05-05 08:10 | 10min | 15.05d | 0d | Cognizant | 0.17h |
| 163 | 1.4.8.5 | Check: Sign Off on Logs and Results | 20min | 2006-11-03 09:10 | 2006-11-03 09:30 | 162 | 2006-05-05 08:10 | 2006-05-05 08:10 | 0h | 15.05d | 0d | CBOE | 0.33h |
| 164 | 1.15 | **Hybrid BC failover (new release to old release)** | 0.3d | 2006-11-03 09:30 | 2006-11-03 11:55 | 158 | 2006-05-08 16:55 | 2006-05-09 10:40 | 0.34d | 15.05d | 0d | Cognizant | 4.83h |
| 165 | 1.4.9.1 | BC Cleanup start A Side as Master | 20min | 2006-11-03 09:30 | 2006-11-03 09:50 | 157 | 2006-05-08 16:55 | 2006-05-09 08:15 | 20min | 15.05d | 0d | Cognizant | 0.33h |
| 166 | 1.15.1 | Initial setup for test Drivers (starting processes on BC Slave.) | 25min | 2006-11-03 09:50 | 2006-11-03 10:15 | 165 | 2006-05-09 08:15 | 2006-05-09 08:40 | 25min | 15.05d | 0d | Cognizant | 0.42h |
| 167 | 1.15.2 | Quote/Order BC20 Hybrid traffic going before/during/after failover. Test Execution | 30min | 2006-11-03 10:15 | 2006-11-03 10:45 | 166 | 2006-05-09 08:40 | 2006-05-09 09:10 | 30min | 15.05d | 0d | Cognizant | 0.5h |
| 168 | 1.15.4 | Backup for Failover and ITG Checkout | 20min | 2006-11-03 10:45 | 2006-11-03 11:05 | 167 | 2006-05-09 09:50 | 2006-05-09 10:10 | 20min | 15.05d | 0d | Cognizant | 0.33h |
| 169 | 1.15.5 | Generate Report for Failover Timings for all BC Processes (taking time from log files) | 30min | 2006-11-03 11:05 | 2006-11-03 11:35 | 168 | 2006-05-09 10:10 | 2006-05-09 10:40 | 30min | 15.05d | 0d | Cognizant | 0.5h |
| 170 | 1.4.9.6 | Check: Sign Off on Checkout Scripts, Logs and Results | 20min | 2006-11-03 11:35 | 2006-11-03 11:55 | 169 | 2006-05-09 10:40 | 2006-05-09 10:40 | 0h | 15.05d | 0.35d | CBOE | 0.33h |
| 171 | 1.4.10 | **ITG Checkout Script** | 0.12d | 2006-11-03 11:55 | 2006-11-03 13:55 | 164 | 2006-05-02 15:20 | 2006-05-02 16:50 | 0.19d | 15.05d | 0d | Cognizant | 2h |
| 172 | 1.2.1 | ITG Checkout for W_MAIN | 20min | 2006-11-03 11:55 | 2006-11-03 13:15 |  | 2006-05-02 15:20 | 2006-05-02 16:00 | 40min | 15.05d | 0d | Cognizant | 0.33h |
| 173 | 1.2.5 | Backup for ITG Checkout (endOfPerformanceReport) | 20min | 2006-11-03 13:15 | 2006-11-03 13:35 | 172 | 2006-05-02 16:00 | 2006-05-02 16:20 | 20min | 15.05d | 0d | Cognizant | 0.33h |
| 174 | 1.4.10.3 | Check: Sign off on Checkout Scripts | 20min | 2006-11-03 13:35 | 2006-11-03 13:55 | 173 | 2006-05-02 16:20 | 2006-05-02 16:50 | 30min | 15.05d |  | CBOE | 0.33h |
| 175 | 1.4.11 | **Hybrid test scenario 5 (Product State Change Test)** | 0.23d | 2006-11-03 13:55 | 2006-11-03 15:45 | 171 | 2006-05-04 15:40 | 2006-05-05 08:10 | 0.19d | 15.05d | 0d | Cognizant | 3.67h |
| 176 | 1.4.11.1 | BC Cleanup, Initial Driver Setup, | 20min | 2006-11-03 13:55 | 2006-11-03 14:15 |  | 2006-05-04 15:40 | 2006-05-04 16:00 | 20min | 15.05d | 0d | Cognizant | 0.33h |
| 177 | 1.4.11.2 | Test Execution - Global Server Bounce | 40min | 2006-11-03 14:15 | 2006-11-03 14:55 | 176 | 2006-05-04 16:00 | 2006-05-04 16:40 | 40min | 15.05d | 0d | Cognizant | 0.67h |
| 178 | 1.4.11.3 | Monitor and Backup logs | 20min | 2006-11-03 14:55 | 2006-11-03 15:15 | 177 | 2006-05-04 16:40 | 2006-05-04 17:00 | 20min | 15.05d | 0d | Cognizant | 0.33h |
| 179 | 1.4.11.4 | Reporting through KR site | 10min | 2006-11-03 15:15 | 2006-11-03 15:25 | 178 | 2006-05-05 08:00 | 2006-05-05 08:10 | 10min | 15.05d | 0d | Cognizant | 0.17h |
| 180 | 1.4.11.5 | Check: Sign Off on Logs and Results | 20min | 2006-11-03 15:25 | 2006-11-03 15:45 | 179 | 2006-05-05 08:10 | 2006-05-05 08:10 | 0h | 15.05d |  | CBOE | 0.33h |
| 181 | 1.5 | **Install and Perform Failoveron Hybrid BC B Side** | 1.95d | 2006-11-03 15:45 | 2006-11-07 15:20 | 121 | 2006-05-09 10:40 | 2006-05-09 16:25 | 0.59d | 15.05d | 0d | Cognizant | 50.42h |
| 182 | 1.16 | **Install Hybrid BC "B" side** | 0.35d | 2006-11-03 15:45 | 2006-11-06 09:35 | 175 | 2006-05-09 10:40 | 2006-05-09 14:00 | 0.29d | 15.05d | 0d | Cognizant | 5.67h |
| 183 | 1.5.1.1 | Cleanup | 20min | 2006-11-03 15:45 | 2006-11-03 16:05 | 170 | 2006-05-09 10:40 | 2006-05-09 11:00 | 20min | 15.05d | 0d | Cognizant | 0.33h |
| 184 | 1.16.1 | Configuration and starting processes | 1.5h | 2006-11-03 16:05 | 2006-11-06 08:35 | 183 | 2006-05-09 11:00 | 2006-05-09 12:00 | 1h | 15.05d | 0d | Cognizant | 1.5h |
| 185 | 1.16.2 | ITG Checkout script (W_MAIN Session) | 20min | 2006-11-06 08:35 | 2006-11-06 08:55 | 184 | 2006-05-09 13:00 | 2006-05-09 13:40 | 40min | 15.05d | 0d | Cognizant | 0.33h |
| 186 | 1.16.3 | Backup and Reporting | 20min | 2006-11-06 08:55 | 2006-11-06 09:15 | 185 | 2006-05-09 13:40 | 2006-05-09 14:00 | 20min | 15.05d | 0d | Cognizant | 0.33h |
| 187 | 1.5.1.5 | Check: Sign Off on Checkout Scripts, Logs and Results | 20min | 2006-11-06 09:15 | 2006-11-06 09:35 | 186 | 2006-05-09 14:00 | 2006-05-09 14:00 | 0h | 15.05d | 0d | CBOE | 0.33h |

| ID | WBS | Task | Duration | Start | Finish | Predecessors | Baseline start | Baseline finish | Baseline duration | Total slack | Free slack | Constraint | Resources | Work |
| --- | --- | --- | --- | --- | --- | --- | --- | --- | --- | --- | --- | --- | --- | --- |
| 188 | 1.17 | **Hybrid BC failover (new release to new release)** | 0.3d | 2006-11-06 09:35 | 2006-11-06 12:00 | 182 | 2006-05-09 14:00 | 2006-05-09 16:25 | 0.3d | 15.05d | 0d |  | Cognizant | 4.83h |
| 189 | 1.17.1 | Initial setup for test Drivers (starting processes on BC Slave.) | 25min | 2006-11-06 09:35 | 2006-11-06 10:00 | 187 | 2006-05-09 14:00 | 2006-05-09 14:25 | 25min | 15.05d | 0d |  | Cognizant | 0.42h |
| 190 | 1.17.2 | Quote/Order BC20 Hybrid traffic going before/during/after failover. Test Execution | 30min | 2006-11-06 10:00 | 2006-11-06 10:30 | 189 | 2006-05-09 14:25 | 2006-05-09 14:55 | 30min | 15.05d | 0d |  | Cognizant | 0.5h |
| 191 | 1.17.3 | ITG Checkout script (for W_MAIN Session) | 20min | 2006-11-06 10:30 | 2006-11-06 10:50 | 190 | 2006-05-09 14:55 | 2006-05-09 15:35 | 40min | 15.05d | 0d |  | Cognizant | 0.33h |
| 192 | 1.17.4 | Backup for Failover and ITG Checkout | 20min | 2006-11-06 10:50 | 2006-11-06 11:10 | 191 | 2006-05-09 15:35 | 2006-05-09 15:55 | 20min | 15.05d | 0d |  | Cognizant | 0.33h |
| 193 | 1.17.5 | Generate Report for Failover Timings for all BC Processes (taking time from log files) | 30min | 2006-11-06 11:10 | 2006-11-06 11:40 | 192 | 2006-05-09 15:55 | 2006-05-09 16:25 | 30min | 15.05d | 0d |  | Cognizant | 0.5h |
| 194 | 1.5.2.6 | Check: Sign Off on Checkout Scripts,Logs and Results | 20min | 2006-11-06 11:40 | 2006-11-06 12:00 | 193 | 2006-05-09 16:25 | 2006-05-09 16:25 | 0h | 15.05d |  |  | CBOE | 0.33h |
| 195 | 1.5.3 | **Sinlge Class Quote Step-up with BOTR (Scenario 1)** | 0.3d | 2006-11-06 13:00 | 2006-11-06 15:25 | 188 |  |  |  | 15.05d | 0d |  | Cognizant | 4.83h |
| 196 | 1.5.3.1 | BC Cleanup, Initial Driver Setup, | 20min | 2006-11-06 13:00 | 2006-11-06 13:20 |  |  |  |  | 15.05d | 0d | start no earlier than 2006-04-24 08:00 | Cognizant | 0.33h |
| 197 | 1.5.3.2 | Test Execution with BOTR | 1h | 2006-11-06 13:20 | 2006-11-06 14:20 | 196 |  |  |  | 15.05d | 0d | start no earlier than 2006-04-24 08:00 | Cognizant | 1h |
| 198 | 1.5.3.3 | endOfPerformance and Backup | 30min | 2006-11-06 14:20 | 2006-11-06 14:50 | 197 |  |  |  | 15.05d | 0d |  | Cognizant | 0.5h |
| 199 | 1.5.3.4 | Reporting through KR site | 15min | 2006-11-06 14:50 | 2006-11-06 15:05 | 198 |  |  |  | 15.05d | 0d |  | Cognizant | 0.25h |
| 200 | 1.5.3.5 | Check: Sign Off on Logs and Results | 20min | 2006-11-06 15:05 | 2006-11-06 15:25 | 199 |  |  |  | 15.05d |  |  | CBOE | 0.33h |
| 201 | 1.12 | **Multi-class Quote step-up test with BOTR [Scenario 3]** | 0.31d | 2006-11-06 15:25 | 2006-11-07 08:55 | 195 | 2006-05-05 08:10 | 2006-05-05 11:15 | 0.39d | 15.05d | 0d |  | Cognizant | 5h |
| 202 | 1.12.1 | BC Cleanup, Initial Driver Setup, | 20min | 2006-11-06 15:25 | 2006-11-06 15:45 |  | 2006-05-05 08:10 | 2006-05-05 08:30 | 20min | 15.05d | 0d |  | Cognizant | 0.33h |
| 203 | 1.12.2 | Test Execution with BOTR | 1h | 2006-11-06 15:45 | 2006-11-06 16:45 | 202 | 2006-05-05 08:30 | 2006-05-05 09:30 | 1h | 15.05d | 0d |  | Cognizant | 1h |
| 204 | 1.12.4 | endOfPerformance and Backup | 30min | 2006-11-06 16:45 | 2006-11-07 08:15 | 203 | 2006-05-05 10:00 | 2006-05-05 10:45 | 45min | 15.05d | 0d |  | Cognizant | 0.5h |
| 205 | 1.12.5 | Reporting through KR site | 20min | 2006-11-07 08:15 | 2006-11-07 08:35 | 204 | 2006-05-05 10:45 | 2006-05-05 11:15 | 30min | 15.05d | 0d |  | Cognizant | 0.33h |
| 206 | 1.5.4.5 | Check: Sign Off on Logs and Results | 20min | 2006-11-07 08:35 | 2006-11-07 08:55 | 205 | 2006-05-05 11:15 | 2006-05-05 11:15 | 0h | 15.05d |  |  | CBOE | 0.33h |
| 207 | 1.14 | **Multi-class Order step-up test [Scenario 4]** | 0.28d | 2006-11-07 08:55 | 2006-11-07 11:10 | 201 | 2006-05-05 15:00 | 2006-05-05 16:55 | 0.24d | 15.05d | 0d |  | Cognizant | 8.17h |
| 208 | 1.14.1 | BC Cleanup, Initial Driver Setup, | 20min | 2006-11-07 08:55 | 2006-11-07 09:15 |  | 2006-05-05 15:00 | 2006-05-05 15:20 | 20min | 15.05d | 0d |  | Cognizant | 0.33h |
| 209 | 1.14.2 | Test Execution | 1h | 2006-11-07 09:15 | 2006-11-07 10:15 | 208 | 2006-05-05 15:20 | 2006-05-05 16:20 | 1h | 15.05d | 0d |  | Cognizant | 1h |
| 210 | 1.14.3 | endOfPerformance and Backup | 20min | 2006-11-07 10:15 | 2006-11-07 10:35 | 209 | 2006-05-05 16:20 | 2006-05-05 16:40 | 20min | 15.05d | 0d |  | Cognizant | 0.33h |
| 211 | 1.14.4 | Reporting through KR site | 15min | 2006-11-07 10:35 | 2006-11-07 10:50 | 210 | 2006-05-05 16:40 | 2006-05-05 16:55 | 15min | 15.05d | 0d |  | Cognizant | 0.25h |
| 212 | 1.5.5.5 | Check: Sign Off on Logs and Results | 20min | 2006-11-07 10:50 | 2006-11-07 11:10 | 211 | 2006-05-05 16:55 | 2006-05-05 16:55 | 0h | 15.05d |  |  | CBOE | 0.33h |

| ID | WBS | Task | Duration | Start | Finish | Predecessors | Baseline start | Baseline finish | Baseline duration | Total slack | Free slack | Resources | Work |
| --- | --- | --- | --- | --- | --- | --- | --- | --- | --- | --- | --- | --- | --- |
| 213 | 1.5.5.6 | **Hybrid test scenario 5 (Product State Change Test)** | 0.23d | 2006-11-07 08:55 | 2006-11-07 10:45 |  | 2006-05-04 15:40 | 2006-05-05 08:10 | 0.19d | 15.1d |  | Cognizant | 3.67h |
| 214 | 1.5.5.6.1 | BC Cleanup, Initial Driver Setup, | 20min | 2006-11-07 08:55 | 2006-11-07 09:15 |  | 2006-05-04 15:40 | 2006-05-04 16:00 | 20min | 15.1d | 0d | Cognizant | 0.33h |
| 215 | 1.5.5.6.2 | Test Execution - Global Server Bounce | 40min | 2006-11-07 09:15 | 2006-11-07 09:55 | 214 | 2006-05-04 16:00 | 2006-05-04 16:40 | 40min | 15.1d | 0d | Cognizant | 0.67h |
| 216 | 1.5.5.6.3 | Monitor and Backup logs | 20min | 2006-11-07 09:55 | 2006-11-07 10:15 | 215 | 2006-05-04 16:40 | 2006-05-04 17:00 | 20min | 15.1d | 0d | Cognizant | 0.33h |
| 217 | 1.5.5.6.4 | Reporting through KR site | 10min | 2006-11-07 10:15 | 2006-11-07 10:25 | 216 | 2006-05-05 08:00 | 2006-05-05 08:10 | 10min | 15.1d | 0d | Cognizant | 0.17h |
| 218 | 1.5.5.6.5 | Check: Sign Off on Logs and Results | 20min | 2006-11-07 10:25 | 2006-11-07 10:45 | 217 | 2006-05-05 08:10 | 2006-05-05 08:10 | 0h | 15.1d |  | CBOE | 0.33h |
| 219 | 1.5.6 | **Hybrid test scenario 5 (Product State Change Test)** | 0.23d | 2006-11-07 11:10 | 2006-11-07 14:00 | 207 | 2006-05-04 15:40 | 2006-05-05 08:10 | 0.19d | 15.05d | 0d | Cognizant | 3.67h |
| 220 | 1.5.6.1 | BC Cleanup, Initial Driver Setup, | 20min | 2006-11-07 11:10 | 2006-11-07 11:30 |  | 2006-05-04 15:40 | 2006-05-04 16:00 | 20min | 15.05d | 0d | Cognizant | 0.33h |
| 221 | 1.5.6.2 | Test Execution - Global Server Bounce | 40min | 2006-11-07 11:30 | 2006-11-07 13:10 | 220 | 2006-05-04 16:00 | 2006-05-04 16:40 | 40min | 15.05d | 0d | Cognizant | 0.67h |
| 222 | 1.5.6.3 | Monitor and Backup logs | 20min | 2006-11-07 13:10 | 2006-11-07 13:30 | 221 | 2006-05-04 16:40 | 2006-05-04 17:00 | 20min | 15.05d | 0d | Cognizant | 0.33h |
| 223 | 1.5.6.4 | Reporting through KR site | 10min | 2006-11-07 13:30 | 2006-11-07 13:40 | 222 | 2006-05-05 08:00 | 2006-05-05 08:10 | 10min | 15.05d | 0d | Cognizant | 0.17h |
| 224 | 1.5.6.5 | Check: Sign Off on Logs and Results | 20min | 2006-11-07 13:40 | 2006-11-07 14:00 | 223 | 2006-05-05 08:10 | 2006-05-05 08:10 | 0h | 15.05d |  | CBOE | 0.33h |
| 225 | 1.5.7 | **ITG Checkout Script** | 0.17d | 2006-11-07 14:00 | 2006-11-07 15:20 | 219 | 2006-05-02 15:20 | 2006-05-02 16:50 | 0.19d | 15.05d |  | Cognizant | 2.67h |
| 226 | 1.2.1 | ITG Checkout script | 40min | 2006-11-07 14:00 | 2006-11-07 14:40 |  | 2006-05-02 15:20 | 2006-05-02 16:00 | 40min | 15.05d | 0d | Cognizant | 0.67h |
| 227 | 1.2.5 | Backup for ITG Checkout (endOfPerformanceReport) | 20min | 2006-11-07 14:40 | 2006-11-07 15:00 | 226 | 2006-05-02 16:00 | 2006-05-02 16:20 | 20min | 15.05d | 0d | Cognizant | 0.33h |
| 228 | 1.5.7.3 | Check: Sign off on Checkout Scripts | 20min | 2006-11-07 15:00 | 2006-11-07 15:20 | 227 | 2006-05-02 16:20 | 2006-05-02 16:50 | 30min | 15.05d |  | CBOE | 0.33h |
| 229 | 1.6 | **Install RTH BC, COF_MAIN, CFE_MAIN, W_STOCK (A)** | 0.53d | 2006-11-07 15:20 | 2006-11-08 10:35 | 181 | 2006-05-09 16:25 | 2006-05-11 08:10 | 1.09d | 15.05d |  | Cognizant | 12.75h |
| 230 | 1.26 | **Install RTH BC, COF_MAIN, CFE_MAIN, W_STOCK (A)** | 0.31d | 2006-11-07 15:20 | 2006-11-08 08:50 |  | 2006-05-09 16:25 | 2006-05-10 09:25 | 0.25d | 15.05d | 0d | Cognizant | 5h |
| 231 | 1.26.1 | Configuration and starting processes | 1.5h | 2006-11-07 15:20 | 2006-11-07 16:50 |  | 2006-05-09 16:25 | 2006-05-10 08:25 | 1h | 15.05d | 0d | Cognizant | 1.5h |
| 232 | 1.26.3 | Backup and Reporting | 40min | 2006-11-07 16:50 | 2006-11-08 08:30 | 231 | 2006-05-10 09:05 | 2006-05-10 09:25 | 20min | 15.05d | 0d | Cognizant | 0.67h |
| 233 | 1.6.1.3 | Check: Sign Off on Checkout Scripts, Logs and Results | 20min | 2006-11-08 08:30 | 2006-11-08 08:50 | 232 | 2006-05-10 09:25 | 2006-05-10 09:25 | 0h | 15.05d |  | CBOE | 0.33h |
| 234 | 1.6.2 | **ITG Checkout script (New release, No RTH)** | 0.22d | 2006-11-08 08:50 | 2006-11-08 10:35 | 230 | 2006-05-02 15:20 | 2006-05-02 16:50 | 0.19d | 15.05d | 0d | Cognizant | 3.5h |
| 235 | 1.2.1 | ITG Checkout script | 45min | 2006-11-08 08:50 | 2006-11-08 09:35 |  | 2006-05-02 15:20 | 2006-05-02 16:00 | 40min | 15.05d | 0d | Cognizant | 0.75h |
| 236 | 1.2.5 | Backup for ITG Checkout (endOfPerformanceReport) | 40min | 2006-11-08 09:35 | 2006-11-08 10:15 | 235 | 2006-05-02 16:00 | 2006-05-02 16:20 | 20min | 15.05d | 0d | Cognizant | 0.67h |
| 237 | 1.6.2.3 | Check: Sign off on Checkout Scripts | 20min | 2006-11-08 10:15 | 2006-11-08 10:35 | 236 | 2006-05-02 16:20 | 2006-05-02 16:50 | 30min | 15.05d |  | CBOE | 0.33h |

| ID | WBS | Task | Duration | Start | Finish | Predecessors | Baseline start | Baseline finish | Baseline duration | Total slack | Free slack | Resources | Work |
| --- | --- | --- | --- | --- | --- | --- | --- | --- | --- | --- | --- | --- | --- |
| 238 | 1.6 | **Install and Perform Tests on ONE_MAIN BC A Side** | 2.12d | 2006-11-08 10:35 | 2006-11-10 11:35 | 234 | 2006-05-09 16:25 | 2006-05-11 08:10 | 1.09d | 15.05d |  | Cognizant | 53.33h |
| 239 | 1.26 | **Install ONE_MAIN BC (A)** | 0.31d | 2006-11-08 10:35 | 2006-11-08 14:05 |  | 2006-05-09 16:25 | 2006-05-10 09:25 | 0.25d | 15.05d | 0d | Cognizant | 5h |
| 240 | 1.26.1 | Configuration and starting processes | 1.5h | 2006-11-08 10:35 | 2006-11-08 13:05 |  | 2006-05-09 16:25 | 2006-05-10 08:25 | 1h | 15.05d | 0d | Cognizant | 1.5h |
| 241 | 1.26.2 | ITG Checkout script (ONE_MAIN Session) | 20min | 2006-11-08 13:05 | 2006-11-08 13:25 | 240 | 2006-05-10 08:25 | 2006-05-10 09:05 | 40min | 15.05d | 0d | Cognizant | 0.33h |
| 242 | 1.26.3 | Backup and Reporting | 20min | 2006-11-08 13:25 | 2006-11-08 13:45 | 241 | 2006-05-10 09:05 | 2006-05-10 09:25 | 20min | 15.05d | 0d | Cognizant | 0.33h |
| 243 | 1.7.1.4 | Check: Sign Off on Checkout Scripts, Logs and Results | 20min | 2006-11-08 13:45 | 2006-11-08 14:05 | 242 | 2006-05-10 09:25 | 2006-05-10 09:25 | 0h | 15.05d |  | CBOE | 0.33h |
| 244 | 1.7.2 | **ITG Checkout script (New release)** | 0.15d | 2006-11-08 14:05 | 2006-11-08 15:15 | 239 | 2006-05-02 15:20 | 2006-05-02 16:50 | 0.19d | 15.05d | 0d | Cognizant | 2.33h |
| 245 | 1.2.1 | ITG Checkout script | 20min | 2006-11-08 14:05 | 2006-11-08 14:25 |  | 2006-05-02 15:20 | 2006-05-02 16:00 | 40min | 15.05d | 0d | Cognizant | 0.33h |
| 246 | 1.2.5 | Backup for ITG Checkout (endOfPerformanceReport) | 30min | 2006-11-08 14:25 | 2006-11-08 14:55 | 245 | 2006-05-02 16:00 | 2006-05-02 16:20 | 20min | 15.05d | 0d | Cognizant | 0.5h |
| 247 | 1.7.2.3 | Check: Sign off on Checkout Scripts | 20min | 2006-11-08 14:55 | 2006-11-08 15:15 | 246 | 2006-05-02 16:20 | 2006-05-02 16:50 | 30min | 15.05d |  | CBOE | 0.33h |
| 248 | 1.28 | **Multi-class Quote step-up test [Scenario 1]** | 0.33d | 2006-11-08 15:15 | 2006-11-09 08:55 | 244 | 2006-05-10 11:15 | 2006-05-10 14:25 | 0.27d | 15.05d | 0d | Cognizant | 5.33h |
| 249 | 1.28.1 | BC Cleanup, Initial Driver Setup, | 30min | 2006-11-08 15:15 | 2006-11-08 15:45 |  | 2006-05-10 11:15 | 2006-05-10 11:35 | 20min | 15.05d | 0d | Cognizant | 0.5h |
| 250 | 1.28.2 | Test Execution | 1h | 2006-11-08 15:45 | 2006-11-08 16:45 | 249 | 2006-05-10 11:35 | 2006-05-10 13:35 | 1h | 15.05d | 0d | Cognizant | 1h |
| 251 | 1.28.3 | endOfPerformance and Backup | 30min | 2006-11-08 16:45 | 2006-11-09 08:15 | 250 | 2006-05-10 13:35 | 2006-05-10 14:05 | 30min | 15.05d | 0d | Cognizant | 0.5h |
| 252 | 1.28.4 | Reporting through KR site | 20min | 2006-11-09 08:15 | 2006-11-09 08:35 | 251 | 2006-05-10 14:05 | 2006-05-10 14:25 | 20min | 15.05d | 0d | Cognizant | 0.33h |
| 253 | 1.7.3.5 | Check: Sign Off on Logs and Results | 20min | 2006-11-09 08:35 | 2006-11-09 08:55 | 252 | 2006-05-10 14:25 | 2006-05-10 14:25 | 0h | 15.05d | 1.06d | CBOE | 0.33h |
| 254 | 1.27 | **Multi-class Order step-up test for ONE_MAIN [Scenario 2]** | 0.27d | 2006-11-09 08:55 | 2006-11-09 11:05 | 248 | 2006-05-10 09:25 | 2006-05-10 11:15 | 0.23d | 15.05d | 0d | Cognizant | 4.33h |
| 255 | 1.27.1 | BC Cleanup, Initial Driver Setup, | 20min | 2006-11-09 08:55 | 2006-11-09 09:15 |  | 2006-05-10 09:25 | 2006-05-10 09:45 | 20min | 15.05d | 0d | Cognizant | 0.33h |
| 256 | 1.27.2 | Test Execution for No BOTR | 1h | 2006-11-09 09:15 | 2006-11-09 10:15 | 255 | 2006-05-10 09:45 | 2006-05-10 10:45 | 1h | 15.05d | 0d | Cognizant | 1h |
| 257 | 1.27.3 | endOfPerformance and Backup | 15min | 2006-11-09 10:15 | 2006-11-09 10:30 | 256 | 2006-05-10 10:45 | 2006-05-10 11:00 | 15min | 15.05d | 0d | Cognizant | 0.25h |
| 258 | 1.27.4 | Reporting through KR site | 15min | 2006-11-09 10:30 | 2006-11-09 10:45 | 257 | 2006-05-10 11:00 | 2006-05-10 11:15 | 15min | 15.05d | 0d | Cognizant | 0.25h |
| 259 | 1.7.4.5 | Check: Sign Off on Logs and Results | 20min | 2006-11-09 10:45 | 2006-11-09 11:05 | 258 | 2006-05-10 11:15 | 2006-05-10 11:15 | 0h | 15.05d |  | CBOE | 0.33h |
| 260 | 1.7.5 | **4 Hour Sanity Test** | 0.79d | 2006-11-09 11:05 | 2006-11-10 09:25 | 254 | 2006-05-11 13:55 | 2006-05-12 10:55 | 0.75d | 15.05d | 0d | Cognizant | 12.67h |
| 261 | 1.7.5.1 | Cleanup for W_MAIN and ONE_MAIN BC | 20min | 2006-11-09 11:05 | 2006-11-09 11:25 |  | 2006-05-11 13:55 | 2006-05-11 14:15 | 20min | 15.05d | 0d | Cognizant | 0.33h |
| 262 | 1.7.5.2 | Driver setup | 20min | 2006-11-09 11:25 | 2006-11-09 11:45 | 261 | 2006-05-11 14:15 | 2006-05-11 14:35 | 20min | 15.05d | 0d | Cognizant | 0.33h |
| 263 | 1.7.5.3 | CAS bounce | 20min | 2006-11-09 11:45 | 2006-11-09 13:05 | 262 | 2006-05-11 14:35 | 2006-05-11 14:55 | 20min | 15.05d | 0d | Cognizant | 0.33h |
| 264 | 1.7.5.4 | 4 hour Sanity Check | 4h | 2006-11-09 13:05 | 2006-11-10 08:05 | 263 | 2006-05-11 14:55 | 2006-05-12 09:55 | 4h | 15.05d | 0d | Cognizant | 4h |
| 265 | 1.7.5.5 | endOfPerformance and Backup and Reporting | 1h | 2006-11-10 08:05 | 2006-11-10 09:05 | 264 | 2006-05-12 09:55 | 2006-05-12 10:55 | 1h | 15.05d | 0d | Cognizant | 1h |
| 266 | 1.7.5.6 | Check: Sign Off on Logs and Results | 20min | 2006-11-10 09:05 | 2006-11-10 09:25 | 265 | 2006-05-12 10:55 | 2006-05-12 10:55 | 0h | 15.05d |  | CBOE | 0.33h |

| ID | WBS | Task | Duration | Start | Finish | Predecessors | Baseline start | Baseline finish | Baseline duration | Total slack | Free slack | Constraint | Resources | Work |
| --- | --- | --- | --- | --- | --- | --- | --- | --- | --- | --- | --- | --- | --- | --- |
| 267 | 1.30 | **Failover ONE_MAIN BC (New to Old)** | 0.27d | 2006-11-10 09:25 | 2006-11-10 11:35 | 260 | 2006-05-10 14:25 | 2006-05-11 08:10 | 0.34d | 15.05d |  |  | Cognizant | 4.33h |
| 268 | 1.7.6.1 | Cleanup | 20min | 2006-11-10 09:25 | 2006-11-10 09:45 | 253 | 2006-05-10 14:25 | 2006-05-10 14:45 | 20min | 15.05d | 0d |  | Cognizant | 0.33h |
| 269 | 1.30.1 | Initial setup for test Drivers (starting processes on BC Slave.) | 10min | 2006-11-10 09:45 | 2006-11-10 09:55 | 268 | 2006-05-10 14:45 | 2006-05-10 15:10 | 25min | 15.05d | 0d |  | Cognizant | 0.17h |
| 270 | 1.30.2 | Quote/Order ONE_MAIN traffic going before/during/after failover. Test Execution | 30min | 2006-11-10 09:55 | 2006-11-10 10:25 | 269 | 2006-05-10 15:10 | 2006-05-10 15:40 | 30min | 15.05d | 0d |  | Cognizant | 0.5h |
| 271 | 1.30.4 | Backup for Failover | 20min | 2006-11-10 10:25 | 2006-11-10 10:45 | 270 | 2006-05-10 16:20 | 2006-05-10 16:40 | 20min | 15.05d | 0d |  | Cognizant | 0.33h |
| 272 | 1.30.5 | Generate Report for Failover Timings for all BC Processes (taking time from log files) | 30min | 2006-11-10 10:45 | 2006-11-10 11:15 | 271 | 2006-05-10 16:40 | 2006-05-11 08:10 | 30min | 15.05d | 0d |  | Cognizant | 0.5h |
| 273 | 1.7.6.6 | Check: Sign Off on Checkout Scripts,Logs and Results | 20min | 2006-11-10 11:15 | 2006-11-10 11:35 | 272 | 2006-05-11 08:10 | 2006-05-11 08:10 | 0h | 15.05d |  |  | CBOE | 0.33h |
| 274 | 1.7.7 | **ITG Checkout script (New release)** | 0.15d | 2006-11-08 10:35 | 2006-11-08 11:45 |  | 2006-05-02 15:20 | 2006-05-02 16:50 | 0.19d | 17.03d |  |  | Cognizant | 2.33h |
| 275 | 1.2.1 | ITG Checkout script | 20min | 2006-11-08 10:35 | 2006-11-08 10:55 |  | 2006-05-02 15:20 | 2006-05-02 16:00 | 40min | 17.03d | 0d |  | Cognizant | 0.33h |
| 276 | 1.2.5 | Backup for ITG Checkout (endOfPerformanceReport) | 30min | 2006-11-08 10:55 | 2006-11-08 11:25 | 275 | 2006-05-02 16:00 | 2006-05-02 16:20 | 20min | 17.03d | 0d |  | Cognizant | 0.5h |
| 277 | 1.7.7.3 | Check: Sign off on Checkout Scripts | 20min | 2006-11-08 11:25 | 2006-11-08 11:45 | 276 | 2006-05-02 16:20 | 2006-05-02 16:50 | 30min | 17.03d |  |  | CBOE | 0.33h |
| 278 | 1.7 | **Install and Perform failover on ONE_MAIN BC B Side** | 0.42d | 2006-11-13 08:00 | 2006-11-13 11:20 |  | 2006-05-11 08:10 | 2006-05-11 13:55 | 0.59d | 14.08d |  |  | Cognizant | 10h |
| 279 | 1.31 | **Install ONE_MAIN BC (B)** | 0.27d | 2006-11-13 08:00 | 2006-11-13 10:10 |  | 2006-05-11 08:10 | 2006-05-11 10:10 | 0.25d | 14.08d | 0d |  | Cognizant | 4.33h |
| 280 | 1.31.1 | Configuration and starting processes | 1.5h | 2006-11-13 08:00 | 2006-11-13 09:30 |  | 2006-05-11 08:10 | 2006-05-11 09:10 | 1h | 14.08d | 0d | start no earlier than 2006-11-13 08:00 | Cognizant | 1.5h |
| 281 | 1.31.3 | Backup and Reporting | 20min | 2006-11-13 09:30 | 2006-11-13 09:50 | 280 | 2006-05-11 09:50 | 2006-05-11 10:10 | 20min | 14.08d | 0d |  | Cognizant | 0.33h |
| 282 | 1.8.1.3 | Check: Sign Off on Checkout Scripts, Logs and Results | 20min | 2006-11-13 09:50 | 2006-11-13 10:10 | 281 | 2006-05-11 10:10 | 2006-05-11 10:10 | 0h | 14.08d |  |  | CBOE | 0.33h |
| 283 | 1.8.2 | **ITG Checkout script (New release)** | 0.15d | 2006-11-13 10:10 | 2006-11-13 11:20 | 279 | 2006-05-02 15:20 | 2006-05-02 16:50 | 0.19d | 14.08d |  |  | Cognizant | 2.33h |
| 284 | 1.2.1 | ITG Checkout script | 20min | 2006-11-13 10:10 | 2006-11-13 10:30 |  | 2006-05-02 15:20 | 2006-05-02 16:00 | 40min | 14.08d | 0d |  | Cognizant | 0.33h |
| 285 | 1.2.5 | Backup for ITG Checkout (endOfPerformanceReport) | 30min | 2006-11-13 10:30 | 2006-11-13 11:00 | 284 | 2006-05-02 16:00 | 2006-05-02 16:20 | 20min | 14.08d | 0d |  | Cognizant | 0.5h |
| 286 | 1.8.2.3 | Check: Sign off on Checkout Scripts | 20min | 2006-11-13 11:00 | 2006-11-13 11:20 | 285 | 2006-05-02 16:20 | 2006-05-02 16:50 | 30min | 14.08d |  |  | CBOE | 0.33h |
| 287 | 1.9 | **Install and Perform tests on FE 1 Side** | 1.23d | 2006-11-14 08:00 | 2006-11-15 09:50 |  |  |  |  | 12.27d |  |  | Cognizant | 28h |
| 288 | 1.9.1 | **Install FE 1(Disable SMSProxy running under tradengp)** | 0.27d | 2006-11-14 08:00 | 2006-11-14 10:10 |  |  |  |  | 12.93d | 0d |  | Cognizant | 4.33h |
| 289 | 1.10.1 | Configuration and starting processes | 1.5h | 2006-11-14 08:00 | 2006-11-14 09:30 |  | 2006-05-04 11:50 | 2006-05-04 13:50 | 1h | 12.93d | 0d | start no earlier than 2006-11-14 08:00 | Cognizant | 1.5h |
| 290 | 1.10.3 | Backup and Reporting | 20min | 2006-11-14 09:30 | 2006-11-14 09:50 | 289 | 2006-05-04 14:30 | 2006-05-04 14:50 | 20min | 12.93d | 0d |  | Cognizant | 0.33h |
| 291 | 1.9.1.3 | Check: Sign Off on Checkout Scripts, Logs and Results | 20min | 2006-11-14 09:50 | 2006-11-14 10:10 | 290 | 2006-05-04 14:50 | 2006-05-04 14:50 | 0h | 12.93d | 0d |  | CBOE | 0.33h |

| ID | WBS | Task | Duration | Start | Finish | Predecessors | Baseline start | Baseline finish | Baseline duration | Total slack | Free slack | Constraint | Resources | Work |
| --- | --- | --- | --- | --- | --- | --- | --- | --- | --- | --- | --- | --- | --- | --- |
| 292 | 1.9.2 | **ITG Checkout script** | 0.17d | 2006-11-14 10:10 | 2006-11-14 11:30 | 288 | 2006-05-02 15:20 | 2006-05-02 16:50 | 0.19d | 13.06d |  |  | Cognizant | 2.67h |
| 293 | 1.2.1 | ITG Checkout for W_MAIN and ONE_MAIN | 40min | 2006-11-14 10:10 | 2006-11-14 10:50 |  | 2006-05-02 15:20 | 2006-05-02 16:00 | 40min | 13.06d | 0d |  | Cognizant | 0.67h |
| 294 | 1.2.5 | Backup for ITG Checkout (endOfPerformanceReport) | 20min | 2006-11-14 10:50 | 2006-11-14 11:10 | 293 | 2006-05-02 16:00 | 2006-05-02 16:20 | 20min | 13.06d | 0d |  | Cognizant | 0.33h |
| 295 | 1.9.2.3 | Check: Sign off on Checkout Scripts | 20min | 2006-11-14 11:10 | 2006-11-14 11:30 | 294 | 2006-05-02 16:20 | 2006-05-02 16:50 | 30min | 13.06d |  |  | CBOE | 0.33h |
| 296 | 1.9.3 | **Mult Class Quote Step-up with Quotes only (Scenario 0)** | 0.3d | 2006-11-14 10:10 | 2006-11-14 13:35 |  |  |  |  | 12.93d |  |  | Cognizant | 4.83h |
| 297 | 1.9.3.1 | BC Cleanup, Initial Driver Setup, | 20min | 2006-11-14 10:10 | 2006-11-14 10:30 | 291 |  |  |  | 12.93d | 0d | start no earlier than 2006-04-24 08:00 | Cognizant | 0.33h |
| 298 | 1.9.3.2 | Test Execution for No BOTR | 1h | 2006-11-14 10:30 | 2006-11-14 11:30 | 297 |  |  |  | 12.93d | 0d | start no earlier than 2006-04-24 08:00 | Cognizant | 1h |
| 299 | 1.9.3.3 | endOfPerformance and Backup | 30min | 2006-11-14 11:30 | 2006-11-14 12:00 | 298 |  |  |  | 12.93d | 0d |  | Cognizant | 0.5h |
| 300 | 1.9.3.4 | Reporting through KR site | 15min | 2006-11-14 13:00 | 2006-11-14 13:15 | 299 |  |  |  | 12.93d | 0d |  | Cognizant | 0.25h |
| 301 | 1.9.3.5 | Check: Sign Off on Logs and Results | 20min | 2006-11-14 13:15 | 2006-11-14 13:35 | 300 |  |  |  | 12.93d |  |  | CBOE | 0.33h |
| 302 | 1.9.4 | **ITG Checkout script** | 0.17d | 2006-11-15 08:00 | 2006-11-15 09:20 |  | 2006-05-02 15:20 | 2006-05-02 16:50 | 0.19d | 12.33d |  |  | Cognizant | 2.67h |
| 303 | 1.2.1 | ITG Checkout for W_MAIN and ONE_MAIN | 40min | 2006-11-15 08:00 | 2006-11-15 08:40 |  | 2006-05-02 15:20 | 2006-05-02 16:00 | 40min | 12.33d | 0d | start no earlier than 2006-11-15 08:00 | Cognizant | 0.67h |
| 304 | 1.2.5 | Backup for ITG Checkout (endOfPerformanceReport) | 20min | 2006-11-15 08:40 | 2006-11-15 09:00 | 303 | 2006-05-02 16:00 | 2006-05-02 16:20 | 20min | 12.33d | 0d |  | Cognizant | 0.33h |
| 305 | 1.9.4.3 | Check: Sign off on Checkout Scripts | 20min | 2006-11-15 09:00 | 2006-11-15 09:20 | 304 | 2006-05-02 16:20 | 2006-05-02 16:50 | 30min | 12.33d |  |  | CBOE | 0.33h |
| 306 | 1.34 | **FE Failover (New To Old)** | 0.23d | 2006-11-15 08:00 | 2006-11-15 09:50 |  | 2006-04-10 14:20 | 2006-04-10 16:15 | 0.24d | 12.27d |  |  | Cognizant | 3.67h |
| 307 | 1.34.2 | Failover to FE2 side,Without restarting CAS, restart FE2 kill FE1 | 40min | 2006-11-15 08:00 | 2006-11-15 08:40 |  | 2006-04-10 14:45 | 2006-04-10 15:15 | 30min | 12.27d | 0d | start no earlier than 2006-11-15 08:00 | Cognizant | 0.67h |
| 308 | 1.34.3 | ITG Checkout script after FE New to Old Failover | 30min | 2006-11-15 08:40 | 2006-11-15 09:10 | 307 | 2006-04-10 15:15 | 2006-04-10 15:55 | 40min | 12.27d | 0d |  | Cognizant | 0.5h |
| 309 | 1.34.4 | Backup for Failover | 20min | 2006-11-15 09:10 | 2006-11-15 09:30 | 308 | 2006-04-10 15:55 | 2006-04-10 16:15 | 20min | 12.27d | 0d |  | Cognizant | 0.33h |
| 310 | 1.9.5.4 | Check: Sign off on Checkout Scripts | 20min | 2006-11-15 09:30 | 2006-11-15 09:50 | 309 |  |  |  | 12.27d |  |  | CBOE | 0.33h |
| 311 | 1.10 | **Kill one CAS process (e.g., devcas5), ensure quotes are cancelled** | 0.18d | 2006-11-15 08:00 | 2006-11-15 09:25 |  |  |  |  | 11.74d |  |  | Cognizant | 4.25h |
| 312 | 1.10.1 | **User Login test** | 0.18d | 2006-11-15 08:00 | 2006-11-15 09:25 |  |  |  |  | 11.74d | 0d |  | Cognizant | 2.83h |
| 313 | 1.10.1.1 | Initial setup like bouncing Global Server and SACAS. | 30min | 2006-11-15 08:00 | 2006-11-15 08:30 |  |  |  |  | 11.74d | 0d | start no earlier than 2006-11-15 08:00 | Cognizant | 0.5h |
| 314 | 1.10.1.2 | Login Test for 1 and 2 Users | 15min | 2006-11-15 08:30 | 2006-11-15 08:45 | 313 |  |  |  | 11.74d | 0d | start no earlier than 2006-10-30 08:00 | Cognizant | 0.25h |
| 315 | 1.10.1.3 | Backup for Login User Test and Product state Update through SAGUI | 20min | 2006-11-15 08:45 | 2006-11-15 09:05 | 314 |  |  |  | 11.74d | 0d |  | Cognizant | 0.33h |
| 316 | 1.10.1.4 | Check: Sign Off on Logs and Results | 20min | 2006-11-15 09:05 | 2006-11-15 09:25 | 315 |  |  |  | 11.74d |  |  | CBOE | 0.33h |

| ID | WBS | Task | Duration | Start | Finish | Predecessors | Baseline start | Baseline finish | Baseline duration | Total slack | Free slack | Constraint | Resources | Work |
| --- | --- | --- | --- | --- | --- | --- | --- | --- | --- | --- | --- | --- | --- | --- |
| 317 | 1.11 | **Install and Perform tests on FE 2 Side** | 0.58d | 2006-11-15 09:25 | 2006-11-15 15:05 | 312 |  |  |  | 11.74d |  |  | Cognizant | 27.67h |
| 318 | 1.11.1 | **Install FE 2(Disable SMSProxy running under tradengp)** | 0.27d | 2006-11-15 09:25 | 2006-11-15 11:35 |  |  |  |  | 11.8d |  |  | Cognizant | 4.33h |
| 319 | 1.10.1 | Configuration and starting processes | 1.5h | 2006-11-15 09:25 | 2006-11-15 10:55 |  | 2006-05-04 11:50 | 2006-05-04 13:50 | 1h | 11.8d | 0d |  | Cognizant | 1.5h |
| 320 | 1.10.3 | Backup and Reporting | 20min | 2006-11-15 10:55 | 2006-11-15 11:15 | 319 | 2006-05-04 14:30 | 2006-05-04 14:50 | 20min | 11.8d | 0d |  | Cognizant | 0.33h |
| 321 | 1.11.1.3 | Check: Sign Off on Checkout Scripts, Logs and Results | 20min | 2006-11-15 11:15 | 2006-11-15 11:35 | 320 | 2006-05-04 14:50 | 2006-05-04 14:50 | 0h | 11.8d | 0d |  | CBOE | 0.33h |
| 322 | 1.11.2 | **ITG Checkout script** | 0.17d | 2006-11-15 09:25 | 2006-11-15 10:45 |  | 2006-05-02 15:20 | 2006-05-02 16:50 | 0.19d | 12.16d |  |  | Cognizant | 2.67h |
| 323 | 1.2.1 | ITG Checkout for W_MAIN and ONE_MAIN | 40min | 2006-11-15 09:25 | 2006-11-15 10:05 |  | 2006-05-02 15:20 | 2006-05-02 16:00 | 40min | 12.16d | 0d |  | Cognizant | 0.67h |
| 324 | 1.2.5 | Backup for ITG Checkout (endOfPerformanceReport) | 20min | 2006-11-15 10:05 | 2006-11-15 10:25 | 323 | 2006-05-02 16:00 | 2006-05-02 16:20 | 20min | 12.16d | 0d |  | Cognizant | 0.33h |
| 325 | 1.11.2.3 | Check: Sign off on Checkout Scripts | 20min | 2006-11-15 10:25 | 2006-11-15 10:45 | 324 | 2006-05-02 16:20 | 2006-05-02 16:50 | 30min | 12.16d |  |  | CBOE | 0.33h |
| 326 | 1.42 | **Server Side Full Cleanup after All Server upgrades.** | 0.58d | 2006-11-15 09:25 | 2006-11-15 15:05 |  | 2006-05-15 08:55 | 2006-05-15 14:15 | 0.54d | 11.74d |  |  | Cognizant | 9.33h |
| 327 | 1.42.1 | Time server full startup after cleanup (See Server Startup Timing Page) | 4h | 2006-11-15 09:25 | 2006-11-15 14:25 |  | 2006-05-15 08:55 | 2006-05-15 13:55 | 4h | 11.74d | 0d |  | Cognizant | 4h |
| 328 | 1.42.2 | Backup for server Timings | 20min | 2006-11-15 14:25 | 2006-11-15 14:45 | 327 | 2006-05-15 13:55 | 2006-05-15 14:15 | 20min | 11.74d | 0d |  | Cognizant | 0.33h |
| 329 | 1.11.3.3 | Check: Sign Off on Logs and Results | 20min | 2006-11-15 14:45 | 2006-11-15 15:05 | 328 | 2006-05-15 14:15 | 2006-05-15 14:15 | 0h | 11.74d |  |  | CBOE | 0.33h |
| 330 | 1.11.4 | **FE Failover - New to New** | 0.25d | 2006-11-15 11:35 | 2006-11-15 14:35 |  |  |  |  | 11.8d |  |  | Cognizant | 4h |
| 331 | 1.11.4.1 | initial cleanup and driver setup | 40min | 2006-11-15 11:35 | 2006-11-15 13:15 | 321 |  |  |  | 11.8d | 0d |  | Cognizant | 0.67h |
| 332 | 1.11.4.2 | Quote and order traffic | 30min | 2006-11-15 13:15 | 2006-11-15 13:45 | 331 |  |  |  | 11.8d | 0d |  | Cognizant | 0.5h |
| 333 | 1.11.4.3 | stop A side FE processes and see effect on traffic | 10min | 2006-11-15 13:45 | 2006-11-15 13:55 | 332 |  |  |  | 11.8d | 0d |  | Cognizant | 0.17h |
| 334 | 1.11.4.4 | Log backup | 20min | 2006-11-15 13:55 | 2006-11-15 14:15 | 333 |  |  |  | 11.8d | 0d |  | Cognizant | 0.33h |
| 335 | 1.11.4.5 | Check: Sign Off on Checkout Scripts, Logs and Results | 20min | 2006-11-15 14:15 | 2006-11-15 14:35 | 334 | 2006-05-09 10:40 | 2006-05-09 10:40 | 0h | 11.8d |  |  | CBOE | 0.33h |
| 336 | 1.11.5 | **ITG Checkout script** | 0.17d | 2006-11-15 09:25 | 2006-11-15 10:45 |  | 2006-05-02 15:20 | 2006-05-02 16:50 | 0.19d | 12.16d |  |  | Cognizant | 2.67h |
| 337 | 1.2.1 | ITG Checkout for W_MAIN and ONE_MAIN | 40min | 2006-11-15 09:25 | 2006-11-15 10:05 |  | 2006-05-02 15:20 | 2006-05-02 16:00 | 40min | 12.16d | 0d |  | Cognizant | 0.67h |
| 338 | 1.2.5 | Backup for ITG Checkout (endOfPerformanceReport) | 20min | 2006-11-15 10:05 | 2006-11-15 10:25 | 337 | 2006-05-02 16:00 | 2006-05-02 16:20 | 20min | 12.16d | 0d |  | Cognizant | 0.33h |
| 339 | 1.11.5.3 | Check: Sign off on Checkout Scripts | 20min | 2006-11-15 10:25 | 2006-11-15 10:45 | 338 | 2006-05-02 16:20 | 2006-05-02 16:50 | 30min | 12.16d |  |  | CBOE | 0.33h |
| 340 | 1.6 | **Install and perform tests on MDGC side** | 3.81d | 2006-11-17 08:00 | 2006-11-22 15:30 |  | 2006-05-09 16:25 | 2006-05-11 08:10 | 1.09d | 6.69d |  |  | Cognizant | 80.5h |
| 341 | 1.26 | **Install MDGC A side** | 0.31d | 2006-11-17 08:00 | 2006-11-17 10:30 |  | 2006-05-09 16:25 | 2006-05-10 09:25 | 0.25d | 7.38d | 0.69d |  | Cognizant | 5h |
| 342 | 1.26.1 | Configuration and starting processes | 1.5h | 2006-11-17 08:00 | 2006-11-17 09:30 |  | 2006-05-09 16:25 | 2006-05-10 08:25 | 1h | 7.38d | 0d | start no earlier than 2006-11-17 08:00 | Cognizant | 1.5h |
| 343 | 1.26.2 | ITG Checkout script (W_MAIN and ONE_MAIN Session) | 20min | 2006-11-17 09:30 | 2006-11-17 09:50 | 342 | 2006-05-10 08:25 | 2006-05-10 09:05 | 40min | 7.38d | 0d |  | Cognizant | 0.33h |
| 344 | 1.26.3 | Backup and Reporting | 20min | 2006-11-17 09:50 | 2006-11-17 10:10 | 343 | 2006-05-10 09:05 | 2006-05-10 09:25 | 20min | 7.38d | 0d |  | Cognizant | 0.33h |
| 345 | 1.12.1.4 | Check: Sign Off on Checkout Scripts, Logs and Results | 20min | 2006-11-17 10:10 | 2006-11-17 10:30 | 344 | 2006-05-10 09:25 | 2006-05-10 09:25 | 0h | 7.38d |  |  | CBOE | 0.33h |

| ID | WBS | Task | Duration | Start | Finish | Predecessors | Baseline start | Baseline finish | Baseline duration | Total slack | Free slack | Constraint | Resources | Work |
| --- | --- | --- | --- | --- | --- | --- | --- | --- | --- | --- | --- | --- | --- | --- |
| 346 | 1.12.2 | **Mult Class Quote Step-up with Quotes only (Scenario 0)** | 0.3d | 2006-11-20 08:00 | 2006-11-20 10:25 | 341 |  |  |  | 6.69d | 0d |  | Cognizant | 4.83h |
| 347 | 1.12.2.1 | BC Cleanup, Initial Driver Setup, | 20min | 2006-11-20 08:00 | 2006-11-20 08:20 |  |  |  |  | 6.69d | 0d | start no earlier than 2006-11-20 08:00 | Cognizant | 0.33h |
| 348 | 1.12.2.2 | Test Execution for No BOTR | 1h | 2006-11-20 08:20 | 2006-11-20 09:20 | 347 |  |  |  | 6.69d | 0d | start no earlier than 2006-04-24 08:00 | Cognizant | 1h |
| 349 | 1.12.2.3 | endOfPerformance and Backup | 30min | 2006-11-20 09:20 | 2006-11-20 09:50 | 348 |  |  |  | 6.69d | 0d |  | Cognizant | 0.5h |
| 350 | 1.12.2.4 | Reporting through KR site | 15min | 2006-11-20 09:50 | 2006-11-20 10:05 | 349 |  |  |  | 6.69d | 0d |  | Cognizant | 0.25h |
| 351 | 1.12.2.5 | Check: Sign Off on Logs and Results | 20min | 2006-11-20 10:05 | 2006-11-20 10:25 | 350 |  |  |  | 6.69d |  |  | CBOE | 0.33h |
| 352 | 1.12.3 | **MDGC failover MDGCB (New To Old)** | 0.25d | 2006-11-20 10:25 | 2006-11-20 13:25 | 346 |  |  |  | 6.69d | 0d |  | Cognizant | 4h |
| 353 | 1.12.3.1 | initial cleanup and driver setup | 40min | 2006-11-20 10:25 | 2006-11-20 11:05 |  |  |  |  | 6.69d | 0d |  | Cognizant | 0.67h |
| 354 | 1.12.3.2 | Quote and order traffic | 30min | 2006-11-20 11:05 | 2006-11-20 11:35 | 353 |  |  |  | 6.69d | 0d |  | Cognizant | 0.5h |
| 355 | 1.12.3.3 | stop A side FE processes and see effect on traffic | 10min | 2006-11-20 11:35 | 2006-11-20 11:45 | 354 |  |  |  | 6.69d | 0d |  | Cognizant | 0.17h |
| 356 | 1.12.3.4 | Log backup | 20min | 2006-11-20 11:45 | 2006-11-20 13:05 | 355 |  |  |  | 6.69d | 0d |  | Cognizant | 0.33h |
| 357 | 1.12.3.5 | Check: Sign Off on Checkout Scripts, Logs and Results | 20min | 2006-11-20 13:05 | 2006-11-20 13:25 | 356 | 2006-05-09 10:40 | 2006-05-09 10:40 | 0h | 6.69d |  |  | CBOE | 0.33h |
| 358 | 1.12.4 | **Mult Class Quote Step-up with Quotes only (Scenario 0)** | 0.3d | 2006-11-20 13:25 | 2006-11-20 15:50 | 352 |  |  |  | 6.69d | 0d |  | Cognizant | 4.83h |
| 359 | 1.12.4.1 | BC Cleanup, Initial Driver Setup, | 20min | 2006-11-20 13:25 | 2006-11-20 13:45 |  |  |  |  | 6.69d | 0d | start no earlier than 2006-04-24 08:00 | Cognizant | 0.33h |
| 360 | 1.12.4.2 | Test Execution for No BOTR | 1h | 2006-11-20 13:45 | 2006-11-20 14:45 | 359 |  |  |  | 6.69d | 0d | start no earlier than 2006-04-24 08:00 | Cognizant | 1h |
| 361 | 1.12.4.3 | endOfPerformance and Backup | 30min | 2006-11-20 14:45 | 2006-11-20 15:15 | 360 |  |  |  | 6.69d | 0d |  | Cognizant | 0.5h |
| 362 | 1.12.4.4 | Reporting through KR site | 15min | 2006-11-20 15:15 | 2006-11-20 15:30 | 361 |  |  |  | 6.69d | 0d |  | Cognizant | 0.25h |
| 363 | 1.12.4.5 | Check: Sign Off on Logs and Results | 20min | 2006-11-20 15:30 | 2006-11-20 15:50 | 362 |  |  |  | 6.69d |  |  | CBOE | 0.33h |
| 364 | 1.26 | **Install and perform tests on MDGC B side** | 0.31d | 2006-11-20 15:50 | 2006-11-21 09:20 | 358 | 2006-05-09 16:25 | 2006-05-10 09:25 | 0.25d | 6.69d | 0d |  | Cognizant | 5h |
| 365 | 1.26.1 | Configuration and starting processes | 1.5h | 2006-11-20 15:50 | 2006-11-21 08:20 |  | 2006-05-09 16:25 | 2006-05-10 08:25 | 1h | 6.69d | 0d |  | Cognizant | 1.5h |
| 366 | 1.26.2 | ITG Checkout script (W_MAIN and ONE_MAIN Session) | 20min | 2006-11-21 08:20 | 2006-11-21 08:40 | 365 | 2006-05-10 08:25 | 2006-05-10 09:05 | 40min | 6.69d | 0d |  | Cognizant | 0.33h |
| 367 | 1.26.3 | Backup and Reporting | 20min | 2006-11-21 08:40 | 2006-11-21 09:00 | 366 | 2006-05-10 09:05 | 2006-05-10 09:25 | 20min | 6.69d | 0d |  | Cognizant | 0.33h |
| 368 | 1.12.5.4 | Check: Sign Off on Checkout Scripts, Logs and Results | 20min | 2006-11-21 09:00 | 2006-11-21 09:20 | 367 | 2006-05-10 09:25 | 2006-05-10 09:25 | 0h | 6.69d |  |  | CBOE | 0.33h |
| 369 | 1.12.6 | **Mult Class Quote Step-up with Quotes only (Scenario 0)** | 0.3d | 2006-11-21 09:20 | 2006-11-21 11:45 | 364 |  |  |  | 6.69d | 0d |  | Cognizant | 4.83h |
| 370 | 1.12.6.1 | BC Cleanup, Initial Driver Setup, | 20min | 2006-11-21 09:20 | 2006-11-21 09:40 |  |  |  |  | 6.69d | 0d | start no earlier than 2006-04-24 08:00 | Cognizant | 0.33h |
| 371 | 1.12.6.2 | Test Execution for No BOTR | 1h | 2006-11-21 09:40 | 2006-11-21 10:40 | 370 |  |  |  | 6.69d | 0d | start no earlier than 2006-04-24 08:00 | Cognizant | 1h |
| 372 | 1.12.6.3 | endOfPerformance and Backup | 30min | 2006-11-21 10:40 | 2006-11-21 11:10 | 371 |  |  |  | 6.69d | 0d |  | Cognizant | 0.5h |
| 373 | 1.12.6.4 | Reporting through KR site | 15min | 2006-11-21 11:10 | 2006-11-21 11:25 | 372 |  |  |  | 6.69d | 0d |  | Cognizant | 0.25h |
| 374 | 1.12.6.5 | Check: Sign Off on Logs and Results | 20min | 2006-11-21 11:25 | 2006-11-21 11:45 | 373 |  |  |  | 6.69d |  |  | CBOE | 0.33h |

| ID | WBS | Task | Duration | Start | Finish | Predecessors | Baseline start | Baseline finish | Baseline duration | Total slack | Free slack | Constraint | Resources | Work |
| --- | --- | --- | --- | --- | --- | --- | --- | --- | --- | --- | --- | --- | --- | --- |
| 375 | 1.12.7 | **MDGC failover MDGCA (New to New)** | 0.25d | 2006-11-21 11:45 | 2006-11-21 14:45 | 369 |  |  |  | 6.69d | 0d |  | Cognizant | 4h |
| 376 | 1.12.7.1 | initial cleanup and driver setup | 40min | 2006-11-21 11:45 | 2006-11-21 13:25 |  |  |  |  | 6.69d | 0d |  | Cognizant | 0.67h |
| 377 | 1.12.7.2 | Quote and order traffic | 30min | 2006-11-21 13:25 | 2006-11-21 13:55 | 376 |  |  |  | 6.69d | 0d |  | Cognizant | 0.5h |
| 378 | 1.12.7.3 | stop A side FE processes and see effect on traffic | 10min | 2006-11-21 13:55 | 2006-11-21 14:05 | 377 |  |  |  | 6.69d | 0d |  | Cognizant | 0.17h |
| 379 | 1.12.7.4 | Log backup | 20min | 2006-11-21 14:05 | 2006-11-21 14:25 | 378 |  |  |  | 6.69d | 0d |  | Cognizant | 0.33h |
| 380 | 1.12.7.5 | Check: Sign Off on Checkout Scripts, Logs and Results | 20min | 2006-11-21 14:25 | 2006-11-21 14:45 | 379 | 2006-05-09 10:40 | 2006-05-09 10:40 | 0h | 6.69d |  |  | CBOE | 0.33h |
| 381 | 1.12.8 | **ITG Checkout script** | 0.17d | 2006-11-21 14:45 | 2006-11-21 16:05 | 375 | 2006-05-02 15:20 | 2006-05-02 16:50 | 0.19d | 6.69d | 0d |  | Cognizant | 2.67h |
| 382 | 1.2.1 | ITG Checkout for W_MAIN and ONE_MAIN | 40min | 2006-11-21 14:45 | 2006-11-21 15:25 |  | 2006-05-02 15:20 | 2006-05-02 16:00 | 40min | 6.69d | 0d |  | Cognizant | 0.67h |
| 383 | 1.2.5 | Backup for ITG Checkout (endOfPerformanceReport) | 20min | 2006-11-21 15:25 | 2006-11-21 15:45 | 382 | 2006-05-02 16:00 | 2006-05-02 16:20 | 20min | 6.69d | 0d |  | Cognizant | 0.33h |
| 384 | 1.12.8.3 | Check: Sign off on Checkout Scripts | 20min | 2006-11-21 15:45 | 2006-11-21 16:05 | 383 | 2006-05-02 16:20 | 2006-05-02 16:50 | 30min | 6.69d |  |  | CBOE | 0.33h |
| 385 | 1.27 | **Multi-class Order step-up test for ONE_MAIN [Scenario 2]** | 0.27d | 2006-11-21 16:05 | 2006-11-22 09:15 | 381 | 2006-05-10 09:25 | 2006-05-10 11:15 | 0.23d | 6.69d | 0d |  | Cognizant | 4.33h |
| 386 | 1.27.1 | BC Cleanup, Initial Driver Setup, | 20min | 2006-11-21 16:05 | 2006-11-21 16:25 |  | 2006-05-10 09:25 | 2006-05-10 09:45 | 20min | 6.69d | 0d |  | Cognizant | 0.33h |
| 387 | 1.27.2 | Test Execution for No BOTR | 1h | 2006-11-21 16:25 | 2006-11-22 08:25 | 386 | 2006-05-10 09:45 | 2006-05-10 10:45 | 1h | 6.69d | 0d |  | Cognizant | 1h |
| 388 | 1.27.3 | endOfPerformance and Backup | 15min | 2006-11-22 08:25 | 2006-11-22 08:40 | 387 | 2006-05-10 10:45 | 2006-05-10 11:00 | 15min | 6.69d | 0d |  | Cognizant | 0.25h |
| 389 | 1.27.4 | Reporting through KR site | 15min | 2006-11-22 08:40 | 2006-11-22 08:55 | 388 | 2006-05-10 11:00 | 2006-05-10 11:15 | 15min | 6.69d | 0d |  | Cognizant | 0.25h |
| 390 | 1.12.9.5 | Check: Sign Off on Logs and Results | 20min | 2006-11-22 08:55 | 2006-11-22 09:15 | 389 | 2006-05-10 11:15 | 2006-05-10 11:15 | 0h | 6.69d |  |  | CBOE | 0.33h |
| 391 | 1.28 | **Multi-class Quote step-up test [Scenario 1]** | 0.31d | 2006-11-22 09:15 | 2006-11-22 11:45 | 385 | 2006-05-10 11:15 | 2006-05-10 14:25 | 0.27d | 6.69d | 0d |  | Cognizant | 5h |
| 392 | 1.28.1 | BC Cleanup, Initial Driver Setup, | 20min | 2006-11-22 09:15 | 2006-11-22 09:35 |  | 2006-05-10 11:15 | 2006-05-10 11:35 | 20min | 6.69d | 0d |  | Cognizant | 0.33h |
| 393 | 1.28.2 | Test Execution for No BOTR | 1h | 2006-11-22 09:35 | 2006-11-22 10:35 | 392 | 2006-05-10 11:35 | 2006-05-10 13:35 | 1h | 6.69d | 0d |  | Cognizant | 1h |
| 394 | 1.28.3 | endOfPerformance and Backup | 30min | 2006-11-22 10:35 | 2006-11-22 11:05 | 393 | 2006-05-10 13:35 | 2006-05-10 14:05 | 30min | 6.69d | 0d |  | Cognizant | 0.5h |
| 395 | 1.28.4 | Reporting through KR site | 20min | 2006-11-22 11:05 | 2006-11-22 11:25 | 394 | 2006-05-10 14:05 | 2006-05-10 14:25 | 20min | 6.69d | 0d |  | Cognizant | 0.33h |
| 396 | 1.12.10.5 | Check: Sign Off on Logs and Results | 20min | 2006-11-22 11:25 | 2006-11-22 11:45 | 395 | 2006-05-10 14:25 | 2006-05-10 14:25 | 0h | 6.69d | 0d |  | CBOE | 0.33h |
| 397 | 1.30 | **Install and perform tests on MDGC A side** | 0.34d | 2006-11-22 11:45 | 2006-11-22 15:30 | 391 | 2006-05-10 14:25 | 2006-05-11 08:10 | 0.34d | 6.69d |  |  | Cognizant | 5.5h |
| 398 | 1.12.11.1 | Cleanup | 20min | 2006-11-22 11:45 | 2006-11-22 13:05 | 396 | 2006-05-10 14:25 | 2006-05-10 14:45 | 20min | 6.69d | 0d |  | Cognizant | 0.33h |
| 399 | 1.30.1 | Initial setup for test Drivers (starting processes on BC Slave.) | 25min | 2006-11-22 13:05 | 2006-11-22 13:30 | 398 | 2006-05-10 14:45 | 2006-05-10 15:10 | 25min | 6.69d | 0d |  | Cognizant | 0.42h |
| 400 | 1.30.2 | Quote/Order ONE_MAIN traffic going before/during/after failover. Test Execution | 30min | 2006-11-22 13:30 | 2006-11-22 14:00 | 399 | 2006-05-10 15:10 | 2006-05-10 15:40 | 30min | 6.69d | 0d |  | Cognizant | 0.5h |
| 401 | 1.30.3 | ITG Checkout script (for ONE_MAIN Session) | 20min | 2006-11-22 14:00 | 2006-11-22 14:20 | 400 | 2006-05-10 15:40 | 2006-05-10 16:20 | 40min | 6.69d | 0d |  | Cognizant | 0.33h |
| 402 | 1.30.4 | Backup for Failover and ITG Checkout | 20min | 2006-11-22 14:20 | 2006-11-22 14:40 | 401 | 2006-05-10 16:20 | 2006-05-10 16:40 | 20min | 6.69d | 0d |  | Cognizant | 0.33h |
| 403 | 1.30.5 | Generate Report for Failover Timings for all BC Processes (taking time from log files) | 30min | 2006-11-22 14:40 | 2006-11-22 15:10 | 402 | 2006-05-10 16:40 | 2006-05-11 08:10 | 30min | 6.69d | 0d |  | Cognizant | 0.5h |
| 404 | 1.12.11.7 | Check: Sign Off on Checkout Scripts,Logs and Results | 20min | 2006-11-22 15:10 | 2006-11-22 15:30 | 403 | 2006-05-11 08:10 | 2006-05-11 08:10 | 0h | 6.69d |  |  | CBOE | 0.33h |
| 405 | 1.13 | Cas Perf tests | 8h | 2006-11-23 08:00 | 2006-11-23 17:00 |  |  |  |  | 0.5d | 0d | start no earlier than 2006-11-23 08:00 | Cognizant | 8h |
| 406 | 1.14 | MDCAS perf tests | 8h | 2006-11-24 08:00 | 2006-11-24 17:00 | 405 |  |  |  | 0.5d | 0d |  | Cognizant | 8h |
| 407 | 1.15 | CFIX Perf tests | 8h | 2006-11-27 08:00 | 2006-11-27 17:00 | 406 |  |  |  | 0.5d | 0d |  | Cognizant | 8h |

| ID | WBS | Task | Duration | Start | Finish | Predecessors | Total slack | Free slack | Constraint | Resources | Work |
| --- | --- | --- | --- | --- | --- | --- | --- | --- | --- | --- | --- |
| 408 | 1.16 | **MDX Perf test** | 3d | 2006-11-28 08:00 | 2006-11-30 17:00 | 407 | 0.5d |  |  |  |  |
| 409 | 1.16.1 | Verify XTP (perfxtp1/2) availability in Perf #1 | 4h | 2006-11-30 13:00 | 2006-11-30 17:00 | 410 | 0.5d |  |  |  |  |
| 410 | 1.16.2 | Install MDX/XTP perf clients in Perf #1, if applicable | 4h | 2006-11-30 08:00 | 2006-11-30 12:00 | 411 | 0.5d | 0d |  |  |  |
| 411 | 1.16.3 | Upgrade Infra code under the MDX login for TipsMDX | 4h | 2006-11-29 13:00 | 2006-11-29 17:00 | 412 | 0.5d | 0d |  |  |  |
| 412 | 1.16.4 | MDX Perf Test 4 (TipsMdxAdapter and MDX, all options data generated by XTP, all equity data generated by TIPS) | 4h | 2006-11-29 08:00 | 2006-11-29 12:00 | 413 | 0.5d | 0d |  |  |  |
| 413 | 1.16.5 | MDX Perf Test 4 (TipsMdxAdapter and MDX, all options data generated by XTP, all equity data generated by TIPS) | 4h | 2006-11-28 13:00 | 2006-11-28 17:00 | 414 | 0.5d | 0d |  |  |  |
| 414 | 1.16.6 | MDX Perf Test 5 (TipsMdxAdapter and MDX, all CBOE options data generated by BC, all away market options data generated by XTP, all equity data generated by TIPS) | 4h | 2006-11-28 08:00 | 2006-11-28 12:00 |  | 0.5d | 0d |  |  |  |
| 415 | 1.17 | **Hybrid History Server Tests** | 1.3d | 2006-11-29 08:00 | 2006-11-30 10:25 |  | 1.2d |  |  | Cognizant | 29.08h |
| 416 | 1.17.1 | **Mult Class Quote Step-up (Scenario 0) Side:With HTS and HHS on same box** | 0.34d | 2006-11-29 08:00 | 2006-11-29 10:45 |  | 2.16d |  |  | Cognizant | 5.5h |
| 417 | 1.17.1.1 | BC Cleanup, Initial Driver Setup, | 40min | 2006-11-29 08:00 | 2006-11-29 08:40 |  | 2.16d | 0d | start no earlier than 2006-11-29 08:00 | Cognizant | 0.67h |
| 418 | 1.17.1.2 | Test Execution for No BOTR | 1h | 2006-11-29 08:40 | 2006-11-29 09:40 | 417 | 2.16d | 0d | start no earlier than 2006-04-24 08:00 | Cognizant | 1h |
| 419 | 1.17.1.3 | endOfPerformance and Backup | 30min | 2006-11-29 09:40 | 2006-11-29 10:10 | 418 | 2.16d | 0d |  | Cognizant | 0.5h |
| 420 | 1.17.1.4 | Reporting through KR site | 15min | 2006-11-29 10:10 | 2006-11-29 10:25 | 419 | 2.16d | 0d |  | Cognizant | 0.25h |
| 421 | 1.17.1.5 | Check: Sign Off on Logs and Results | 20min | 2006-11-29 10:25 | 2006-11-29 10:45 | 420 | 2.16d |  |  | CBOE | 0.33h |
| 422 | 1.17.2 | **Mult Class Quote Step-up (Scenario 0) Side:With With only HTS - Kill HHS in middle of test** | 0.28d | 2006-11-30 08:00 | 2006-11-30 10:15 |  | 1.22d |  |  | Cognizant | 4.5h |
| 423 | 1.17.2.1 | BC Cleanup, Initial Driver Setup, | 30min | 2006-11-30 08:00 | 2006-11-30 08:30 |  | 1.22d | 0d | start no earlier than 2006-11-30 08:00 | Cognizant | 0.5h |
| 424 | 1.17.2.2 | Test Execution for No BOTR | 40min | 2006-11-30 08:30 | 2006-11-30 09:10 | 423 | 1.22d | 0d | start no earlier than 2006-04-24 08:00 | Cognizant | 0.67h |
| 425 | 1.17.2.3 | endOfPerformance and Backup | 30min | 2006-11-30 09:10 | 2006-11-30 09:40 | 424 | 1.22d | 0d |  | Cognizant | 0.5h |
| 426 | 1.17.2.4 | Reporting through KR site | 15min | 2006-11-30 09:40 | 2006-11-30 09:55 | 425 | 1.22d | 0d |  | Cognizant | 0.25h |
| 427 | 1.17.2.5 | Check: Sign Off on Logs and Results | 20min | 2006-11-30 09:55 | 2006-11-30 10:15 | 426 | 1.22d |  |  | CBOE | 0.33h |
| 428 | 1.17.3 | **Mult Class Quote Step-up (Scenario 0) Side:With HTS and HHS on separate boxes. HTS on bc20a, HHS on mdgcb** | 0.3d | 2006-11-30 08:00 | 2006-11-30 10:25 |  | 1.2d |  |  | Cognizant | 4.83h |
| 429 | 1.17.3.1 | BC Cleanup, Initial Driver Setup, | 20min | 2006-11-30 08:00 | 2006-11-30 08:20 |  | 1.2d | 0d | start no earlier than 2006-11-30 08:00 | Cognizant | 0.33h |
| 430 | 1.17.3.2 | Test Execution for No BOTR | 1h | 2006-11-30 08:20 | 2006-11-30 09:20 | 429 | 1.2d | 0d | start no earlier than 2006-11-30 08:00 | Cognizant | 1h |
| 431 | 1.17.3.3 | endOfPerformance and Backup | 30min | 2006-11-30 09:20 | 2006-11-30 09:50 | 430 | 1.2d | 0d |  | Cognizant | 0.5h |
| 432 | 1.17.3.4 | Reporting through KR site | 15min | 2006-11-30 09:50 | 2006-11-30 10:05 | 431 | 1.2d | 0d |  | Cognizant | 0.25h |
| 433 | 1.17.3.5 | Check: Sign Off on Logs and Results | 20min | 2006-11-30 10:05 | 2006-11-30 10:25 | 432 | 1.2d |  |  | CBOE | 0.33h |

| ID | WBS | Task | Duration | Start | Finish | Predecessors | Baseline start | Baseline finish | Baseline duration | Total slack | Free slack | Constraint | Resources | Work |
| --- | --- | --- | --- | --- | --- | --- | --- | --- | --- | --- | --- | --- | --- | --- |
| 434 | 1.17.4 | **Hybird History Failover test** | 0.24d | 2006-11-30 08:00 | 2006-11-30 09:55 |  |  |  |  | 1.26d |  |  | Cognizant | 3.83h |
| 435 | 1.17.4.1 | initial cleanup and driver setup | 40min | 2006-11-30 08:00 | 2006-11-30 08:40 |  |  |  |  | 1.26d | 0d | start no earlier than 2006-11-30 08:00 | Cognizant | 0.67h |
| 436 | 1.17.4.2 | Quote and order traffic | 25min | 2006-11-30 08:40 | 2006-11-30 09:05 | 435 |  |  |  | 1.26d | 0d |  | Cognizant | 0.42h |
| 437 | 1.17.4.3 | stop A side FE processes and see effect on traffic | 10min | 2006-11-30 09:05 | 2006-11-30 09:15 | 436 |  |  |  | 1.26d | 0d |  | Cognizant | 0.17h |
| 438 | 1.17.4.4 | Log backup | 20min | 2006-11-30 09:15 | 2006-11-30 09:35 | 437 |  |  |  | 1.26d | 0d |  | Cognizant | 0.33h |
| 439 | 1.17.4.5 | Check: Sign Off on Checkout Scripts, Logs and Results | 20min | 2006-11-30 09:35 | 2006-11-30 09:55 | 438 | 2006-05-09 10:40 | 2006-05-09 10:40 | 0h | 1.26d |  |  | CBOE | 0.33h |
| 440 | 1.18 | Persistence Consumer Failover / Checkout | 4h | 2006-12-01 08:00 | 2006-12-01 12:00 |  |  |  |  | 0d |  | start no earlier than 2006-12-01 08:00 |  |  |
| 441 | 1.19 | HybridTradeServer Failover & Checkout | 2h | 2006-12-01 08:00 | 2006-12-01 10:00 |  |  |  |  | 0.25d |  | start no earlier than 2006-12-01 08:00 |  |  |
| 442 | 1.20 | ICS/SHM Checkout | 4h | 2006-12-01 08:00 | 2006-12-01 12:00 |  |  |  |  | 0d |  | start no earlier than 2006-12-01 08:00 |  |  |
