Schedule from MS Project, 2006-08-07 to 2006-08-25.
Cognizant Technology Solutions

## Calendars

- Standard: Mon-Fri 08:00-12:00, 13:00-17:00; Sat-Sun off.

## Resources

| Resource |
| --- |
| Cognizant |
| 2 |
| CBOE |
| Piwnicki |
| Bobbie |

## Schedule

| ID | WBS | Task | Type | Duration | Start | Finish | Predecessors | Baseline start | Baseline finish | Baseline duration | Total slack | Constraint | Resources | Work |
| --- | --- | --- | --- | --- | --- | --- | --- | --- | --- | --- | --- | --- | --- | --- |
| 1 | 1 | **Rollout Task** |  | 14.8d | 2006-08-07 08:00 | 2006-08-25 15:25 |  | 2006-05-02 08:00 | 2006-05-15 14:15 | 9.66d | 0d |  |  | 279.92h |
| 2 | 1.1 | **Pre-Rollout Verification/Changes [If required]** |  | 0d | 2006-08-07 08:00 | 2006-08-07 08:00 |  | 2006-05-02 08:00 | 2006-05-02 08:00 | 0d | 0d |  |  |  |
| 3 | 1.1.1 | Database changes | milestone | 0h | 2006-08-07 08:00 | 2006-08-07 08:00 |  | 2006-05-02 08:00 | 2006-05-02 08:00 | 0h | 0d | start no earlier than 2006-08-07 08:00 | CBOE |  |
| 4 | 1.1.2 | Extent Map changes | milestone | 0h | 2006-08-07 08:00 | 2006-08-07 08:00 | 3 | 2006-05-02 08:00 | 2006-05-02 08:00 | 0h | 0d |  | CBOE |  |
| 5 | 1.1.3 | Version label verification on all boxes | milestone | 0h | 2006-08-07 08:00 | 2006-08-07 08:00 | 4 | 2006-05-02 08:00 | 2006-05-02 08:00 | 0h | 0d |  | CBOE |  |
| 6 | 1.1.4 | Check: Tier Lead has verified information and obtained a sign off | milestone | 0h | 2006-08-07 08:00 | 2006-08-07 08:00 | 3, 4, 5 | 2006-05-02 08:00 | 2006-05-02 08:00 | 0h | 0d |  | CBOE |  |
| 7 | 1.2 | **Install and perform tests on GC A Side** |  | 1.62d | 2006-08-07 08:00 | 2006-08-08 14:00 | 2 | 2006-05-02 08:00 | 2006-05-03 11:30 | 1.44d | 0d |  | Cognizant | 39h |
| 8 | 1.2.1 | **Install GC "A" side with new release – load idl, create EC** |  | 0.85d | 2006-08-07 08:00 | 2006-08-07 15:50 |  | 2006-05-02 08:00 | 2006-05-02 15:20 | 0.79d | 0d |  | Cognizant | 13.67h |
| 9 | 1.2.1.1 | Generate XML, build Localrep, load All IFR and other Installation steps. |  | 2h | 2006-08-07 08:00 | 2006-08-07 10:00 | 5 | 2006-05-02 08:00 | 2006-05-02 10:00 | 2h | 0d | start no earlier than 2006-05-02 08:00 | Cognizant | 2h |
| 10 | 1.2.1.2 | Server Side Full Cleanup |  | 3h | 2006-08-07 10:00 | 2006-08-07 14:00 | 9 | 2006-05-02 10:00 | 2006-05-02 14:00 | 3h | 0d |  | Cognizant | 3h |
| 11 | 1.2.1.3 | Time server full startup after cleanup (See Server Startup Timing Page) |  | 1h | 2006-08-07 14:00 | 2006-08-07 15:00 | 10 | 2006-05-02 14:00 | 2006-05-02 15:00 | 1h | 0d |  | Cognizant | 1h |
| 12 | 1.2.1.4 | Backup for server Timings |  | 20min | 2006-08-07 15:00 | 2006-08-07 15:20 | 11 | 2006-05-02 15:00 | 2006-05-02 15:20 | 20min | 0d |  | Cognizant | 0.33h |
| 13 | 1.2.1.5 | Check: Sign off on Server Timings |  | 30min | 2006-08-07 15:20 | 2006-08-07 15:50 | 12 | 2006-05-02 15:20 | 2006-05-02 15:20 | 0h | 0d |  | CBOE | 0.5h |
| 14 | 1.2.2 | **ITG Checkout Script** |  | 0.19d | 2006-08-07 15:50 | 2006-08-08 08:20 | 8 | 2006-05-02 15:20 | 2006-05-02 16:50 | 0.19d | 0d |  | Cognizant | 3h |
| 15 | 1.2.1 | ITG Checkout for W_MAIN , ONE_MAIN session s |  | 40min | 2006-08-07 15:50 | 2006-08-07 16:30 | 13 | 2006-05-02 15:20 | 2006-05-02 16:00 | 40min | 0d |  | Cognizant | 0.67h |
| 16 | 1.2.5 | Backup for ITG Checkout (endOfPerformanceReport) |  | 20min | 2006-08-07 16:30 | 2006-08-07 16:50 | 15 | 2006-05-02 16:00 | 2006-05-02 16:20 | 20min | 0d |  | Cognizant | 0.33h |
| 17 | 1.2.2.3 | Check: Sign off on Checkout Scripts |  | 30min | 2006-08-07 16:50 | 2006-08-08 08:20 | 16 | 2006-05-02 16:20 | 2006-05-02 16:50 | 30min | 0d |  | CBOE | 0.5h |
| 18 | 1.2.3 | **User Login test1** |  | 0.2d | 2006-08-08 08:20 | 2006-08-08 09:55 | 14 | 2006-05-02 16:50 | 2006-05-03 08:55 | 0.14d | 0d |  | Cognizant | 3.17h |
| 19 | 1.2.3.1 | Initial setup like bouncing Global Server and SACAS. |  | 15min | 2006-08-08 08:20 | 2006-08-08 08:35 | 17 | 2006-05-02 16:50 | 2006-05-03 08:05 | 15min | 0d | start no earlier than 2006-05-03 08:00 | Cognizant | 0.25h |
| 20 | 1.2.3.2 | Login Test for 1 and 2 Users |  | 15min | 2006-08-08 08:35 | 2006-08-08 08:50 | 19 | 2006-05-03 08:05 | 2006-05-03 08:20 | 15min | 0d |  | Cognizant | 0.25h |
| 21 | 1.2.3.3 | Product State Update to CLOSE on VLO (visually timing Single class CLOSED with SAGUI) |  | 15min | 2006-08-08 08:50 | 2006-08-08 09:05 | 20 | 2006-05-03 08:20 | 2006-05-03 08:35 | 15min | 0d |  | Cognizant | 0.25h |
| 22 | 1.2.3.4 | Backup for Login User Test and Product state Update through SAGUI |  | 20min | 2006-08-08 09:05 | 2006-08-08 09:25 | 21 | 2006-05-03 08:35 | 2006-05-03 08:55 | 20min | 0d |  | Cognizant | 0.33h |
| 23 | 1.2.3.5 | Check: Sign Off on Logs and Results |  | 30min | 2006-08-08 09:25 | 2006-08-08 09:55 | 22 | 2006-05-03 08:55 | 2006-05-03 08:55 | 0h | 0d |  | CBOE | 0.5h |
| 24 | 1.2.4 | **GC failover to "B" side** |  | 0.39d | 2006-08-08 09:55 | 2006-08-08 14:00 | 18 | 2006-05-03 08:55 | 2006-05-03 11:30 | 0.32d | 0d |  | Cognizant | 6.17h |
| 25 | 1.2.4.1 | Initial setup for test Drivers (starting processes on GC Slave.) |  | 30min | 2006-08-08 09:55 | 2006-08-08 10:25 |  | 2006-05-03 08:55 | 2006-05-03 09:25 | 30min | 0d |  | Cognizant | 0.5h |
| 26 | 1.2.4.2 | Quote/Order BC20 Hybrid and ONE_MAIN traffic going before/during/after failover. Should not hang to verify no Global Dependency introduced. Test Execution |  | 45min | 2006-08-08 10:25 | 2006-08-08 11:10 | 25 | 2006-05-03 09:25 | 2006-05-03 10:10 | 45min | 0d |  | Cognizant | 0.75h |
| 27 | 1.2.4.3 | ITG Checkout script (for W_MAIN and ONE_MAIN Session) |  | 30min | 2006-08-08 11:10 | 2006-08-08 11:40 | 26 | 2006-05-03 10:10 | 2006-05-03 10:40 | 30min | 0d |  | Cognizant | 0.5h |
| 28 | 1.2.4.4 | Backup for Failover and ITG Checkout |  | 20min | 2006-08-08 11:40 | 2006-08-08 12:00 | 27 | 2006-05-03 10:40 | 2006-05-03 11:00 | 20min | 0d |  | Cognizant | 0.33h |
| 29 | 1.2.4.5 | Generate Report for Failover Timings for all GC Processes (taking time from log files) |  | 30min | 2006-08-08 13:00 | 2006-08-08 13:30 | 28 | 2006-05-03 11:00 | 2006-05-03 11:30 | 30min | 0d |  | Cognizant | 0.5h |
| 30 | 1.2.4.6 | Check: Sign Off on Checkout Scripts, Logs and Results |  | 30min | 2006-08-08 13:30 | 2006-08-08 14:00 | 29 | 2006-05-03 11:30 | 2006-05-03 11:30 | 0h | 0d |  | CBOE | 0.5h |

| ID | WBS | Task | Duration | Start | Finish | Predecessors | Baseline start | Baseline finish | Baseline duration | Total slack | Constraint | Resources | Work |
| --- | --- | --- | --- | --- | --- | --- | --- | --- | --- | --- | --- | --- | --- |
| 31 | 1.3 | **Install and perform tests on GC B Side** | 0.56d | 2006-08-08 14:00 | 2006-08-09 09:30 | 7 | 2006-05-03 11:30 | 2006-05-04 11:50 | 1.04d | 0d |  | Cognizant | 13.5h |
| 32 | 1.3.1 | **Install GC "B" side** | 0.56d | 2006-08-08 14:00 | 2006-08-09 09:30 |  | 2006-05-03 11:30 | 2006-05-03 16:30 | 0.5d | 0d |  | Cognizant | 9h |
| 33 | 1.3.1.1 | Cleanup, createCurrentBusinessDay,starting all GC Processes on B side | 3h | 2006-08-08 14:00 | 2006-08-08 17:00 | 30 | 2006-05-03 11:30 | 2006-05-03 15:30 | 3h | 0d |  | Cognizant | 3h |
| 34 | 1.3.1.2 | ITG Checkout script (for W_MAIN and ONE_MAIN Session) | 40min | 2006-08-09 08:00 | 2006-08-09 08:40 | 33 | 2006-05-03 15:30 | 2006-05-03 16:10 | 40min | 0d |  | Cognizant | 0.67h |
| 35 | 1.3.1.3 | Backup for GC Upgrade and ITG Checkout | 20min | 2006-08-09 08:40 | 2006-08-09 09:00 | 34 | 2006-05-03 16:10 | 2006-05-03 16:30 | 20min | 0d |  | Cognizant | 0.33h |
| 36 | 1.3.1.4 | Check: Sign Off on Checkout Scripts, Logs and Results | 30min | 2006-08-09 09:00 | 2006-08-09 09:30 | 35 | 2006-05-03 16:30 | 2006-05-03 16:30 | 0h | 0d |  | CBOE | 0.5h |
| 37 | 1.4 | Install and perform tests on MDGC A side | 6h | 2006-08-09 09:30 | 2006-08-09 16:30 | 31 |  |  |  | 0d |  | Cognizant | 6h |
| 38 | 1.5 | Install and perform tests on MDGC B side | 6h | 2006-08-09 16:30 | 2006-08-10 14:30 | 37 |  |  |  | 0d |  | Cognizant | 6h |
| 39 | 1.4 | **Install and Perform Tests on Hybrid BC A Side** | 2.89d | 2006-08-10 14:30 | 2006-08-15 13:35 | 38 | 2006-05-04 11:50 | 2006-05-09 10:40 | 2.85d | 0d |  | Cognizant | 67.25h |
| 40 | 1.10 | **Install Hybrid BC (A)** | 0.33d | 2006-08-10 14:30 | 2006-08-11 08:10 | 32 | 2006-05-04 11:50 | 2006-05-04 14:50 | 0.25d | 0d |  | Cognizant | 5.33h |
| 41 | 1.10.1 | Configuration and starting processes | 1.5h | 2006-08-10 14:30 | 2006-08-10 16:00 | 35 | 2006-05-04 11:50 | 2006-05-04 13:50 | 1h | 0d |  | Cognizant | 1.5h |
| 42 | 1.10.2 | ITG Checkout script (W_MAIN Session) | 20min | 2006-08-10 16:00 | 2006-08-10 16:20 | 41 | 2006-05-04 13:50 | 2006-05-04 14:30 | 40min | 0d |  | Cognizant | 0.33h |
| 43 | 1.10.3 | Backup and Reporting | 20min | 2006-08-10 16:20 | 2006-08-10 16:40 | 42 | 2006-05-04 14:30 | 2006-05-04 14:50 | 20min | 0d |  | Cognizant | 0.33h |
| 44 | 1.6.1.4 | Check: Sign Off on Checkout Scripts, Logs and Results | 30min | 2006-08-10 16:40 | 2006-08-11 08:10 | 43 | 2006-05-04 14:50 | 2006-05-04 14:50 | 0h | 0d |  | CBOE | 0.5h |
| 45 | 1.6.2 | FIX Strategy Order Test | 2h | 2006-08-11 08:10 | 2006-08-11 10:10 | 40 |  |  |  | 0d |  | Cognizant | 2h |
| 46 | 1.6.3 | **Global Dependency Test** | 0.17d | 2006-08-11 10:10 | 2006-08-11 11:30 | 45 | 2006-05-04 14:50 | 2006-05-04 15:40 | 0.1d | 0d |  | Cognizant | 2.67h |
| 47 | 1.6.3.1 | Test Execution | 30min | 2006-08-11 10:10 | 2006-08-11 10:40 | 44 | 2006-05-04 14:50 | 2006-05-04 15:20 | 30min | 0d | start no earlier than 2006-05-05 08:00 | Cognizant | 0.5h |
| 48 | 1.6.3.2 | Log Backup and Reporting | 20min | 2006-08-11 10:40 | 2006-08-11 11:00 | 47 | 2006-05-04 15:20 | 2006-05-04 15:40 | 20min | 0d |  | Cognizant | 0.33h |
| 49 | 1.6.3.3 | Check:Log and Results verification | 30min | 2006-08-11 11:00 | 2006-08-11 11:30 | 48 | 2006-05-04 15:40 | 2006-05-04 15:40 | 0h | 0d |  | Cognizant | 0.5h |
| 50 | 1.6.4 | **Mult Class Quote Step-up with Quotes only (Scenario 0)** | 0.32d | 2006-08-11 11:30 | 2006-08-11 15:05 | 46 |  |  |  | 0d |  | Cognizant | 5.17h |
| 51 | 1.6.4.1 | BC Cleanup, Initial Driver Setup, | 20min | 2006-08-11 11:30 | 2006-08-11 11:50 | 49 |  |  |  | 0d | start no earlier than 2006-04-24 08:00 | Cognizant | 0.33h |
| 52 | 1.6.4.2 | Test Execution for No BOTR | 1h | 2006-08-11 11:50 | 2006-08-11 13:50 | 51 |  |  |  | 0d | start no earlier than 2006-04-24 08:00 | Cognizant | 1h |
| 53 | 1.6.4.3 | endOfPerformance and Backup | 30min | 2006-08-11 13:50 | 2006-08-11 14:20 | 52 |  |  |  | 0d |  | Cognizant | 0.5h |
| 54 | 1.6.4.4 | Reporting through KR site | 15min | 2006-08-11 14:20 | 2006-08-11 14:35 | 53 |  |  |  | 0d |  | Cognizant | 0.25h |
| 55 | 1.6.4.5 | Check: Sign Off on Logs and Results | 30min | 2006-08-11 14:35 | 2006-08-11 15:05 | 54 |  |  |  | 0d |  | CBOE | 0.5h |

| ID | WBS | Task | Type | Duration | Start | Finish | Predecessors | Baseline start | Baseline finish | Baseline duration | Total slack | Resources | Work |
| --- | --- | --- | --- | --- | --- | --- | --- | --- | --- | --- | --- | --- | --- |
| 56 | 1.6.5 | **Hybrid test scenario 5 (Product State Change Test)** |  | 0.25d | 2006-08-11 15:05 | 2006-08-14 08:05 | 50 | 2006-05-04 15:40 | 2006-05-05 08:10 | 0.19d | 0d | Cognizant | 4h |
| 57 | 1.6.5.1 | BC Cleanup, Initial Driver Setup, |  | 20min | 2006-08-11 15:05 | 2006-08-11 15:25 | 49 | 2006-05-04 15:40 | 2006-05-04 16:00 | 20min | 0d | Cognizant | 0.33h |
| 58 | 1.6.5.2 | Test Execution - Global Server Bounce |  | 40min | 2006-08-11 15:25 | 2006-08-11 16:05 | 57 | 2006-05-04 16:00 | 2006-05-04 16:40 | 40min | 0d | Cognizant | 0.67h |
| 59 | 1.6.5.3 | Monitor and Backup logs |  | 20min | 2006-08-11 16:05 | 2006-08-11 16:25 | 58 | 2006-05-04 16:40 | 2006-05-04 17:00 | 20min | 0d | Cognizant | 0.33h |
| 60 | 1.6.5.4 | Reporting through KR site |  | 10min | 2006-08-11 16:25 | 2006-08-11 16:35 | 59 | 2006-05-05 08:00 | 2006-05-05 08:10 | 10min | 0d | Cognizant | 0.17h |
| 61 | 1.6.5.5 | Check: Sign Off on Logs and Results |  | 30min | 2006-08-11 16:35 | 2006-08-14 08:05 | 60 | 2006-05-05 08:10 | 2006-05-05 08:10 | 0h | 0d | CBOE | 0.5h |
| 62 | 1.12 | **Multi-class Quote step-up test with BOTR [Scenario 3]** |  | 0.45d | 2006-08-14 08:05 | 2006-08-14 11:40 | 56 | 2006-05-05 08:10 | 2006-05-05 11:15 | 0.39d | 0d | Cognizant | 7.17h |
| 63 | 1.12.1 | BC Cleanup, Initial Driver Setup, |  | 20min | 2006-08-14 08:05 | 2006-08-14 08:25 | 61 | 2006-05-05 08:10 | 2006-05-05 08:30 | 20min | 0d | Cognizant | 0.33h |
| 64 | 1.12.2 | Test Execution for No BOTR |  | 1h | 2006-08-14 08:25 | 2006-08-14 09:25 | 63 | 2006-05-05 08:30 | 2006-05-05 09:30 | 1h | 0d | Cognizant | 1h |
| 65 | 1.12.3 | BOTR from 4000 to 16000 |  | 30min | 2006-08-14 09:25 | 2006-08-14 09:55 | 64 | 2006-05-05 09:30 | 2006-05-05 10:00 | 30min | 0d | Cognizant | 0.5h |
| 66 | 1.12.4 | endOfPerformance and Backup |  | 45min | 2006-08-14 09:55 | 2006-08-14 10:40 | 65 | 2006-05-05 10:00 | 2006-05-05 10:45 | 45min | 0d | Cognizant | 0.75h |
| 67 | 1.12.5 | Reporting through KR site |  | 30min | 2006-08-14 10:40 | 2006-08-14 11:10 | 66 | 2006-05-05 10:45 | 2006-05-05 11:15 | 30min | 0d | Cognizant | 0.5h |
| 68 | 1.6.6.6 | Check: Sign Off on Logs and Results |  | 30min | 2006-08-14 11:10 | 2006-08-14 11:40 | 67 | 2006-05-05 11:15 | 2006-05-05 11:15 | 0h | 0d | CBOE | 0.5h |
| 69 | 1.13 | **Single-class Quote step-up test with BOTR [Scenario 1]** |  | 0.41d | 2006-08-14 11:40 | 2006-08-14 15:55 | 62 | 2006-05-05 11:15 | 2006-05-05 15:00 | 0.34d | 0d | Cognizant | 6.5h |
| 70 | 1.13.1 | BC Cleanup, Initial Driver Setup, |  | 20min | 2006-08-14 11:40 | 2006-08-14 12:00 | 68 | 2006-05-05 11:15 | 2006-05-05 11:35 | 20min | 0d | Cognizant | 0.33h |
| 71 | 1.13.2 | Test Execution for No BOTR |  | 1h | 2006-08-14 13:00 | 2006-08-14 14:00 | 70 | 2006-05-05 11:35 | 2006-05-05 13:35 | 1h | 0d | Cognizant | 1h |
| 72 | 1.13.3 | BOTR 16000 |  | 10min | 2006-08-14 14:00 | 2006-08-14 14:10 | 71 | 2006-05-05 13:35 | 2006-05-05 13:45 | 10min | 0d | Cognizant | 0.17h |
| 73 | 1.13.4 | endOfPerformance and Backup |  | 45min | 2006-08-14 14:10 | 2006-08-14 14:55 | 72 | 2006-05-05 13:45 | 2006-05-05 14:30 | 45min | 0d | Cognizant | 0.75h |
| 74 | 1.13.5 | Reporting through KR site |  | 30min | 2006-08-14 14:55 | 2006-08-14 15:25 | 73 | 2006-05-05 14:30 | 2006-05-05 15:00 | 30min | 0d | Cognizant | 0.5h |
| 75 | 1.6.7.6 | Check: Sign Off On Logs and Results |  | 30min | 2006-08-14 15:25 | 2006-08-14 15:55 | 74 | 2006-05-05 15:00 | 2006-05-05 15:00 | 0h | 0d | CBOE | 0.5h |
| 76 | 1.14 | **Multi-class Order step-up test [Scenario 4]** |  | 0.24d | 2006-08-14 15:55 | 2006-08-15 08:50 | 69 | 2006-05-05 15:00 | 2006-05-05 16:55 | 0.24d | 0d | Cognizant | 3.83h |
| 77 | 1.14.1 | BC Cleanup, Initial Driver Setup, |  | 20min | 2006-08-14 15:55 | 2006-08-14 16:15 | 75 | 2006-05-05 15:00 | 2006-05-05 15:20 | 20min | 0d | Cognizant | 0.33h |
| 78 | 1.14.2 | Test Execution for No BOTR |  | 1h | 2006-08-14 16:15 | 2006-08-15 08:15 | 77 | 2006-05-05 15:20 | 2006-05-05 16:20 | 1h | 0d | Cognizant | 1h |
| 79 | 1.14.3 | endOfPerformance and Backup |  | 20min | 2006-08-15 08:15 | 2006-08-15 08:35 | 78 | 2006-05-05 16:20 | 2006-05-05 16:40 | 20min | 0d | Cognizant | 0.33h |
| 80 | 1.14.4 | Reporting through KR site |  | 15min | 2006-08-15 08:35 | 2006-08-15 08:50 | 79 | 2006-05-05 16:40 | 2006-05-05 16:55 | 15min | 0d | Cognizant | 0.25h |
| 81 | 1.6.8.5 | Check: Sign Off on Logs and Results | milestone | 0h | 2006-08-15 08:50 | 2006-08-15 08:50 | 80 | 2006-05-05 16:55 | 2006-05-05 16:55 | 0h | 0d | CBOE |  |

| ID | WBS | Task | Duration | Start | Finish | Predecessors | Baseline start | Baseline finish | Baseline duration | Total slack | Resources | Work |
| --- | --- | --- | --- | --- | --- | --- | --- | --- | --- | --- | --- | --- |
| 82 | 1.15 | **Hybrid BC failover (new release to old release)** | 0.47d | 2006-08-15 08:50 | 2006-08-15 13:35 | 76 | 2006-05-08 16:55 | 2006-05-09 10:40 | 0.34d | 0d | Cognizant | 7.5h |
| 83 | 1.6.9.1 | BC Cleanup start A Side as Master | 20min | 2006-08-15 08:50 | 2006-08-15 09:10 | 81 | 2006-05-08 16:55 | 2006-05-09 08:15 | 20min | 0d | Cognizant | 0.33h |
| 84 | 1.15.1 | Initial setup for test Drivers (starting processes on BC Slave.) | 25min | 2006-08-15 09:10 | 2006-08-15 09:35 | 83 | 2006-05-09 08:15 | 2006-05-09 08:40 | 25min | 0d | Cognizant | 0.42h |
| 85 | 1.15.2 | Quote/Order BC20 Hybrid traffic going before/during/after failover. Test Execution | 1h | 2006-08-15 09:35 | 2006-08-15 10:35 | 84 | 2006-05-09 08:40 | 2006-05-09 09:10 | 30min | 0d | Cognizant | 1h |
| 86 | 1.15.3 | ITG Checkout script (for W_MAIN and ONE_MAIN Session) | 40min | 2006-08-15 10:35 | 2006-08-15 11:15 | 85 | 2006-05-09 09:10 | 2006-05-09 09:50 | 40min | 0d | Cognizant | 0.67h |
| 87 | 1.15.4 | Backup for Failover and ITG Checkout | 20min | 2006-08-15 11:15 | 2006-08-15 11:35 | 86 | 2006-05-09 09:50 | 2006-05-09 10:10 | 20min | 0d | Cognizant | 0.33h |
| 88 | 1.15.5 | Generate Report for Failover Timings for all BC Processes (taking time from log files) | 30min | 2006-08-15 11:35 | 2006-08-15 13:05 | 87 | 2006-05-09 10:10 | 2006-05-09 10:40 | 30min | 0d | Cognizant | 0.5h |
| 89 | 1.6.9.7 | Check: Sign Off on Checkout Scripts, Logs and Results | 30min | 2006-08-15 13:05 | 2006-08-15 13:35 | 88 | 2006-05-09 10:40 | 2006-05-09 10:40 | 0h | 0d | CBOE | 0.5h |
| 90 | 1.5 | **Install and Perform Failoveron Hybrid BC B Side** | 0.76d | 2006-08-15 13:35 | 2006-08-16 10:40 | 39 | 2006-05-09 10:40 | 2006-05-09 16:25 | 0.59d | 0d | Cognizant | 18.25h |
| 91 | 1.16 | **Install Hybrid BC "B" side** | 0.38d | 2006-08-15 13:35 | 2006-08-15 16:35 | 82 | 2006-05-09 10:40 | 2006-05-09 14:00 | 0.29d | 0d | Cognizant | 6h |
| 92 | 1.7.1.1 | Cleanup | 20min | 2006-08-15 13:35 | 2006-08-15 13:55 | 89 | 2006-05-09 10:40 | 2006-05-09 11:00 | 20min | 0d | Cognizant | 0.33h |
| 93 | 1.16.1 | Configuration and starting processes | 1.5h | 2006-08-15 13:55 | 2006-08-15 15:25 | 92 | 2006-05-09 11:00 | 2006-05-09 12:00 | 1h | 0d | Cognizant | 1.5h |
| 94 | 1.16.2 | ITG Checkout script (W_MAIN Session) | 20min | 2006-08-15 15:25 | 2006-08-15 15:45 | 93 | 2006-05-09 13:00 | 2006-05-09 13:40 | 40min | 0d | Cognizant | 0.33h |
| 95 | 1.16.3 | Backup and Reporting | 20min | 2006-08-15 15:45 | 2006-08-15 16:05 | 94 | 2006-05-09 13:40 | 2006-05-09 14:00 | 20min | 0d | Cognizant | 0.33h |
| 96 | 1.7.1.5 | Check: Sign Off on Checkout Scripts, Logs and Results | 30min | 2006-08-15 16:05 | 2006-08-15 16:35 | 95 | 2006-05-09 14:00 | 2006-05-09 14:00 | 0h | 0d | CBOE | 0.5h |
| 97 | 1.17 | **Hybrid BC failover (new release to new release)** | 0.39d | 2006-08-15 16:35 | 2006-08-16 10:40 | 91 | 2006-05-09 14:00 | 2006-05-09 16:25 | 0.3d | 0d | Cognizant | 6.17h |
| 98 | 1.17.1 | Initial setup for test Drivers (starting processes on BC Slave.) | 25min | 2006-08-15 16:35 | 2006-08-15 17:00 | 96 | 2006-05-09 14:00 | 2006-05-09 14:25 | 25min | 0d | Cognizant | 0.42h |
| 99 | 1.17.2 | Quote/Order BC20 Hybrid traffic going before/during/after failover. Test Execution | 1h | 2006-08-16 08:00 | 2006-08-16 09:00 | 98 | 2006-05-09 14:25 | 2006-05-09 14:55 | 30min | 0d | Cognizant | 1h |
| 100 | 1.17.3 | ITG Checkout script (for W_MAIN Session) | 20min | 2006-08-16 09:00 | 2006-08-16 09:20 | 99 | 2006-05-09 14:55 | 2006-05-09 15:35 | 40min | 0d | Cognizant | 0.33h |
| 101 | 1.17.4 | Backup for Failover and ITG Checkout | 20min | 2006-08-16 09:20 | 2006-08-16 09:40 | 100 | 2006-05-09 15:35 | 2006-05-09 15:55 | 20min | 0d | Cognizant | 0.33h |
| 102 | 1.17.5 | Generate Report for Failover Timings for all BC Processes (taking time from log files) | 30min | 2006-08-16 09:40 | 2006-08-16 10:10 | 101 | 2006-05-09 15:55 | 2006-05-09 16:25 | 30min | 0d | Cognizant | 0.5h |
| 103 | 1.7.2.6 | Check: Sign Off on Checkout Scripts,Logs and Results | 30min | 2006-08-16 10:10 | 2006-08-16 10:40 | 102 | 2006-05-09 16:25 | 2006-05-09 16:25 | 0h | 0d | CBOE | 0.5h |
| 104 | 1.6 | **Install and Perform Tests on ONE_MAIN BC A Side** | 1.32d | 2006-08-16 10:40 | 2006-08-17 14:15 | 90 | 2006-05-09 16:25 | 2006-05-11 08:10 | 1.09d | 0d | Cognizant | 31.75h |
| 105 | 1.26 | **Install ONE_MAIN BC (A)** | 0.33d | 2006-08-16 10:40 | 2006-08-16 14:20 | 97 | 2006-05-09 16:25 | 2006-05-10 09:25 | 0.25d | 0d | Cognizant | 5.33h |
| 106 | 1.26.1 | Configuration and starting processes | 1.5h | 2006-08-16 10:40 | 2006-08-16 13:10 | 103 | 2006-05-09 16:25 | 2006-05-10 08:25 | 1h | 0d | Cognizant | 1.5h |
| 107 | 1.26.2 | ITG Checkout script (ONE_MAIN Session) | 20min | 2006-08-16 13:10 | 2006-08-16 13:30 | 106 | 2006-05-10 08:25 | 2006-05-10 09:05 | 40min | 0d | Cognizant | 0.33h |
| 108 | 1.26.3 | Backup and Reporting | 20min | 2006-08-16 13:30 | 2006-08-16 13:50 | 107 | 2006-05-10 09:05 | 2006-05-10 09:25 | 20min | 0d | Cognizant | 0.33h |
| 109 | 1.8.1.4 | Check: Sign Off on Checkout Scripts, Logs and Results | 30min | 2006-08-16 13:50 | 2006-08-16 14:20 | 108 | 2006-05-10 09:25 | 2006-05-10 09:25 | 0h | 0d | CBOE | 0.5h |

| ID | WBS | Task | Duration | Start | Finish | Predecessors | Baseline start | Baseline finish | Baseline duration | Total slack | Resources | Work |
| --- | --- | --- | --- | --- | --- | --- | --- | --- | --- | --- | --- | --- |
| 110 | 1.27 | **Multi-class Order step-up test for ONE_MAIN [Scenario 2]** | 0.29d | 2006-08-16 14:20 | 2006-08-16 16:40 | 105 | 2006-05-10 09:25 | 2006-05-10 11:15 | 0.23d | 0d | Cognizant | 4.67h |
| 111 | 1.27.1 | BC Cleanup, Initial Driver Setup, | 20min | 2006-08-16 14:20 | 2006-08-16 14:40 |  | 2006-05-10 09:25 | 2006-05-10 09:45 | 20min | 0d | Cognizant | 0.33h |
| 112 | 1.27.2 | Test Execution for No BOTR | 1h | 2006-08-16 14:40 | 2006-08-16 15:40 | 111 | 2006-05-10 09:45 | 2006-05-10 10:45 | 1h | 0d | Cognizant | 1h |
| 113 | 1.27.3 | endOfPerformance and Backup | 15min | 2006-08-16 15:40 | 2006-08-16 15:55 | 112 | 2006-05-10 10:45 | 2006-05-10 11:00 | 15min | 0d | Cognizant | 0.25h |
| 114 | 1.27.4 | Reporting through KR site | 15min | 2006-08-16 15:55 | 2006-08-16 16:10 | 113 | 2006-05-10 11:00 | 2006-05-10 11:15 | 15min | 0d | Cognizant | 0.25h |
| 115 | 1.8.2.5 | Check: Sign Off on Logs and Results | 30min | 2006-08-16 16:10 | 2006-08-16 16:40 | 114 | 2006-05-10 11:15 | 2006-05-10 11:15 | 0h | 0d | CBOE | 0.5h |
| 116 | 1.28 | **Multi-class Quote step-up test [Scenario 1]** | 0.33d | 2006-08-16 16:40 | 2006-08-17 10:20 | 110 | 2006-05-10 11:15 | 2006-05-10 14:25 | 0.27d | 0d | Cognizant | 5.33h |
| 117 | 1.28.1 | BC Cleanup, Initial Driver Setup, | 20min | 2006-08-16 16:40 | 2006-08-16 17:00 |  | 2006-05-10 11:15 | 2006-05-10 11:35 | 20min | 0d | Cognizant | 0.33h |
| 118 | 1.28.2 | Test Execution for No BOTR | 1h | 2006-08-17 08:00 | 2006-08-17 09:00 | 117 | 2006-05-10 11:35 | 2006-05-10 13:35 | 1h | 0d | Cognizant | 1h |
| 119 | 1.28.3 | endOfPerformance and Backup | 30min | 2006-08-17 09:00 | 2006-08-17 09:30 | 118 | 2006-05-10 13:35 | 2006-05-10 14:05 | 30min | 0d | Cognizant | 0.5h |
| 120 | 1.28.4 | Reporting through KR site | 20min | 2006-08-17 09:30 | 2006-08-17 09:50 | 119 | 2006-05-10 14:05 | 2006-05-10 14:25 | 20min | 0d | Cognizant | 0.33h |
| 121 | 1.8.3.5 | Check: Sign Off on Logs and Results | 30min | 2006-08-17 09:50 | 2006-08-17 10:20 | 120 | 2006-05-10 14:25 | 2006-05-10 14:25 | 0h | 0d | CBOE | 0.5h |
| 122 | 1.30 | **Failover ONE_MAIN BC (Old to New)** | 0.36d | 2006-08-17 10:20 | 2006-08-17 14:15 | 116 | 2006-05-10 14:25 | 2006-05-11 08:10 | 0.34d | 0d | Cognizant | 5.83h |
| 123 | 1.8.4.1 | Cleanup | 20min | 2006-08-17 10:20 | 2006-08-17 10:40 | 121 | 2006-05-10 14:25 | 2006-05-10 14:45 | 20min | 0d | Cognizant | 0.33h |
| 124 | 1.30.1 | Initial setup for test Drivers (starting processes on BC Slave.) | 25min | 2006-08-17 10:40 | 2006-08-17 11:05 | 123 | 2006-05-10 14:45 | 2006-05-10 15:10 | 25min | 0d | Cognizant | 0.42h |
| 125 | 1.30.2 | Quote/Order ONE_MAIN traffic going before/during/after failover. Test Execution | 30min | 2006-08-17 11:05 | 2006-08-17 11:35 | 124 | 2006-05-10 15:10 | 2006-05-10 15:40 | 30min | 0d | Cognizant | 0.5h |
| 126 | 1.30.3 | ITG Checkout script (for ONE_MAIN Session) | 20min | 2006-08-17 11:35 | 2006-08-17 11:55 | 125 | 2006-05-10 15:40 | 2006-05-10 16:20 | 40min | 0d | Cognizant | 0.33h |
| 127 | 1.30.4 | Backup for Failover and ITG Checkout | 20min | 2006-08-17 11:55 | 2006-08-17 13:15 | 126 | 2006-05-10 16:20 | 2006-05-10 16:40 | 20min | 0d | Cognizant | 0.33h |
| 128 | 1.30.5 | Generate Report for Failover Timings for all BC Processes (taking time from log files) | 30min | 2006-08-17 13:15 | 2006-08-17 13:45 | 127 | 2006-05-10 16:40 | 2006-05-11 08:10 | 30min | 0d | Cognizant | 0.5h |
| 129 | 1.8.4.7 | Check: Sign Off on Checkout Scripts,Logs and Results | 30min | 2006-08-17 13:45 | 2006-08-17 14:15 | 128 | 2006-05-11 08:10 | 2006-05-11 08:10 | 0h | 0d | CBOE | 0.5h |
| 130 | 1.7 | **Install and Perform failover on ONE_MAIN BC B Side** | 0.7d | 2006-08-17 14:15 | 2006-08-18 10:50 | 104 | 2006-05-11 08:10 | 2006-05-11 13:55 | 0.59d | 0d | Cognizant | 16.75h |
| 131 | 1.31 | **Install ONE_MAIN BC (B)** | 0.33d | 2006-08-17 14:15 | 2006-08-17 16:55 | 122 | 2006-05-11 08:10 | 2006-05-11 10:10 | 0.25d | 0d | Cognizant | 5.33h |
| 132 | 1.31.1 | Configuration and starting processes | 1.5h | 2006-08-17 14:15 | 2006-08-17 15:45 | 129 | 2006-05-11 08:10 | 2006-05-11 09:10 | 1h | 0d | Cognizant | 1.5h |
| 133 | 1.31.2 | ITG Checkout script ( ONE_MAIN Session) | 20min | 2006-08-17 15:45 | 2006-08-17 16:05 | 132 | 2006-05-11 09:10 | 2006-05-11 09:50 | 40min | 0d | Cognizant | 0.33h |
| 134 | 1.31.3 | Backup and Reporting | 20min | 2006-08-17 16:05 | 2006-08-17 16:25 | 133 | 2006-05-11 09:50 | 2006-05-11 10:10 | 20min | 0d | Cognizant | 0.33h |
| 135 | 1.9.1.4 | Check: Sign Off on Checkout Scripts, Logs and Results | 30min | 2006-08-17 16:25 | 2006-08-17 16:55 | 134 | 2006-05-11 10:10 | 2006-05-11 10:10 | 0h | 0d | CBOE | 0.5h |

| ID | WBS | Task | Duration | Start | Finish | Predecessors | Baseline start | Baseline finish | Baseline duration | Total slack | Constraint | Resources | Work |
| --- | --- | --- | --- | --- | --- | --- | --- | --- | --- | --- | --- | --- | --- |
| 136 | 1.9.2 | **Failover ONE_MAIN BC (New to New)** | 0.36d | 2006-08-17 16:55 | 2006-08-18 10:50 | 131 | 2006-05-11 10:10 | 2006-05-11 13:55 | 0.34d | 0d |  | Cognizant | 5.83h |
| 137 | 1.9.2.1 | Cleanup | 20min | 2006-08-17 16:55 | 2006-08-18 08:15 | 135 | 2006-05-11 10:10 | 2006-05-11 10:30 | 20min | 0d |  | Cognizant | 0.33h |
| 138 | 1.9.2.2 | Initial setup for test Drivers (starting processes on BC Slave.) | 25min | 2006-08-18 08:15 | 2006-08-18 08:40 | 137 | 2006-05-11 10:30 | 2006-05-11 10:55 | 25min | 0d |  | Cognizant | 0.42h |
| 139 | 1.9.2.3 | Quote/Order ONE_MAIN traffic going before/during/after failover. Test Execution | 30min | 2006-08-18 08:40 | 2006-08-18 09:10 | 138 | 2006-05-11 10:55 | 2006-05-11 11:25 | 30min | 0d |  | Cognizant | 0.5h |
| 140 | 1.9.2.4 | ITG Checkout script (for ONE_MAIN Session) | 20min | 2006-08-18 09:10 | 2006-08-18 09:30 | 139 | 2006-05-11 11:25 | 2006-05-11 13:05 | 40min | 0d |  | Cognizant | 0.33h |
| 141 | 1.9.2.5 | Backup for Failover and ITG Checkout | 20min | 2006-08-18 09:30 | 2006-08-18 09:50 | 140 | 2006-05-11 13:05 | 2006-05-11 13:25 | 20min | 0d |  | Cognizant | 0.33h |
| 142 | 1.9.2.6 | Generate Report for Failover Timings for all BC Processes (taking time from log files) | 30min | 2006-08-18 09:50 | 2006-08-18 10:20 | 141 | 2006-05-11 13:25 | 2006-05-11 13:55 | 30min | 0d |  | Cognizant | 0.5h |
| 143 | 1.9.2.7 | Check: Sign Off on Checkout Scripts,Logs and Results | 30min | 2006-08-18 10:20 | 2006-08-18 10:50 | 142 | 2006-05-11 13:55 | 2006-05-11 13:55 | 0h | 0d |  | CBOE | 0.5h |
| 144 | 1.10 | **4 Hour Endurance Test** | 0.81d | 2006-08-18 10:50 | 2006-08-21 09:20 | 130 | 2006-05-11 13:55 | 2006-05-12 10:55 | 0.75d | 0d |  | Cognizant | 13h |
| 145 | 1.10.1 | Cleanup for W_MAIN and ONE_MAIN BC | 20min | 2006-08-18 10:50 | 2006-08-18 11:10 |  | 2006-05-11 13:55 | 2006-05-11 14:15 | 20min | 0d |  | Cognizant | 0.33h |
| 146 | 1.10.2 | Driver setup | 20min | 2006-08-18 11:10 | 2006-08-18 11:30 | 145 | 2006-05-11 14:15 | 2006-05-11 14:35 | 20min | 0d |  | Cognizant | 0.33h |
| 147 | 1.10.3 | CAS bounce | 20min | 2006-08-18 11:30 | 2006-08-18 11:50 | 146 | 2006-05-11 14:35 | 2006-05-11 14:55 | 20min | 0d |  | Cognizant | 0.33h |
| 148 | 1.10.4 | 4 hour Sanity Check | 4h | 2006-08-18 11:50 | 2006-08-18 16:50 | 147 | 2006-05-11 14:55 | 2006-05-12 09:55 | 4h | 0d |  | Cognizant | 4h |
| 149 | 1.10.5 | endOfPerformance and Backup and Reporting | 1h | 2006-08-18 16:50 | 2006-08-21 08:50 | 148 | 2006-05-12 09:55 | 2006-05-12 10:55 | 1h | 0d |  | Cognizant | 1h |
| 150 | 1.10.6 | Check: Sign Off on Logs and Results | 30min | 2006-08-21 08:50 | 2006-08-21 09:20 | 149 | 2006-05-12 10:55 | 2006-05-12 10:55 | 0h | 0d |  | CBOE | 0.5h |
| 151 | 1.11 | **Install and Perform tests on FE A Side** | 0.99d | 2006-08-21 09:20 | 2006-08-22 09:15 | 144 |  |  |  | 0d |  | Cognizant | 23.75h |
| 152 | 1.11.1 | **Install FE A** | 0.38d | 2006-08-21 09:20 | 2006-08-21 13:20 | 144 |  |  |  | 0d |  | Cognizant | 6h |
| 153 | 1.10.1 | Configuration and starting processes | 1.5h | 2006-08-21 09:20 | 2006-08-21 10:50 | 136 | 2006-05-04 11:50 | 2006-05-04 13:50 | 1h | 0d |  | Cognizant | 1.5h |
| 154 | 1.10.2 | ITG Checkout script (W_MAIN and ONE_MAIN Session) | 40min | 2006-08-21 10:50 | 2006-08-21 11:30 | 153 | 2006-05-04 13:50 | 2006-05-04 14:30 | 40min | 0d |  | Cognizant | 0.67h |
| 155 | 1.10.3 | Backup and Reporting | 20min | 2006-08-21 11:30 | 2006-08-21 11:50 | 154 | 2006-05-04 14:30 | 2006-05-04 14:50 | 20min | 0d |  | Cognizant | 0.33h |
| 156 | 1.11.1.4 | Check: Sign Off on Checkout Scripts, Logs and Results | 30min | 2006-08-21 11:50 | 2006-08-21 13:20 | 155 | 2006-05-04 14:50 | 2006-05-04 14:50 | 0h | 0d |  | CBOE | 0.5h |
| 157 | 1.11.2 | **Mult Class Quote Step-up with Quotes only (Scenario 0)** | 0.32d | 2006-08-21 13:20 | 2006-08-21 15:55 | 152 |  |  |  | 0d |  | Cognizant | 5.17h |
| 158 | 1.11.2.1 | BC Cleanup, Initial Driver Setup, | 20min | 2006-08-21 13:20 | 2006-08-21 13:40 | 156 |  |  |  | 0d | start no earlier than 2006-04-24 08:00 | Cognizant | 0.33h |
| 159 | 1.11.2.2 | Test Execution for No BOTR | 1h | 2006-08-21 13:40 | 2006-08-21 14:40 | 158 |  |  |  | 0d | start no earlier than 2006-04-24 08:00 | Cognizant | 1h |
| 160 | 1.11.2.3 | endOfPerformance and Backup | 30min | 2006-08-21 14:40 | 2006-08-21 15:10 | 159 |  |  |  | 0d |  | Cognizant | 0.5h |
| 161 | 1.11.2.4 | Reporting through KR site | 15min | 2006-08-21 15:10 | 2006-08-21 15:25 | 160 |  |  |  | 0d |  | Cognizant | 0.25h |
| 162 | 1.11.2.5 | Check: Sign Off on Logs and Results | 30min | 2006-08-21 15:25 | 2006-08-21 15:55 | 161 |  |  |  | 0d |  | CBOE | 0.5h |

| ID | WBS | Task | Duration | Start | Finish | Predecessors | Baseline start | Baseline finish | Baseline duration | Total slack | Resources | Work |
| --- | --- | --- | --- | --- | --- | --- | --- | --- | --- | --- | --- | --- |
| 163 | 1.11.3 | **FE Failover - New to Old** | 0.29d | 2006-08-21 15:55 | 2006-08-22 09:15 | 157 |  |  |  | 0d | Cognizant | 4.67h |
| 164 | 1.11.3.1 | initial cleanup and driver setup | 20min | 2006-08-21 15:55 | 2006-08-21 16:15 | 162 |  |  |  | 0d | Cognizant | 0.33h |
| 165 | 1.11.3.2 | Quote and order traffic | 20min | 2006-08-21 16:15 | 2006-08-21 16:35 | 164 |  |  |  | 0d | Cognizant | 0.33h |
| 166 | 1.11.3.3 | stop A side FE processes and see effect on traffic | 10min | 2006-08-21 16:35 | 2006-08-21 16:45 | 165 |  |  |  | 0d | Cognizant | 0.17h |
| 167 | 1.11.3.4 | ITG Checkout with only Old FE processes up | 40min | 2006-08-21 16:45 | 2006-08-22 08:25 | 166 |  |  |  | 0d | Cognizant | 0.67h |
| 168 | 1.11.3.5 | Log backup | 20min | 2006-08-22 08:25 | 2006-08-22 08:45 | 167 |  |  |  | 0d | Cognizant | 0.33h |
| 169 | 1.11.3.6 | Check: Sign Off on Checkout Scripts, Logs and Results | 30min | 2006-08-22 08:45 | 2006-08-22 09:15 | 168 | 2006-05-09 10:40 | 2006-05-09 10:40 | 0h | 0d | CBOE | 0.5h |
| 170 | 1.12 | **Install and Perform tests on FE B Side** | 0.67d | 2006-08-22 09:15 | 2006-08-22 15:35 | 151 |  |  |  | 0d | Cognizant | 16h |
| 171 | 1.12.1 | **Install FE B** | 0.38d | 2006-08-22 09:15 | 2006-08-22 13:15 | 163 |  |  |  | 0d | Cognizant | 6h |
| 172 | 1.10.1 | Configuration and starting processes | 1.5h | 2006-08-22 09:15 | 2006-08-22 10:45 | 169 | 2006-05-04 11:50 | 2006-05-04 13:50 | 1h | 0d | Cognizant | 1.5h |
| 173 | 1.10.2 | ITG Checkout script (W_MAIN and ONE_MAIN Session) | 40min | 2006-08-22 10:45 | 2006-08-22 11:25 | 172 | 2006-05-04 13:50 | 2006-05-04 14:30 | 40min | 0d | Cognizant | 0.67h |
| 174 | 1.10.3 | Backup and Reporting | 20min | 2006-08-22 11:25 | 2006-08-22 11:45 | 173 | 2006-05-04 14:30 | 2006-05-04 14:50 | 20min | 0d | Cognizant | 0.33h |
| 175 | 1.12.1.4 | Check: Sign Off on Checkout Scripts, Logs and Results | 30min | 2006-08-22 11:45 | 2006-08-22 13:15 | 174 | 2006-05-04 14:50 | 2006-05-04 14:50 | 0h | 0d | CBOE | 0.5h |
| 176 | 1.12.2 | **FE Failover - New to New** | 0.29d | 2006-08-22 13:15 | 2006-08-22 15:35 | 171 |  |  |  | 0d | Cognizant | 4.67h |
| 177 | 1.12.2.1 | initial cleanup and driver setup | 20min | 2006-08-22 13:15 | 2006-08-22 13:35 | 175 |  |  |  | 0d | Cognizant | 0.33h |
| 178 | 1.12.2.2 | Quote and order traffic | 20min | 2006-08-22 13:35 | 2006-08-22 13:55 | 177 |  |  |  | 0d | Cognizant | 0.33h |
| 179 | 1.12.2.3 | stop A side FE processes and see effect on traffic | 10min | 2006-08-22 13:55 | 2006-08-22 14:05 | 178 |  |  |  | 0d | Cognizant | 0.17h |
| 180 | 1.12.2.4 | ITG Checkout with only Old FE processes up | 40min | 2006-08-22 14:05 | 2006-08-22 14:45 | 179 |  |  |  | 0d | Cognizant | 0.67h |
| 181 | 1.12.2.5 | Log backup | 20min | 2006-08-22 14:45 | 2006-08-22 15:05 | 180 |  |  |  | 0d | Cognizant | 0.33h |
| 182 | 1.12.2.6 | Check: Sign Off on Checkout Scripts, Logs and Results | 30min | 2006-08-22 15:05 | 2006-08-22 15:35 | 181 | 2006-05-09 10:40 | 2006-05-09 10:40 | 0h | 0d | CBOE | 0.5h |
| 183 | 1.42 | **Server Side Full Cleanup after All Server upgrades.** | 0.6d | 2006-08-22 15:35 | 2006-08-23 11:25 | 170 | 2006-05-15 08:55 | 2006-05-15 14:15 | 0.54d | 0d | Cognizant | 9.67h |
| 184 | 1.42.1 | Time server full startup after cleanup (See Server Startup Timing Page) | 4h | 2006-08-22 15:35 | 2006-08-23 10:35 | 182 | 2006-05-15 08:55 | 2006-05-15 13:55 | 4h | 0d | Cognizant | 4h |
| 185 | 1.42.2 | Backup for server Timings | 20min | 2006-08-23 10:35 | 2006-08-23 10:55 | 184 | 2006-05-15 13:55 | 2006-05-15 14:15 | 20min | 0d | Cognizant | 0.33h |
| 186 | 1.13.3 | Check: Sign Off on Logs and Results | 30min | 2006-08-23 10:55 | 2006-08-23 11:25 | 185 | 2006-05-15 14:15 | 2006-05-15 14:15 | 0h | 0d | CBOE | 0.5h |
| 187 | 1.14 | MDCAS Upgrade and Tests | 8h | 2006-08-23 11:25 | 2006-08-24 11:25 | 186 |  |  |  | 0d | Cognizant | 8h |
| 188 | 1.15 | CAS Upgrades and Tests | 8h | 2006-08-24 11:25 | 2006-08-25 11:25 | 187 |  |  |  | 0d | Cognizant | 8h |
| 189 | 1.16 | FIX Upgrades and Tests | 3h | 2006-08-25 11:25 | 2006-08-25 15:25 | 188 |  |  |  | 0d | Cognizant | 3h |

| ID | WBS | Task | Type | Duration | Start | Finish | Predecessors | Baseline start | Baseline finish | Baseline duration | Total slack | Resources |
| --- | --- | --- | --- | --- | --- | --- | --- | --- | --- | --- | --- | --- |
| 190 | 1.17 | **Check: Overall Verification** |  | 0d | 2006-08-25 15:25 | 2006-08-25 15:25 | 189 | 2006-05-15 14:15 | 2006-05-15 14:15 | 0d | 0d | CBOE |
| 191 | 1.17.1 | All Results Signed Off | milestone | 0h | 2006-08-25 15:25 | 2006-08-25 15:25 | 185 | 2006-05-15 14:15 | 2006-05-15 14:15 | 0h | 0d | CBOE |
| 192 | 1.17.2 | All Tests Completed | milestone | 0h | 2006-08-25 15:25 | 2006-08-25 15:25 | 185 | 2006-05-15 14:15 | 2006-05-15 14:15 | 0h | 0d | CBOE |
| 193 | 1.17.3 | Results approved by Paul and Respective Groups | milestone | 0h | 2006-08-25 15:25 | 2006-08-25 15:25 | 185 | 2006-05-15 14:15 | 2006-05-15 14:15 | 0h | 0d | CBOE |
