Schedule from MS Project, 2006-05-02 to 2006-05-15, A marks actual dates.
Cognizant Technology Solutions

## Calendars

- Standard: Mon-Fri 08:00-12:00, 13:00-17:00; Sat-Sun off.

## Resources

| Resource |
| --- |
| Cognizant |
| 2 |
| CBOE |
| Piwnicki |
| Bobbie |

## Schedule

| ID | WBS | Task | Type | Duration | Start | Finish | Predecessors | Complete | Remaining | Baseline start | Baseline finish | Baseline duration | Total slack | Constraint | Resources | Work | Actual work |
| --- | --- | --- | --- | --- | --- | --- | --- | --- | --- | --- | --- | --- | --- | --- | --- | --- | --- |
| 1 | 1 | **Rollout Task** |  | 9.85d | 2006-05-02 08:00 A | 2006-05-15 15:50 |  | 63% | 3.62d | 2006-05-02 08:00 | 2006-05-15 14:15 | 9.66d | 0d |  |  | 237.75h | 155.34h |
| 2 | 1.1 | **Pre-Rollout Verification/Changes [If required]** |  | 0d | 2006-05-02 08:00 A | 2006-05-02 08:00 A |  | 100% |  | 2006-05-02 08:00 | 2006-05-02 08:00 | 0d |  |  |  |  |  |
| 3 | 1.1.1 | Database changes | milestone | 0h | 2006-05-02 08:00 A | 2006-05-02 08:00 A |  | 100% |  | 2006-05-02 08:00 | 2006-05-02 08:00 | 0h |  | start no earlier than 2006-05-02 08:00 | CBOE |  |  |
| 4 | 1.1.2 | Extent Map changes | milestone | 0h | 2006-05-02 08:00 A | 2006-05-02 08:00 A | 3 | 100% |  | 2006-05-02 08:00 | 2006-05-02 08:00 | 0h |  |  | CBOE |  |  |
| 5 | 1.1.3 | Version label verification on all boxes | milestone | 0h | 2006-05-02 08:00 A | 2006-05-02 08:00 A | 4 | 100% |  | 2006-05-02 08:00 | 2006-05-02 08:00 | 0h |  |  | CBOE |  |  |
| 6 | 1.1.4 | Check: Tier Lead has verified information and obtained a sign off | milestone | 0h | 2006-05-02 08:00 A | 2006-05-02 08:00 A | 3, 4, 5 | 100% |  | 2006-05-02 08:00 | 2006-05-02 08:00 | 0h |  |  | CBOE |  |  |
| 7 | 1.2 | **Install and perform tests on GC A Side** |  | 1.62d | 2006-05-02 08:00 A | 2006-05-03 14:00 A | 2 | 100% |  | 2006-05-02 08:00 | 2006-05-03 11:30 | 1.44d |  |  | Cognizant | 39h | 39h |
| 8 | 1.2.1 | **Install GC "A" side with new release – load idl, create EC** |  | 0.85d | 2006-05-02 08:00 A | 2006-05-02 15:50 A |  | 100% |  | 2006-05-02 08:00 | 2006-05-02 15:20 | 0.79d |  |  | Cognizant | 13.67h | 13.67h |
| 9 | 1.2.1.1 | Generate XML, build Localrep, load All IFR and other Installation steps. |  | 2h | 2006-05-02 08:00 A | 2006-05-02 10:00 A | 5 | 100% |  | 2006-05-02 08:00 | 2006-05-02 10:00 | 2h |  | start no earlier than 2006-05-02 08:00 | Cognizant | 2h | 2h |
| 10 | 1.2.1.2 | Server Side Full Cleanup |  | 3h | 2006-05-02 10:00 A | 2006-05-02 14:00 A | 9 | 100% |  | 2006-05-02 10:00 | 2006-05-02 14:00 | 3h |  |  | Cognizant | 3h | 3h |
| 11 | 1.2.1.3 | Time server full startup after cleanup (See Server Startup Timing Page) |  | 1h | 2006-05-02 14:00 A | 2006-05-02 15:00 A | 10 | 100% |  | 2006-05-02 14:00 | 2006-05-02 15:00 | 1h |  |  | Cognizant | 1h | 1h |
| 12 | 1.2.1.4 | Backup for server Timings |  | 20min | 2006-05-02 15:00 A | 2006-05-02 15:20 A | 11 | 100% |  | 2006-05-02 15:00 | 2006-05-02 15:20 | 20min |  |  | Cognizant | 0.33h | 0.33h |
| 13 | 1.2.1.5 | Check: Sign off on Server Timings |  | 30min | 2006-05-02 15:20 A | 2006-05-02 15:50 A | 12 | 100% |  | 2006-05-02 15:20 | 2006-05-02 15:20 | 0h |  |  | CBOE | 0.5h | 0.5h |
| 14 | 1.2.2 | **ITG Checkout Script** |  | 0.19d | 2006-05-02 15:50 A | 2006-05-03 08:20 A | 8 | 100% |  | 2006-05-02 15:20 | 2006-05-02 16:50 | 0.19d |  |  | Cognizant | 3h | 3h |
| 15 | 1.2.1 | ITG Checkout for W_MAIN , ONE_MAIN session s |  | 40min | 2006-05-02 15:50 A | 2006-05-02 16:30 A | 13 | 100% |  | 2006-05-02 15:20 | 2006-05-02 16:00 | 40min |  |  | Cognizant | 0.67h | 0.67h |
| 16 | 1.2.5 | Backup for ITG Checkout (endOfPerformanceReport) |  | 20min | 2006-05-02 16:30 A | 2006-05-02 16:50 A | 15 | 100% |  | 2006-05-02 16:00 | 2006-05-02 16:20 | 20min |  |  | Cognizant | 0.33h | 0.33h |
| 17 | 1.2.2.3 | Check: Sign off on Checkout Scripts |  | 30min | 2006-05-02 16:50 A | 2006-05-03 08:20 A | 16 | 100% |  | 2006-05-02 16:20 | 2006-05-02 16:50 | 30min |  |  | CBOE | 0.5h | 0.5h |
| 18 | 1.2.3 | **User Login test1** |  | 0.2d | 2006-05-03 08:20 A | 2006-05-03 09:55 A | 14 | 100% |  | 2006-05-02 16:50 | 2006-05-03 08:55 | 0.14d |  |  | Cognizant | 3.17h | 3.17h |
| 19 | 1.2.3.1 | Initial setup like bouncing Global Server and SACAS. |  | 15min | 2006-05-03 08:20 A | 2006-05-03 08:35 A | 17 | 100% |  | 2006-05-02 16:50 | 2006-05-03 08:05 | 15min |  | start no earlier than 2006-05-03 08:00 | Cognizant | 0.25h | 0.25h |
| 20 | 1.2.3.2 | Login Test for 1 and 2 Users |  | 15min | 2006-05-03 08:35 A | 2006-05-03 08:50 A | 19 | 100% |  | 2006-05-03 08:05 | 2006-05-03 08:20 | 15min |  |  | Cognizant | 0.25h | 0.25h |
| 21 | 1.2.3.3 | Product State Update to CLOSE on VLO (visually timing Single class CLOSED with SAGUI) |  | 15min | 2006-05-03 08:50 A | 2006-05-03 09:05 A | 20 | 100% |  | 2006-05-03 08:20 | 2006-05-03 08:35 | 15min |  |  | Cognizant | 0.25h | 0.25h |
| 22 | 1.2.3.4 | Backup for Login User Test and Product state Update through SAGUI |  | 20min | 2006-05-03 09:05 A | 2006-05-03 09:25 A | 21 | 100% |  | 2006-05-03 08:35 | 2006-05-03 08:55 | 20min |  |  | Cognizant | 0.33h | 0.33h |
| 23 | 1.2.3.5 | Check: Sign Off on Logs and Results |  | 30min | 2006-05-03 09:25 A | 2006-05-03 09:55 A | 22 | 100% |  | 2006-05-03 08:55 | 2006-05-03 08:55 | 0h |  |  | CBOE | 0.5h | 0.5h |
| 24 | 1.2.4 | **GC failover to "B" side** |  | 0.39d | 2006-05-03 09:55 A | 2006-05-03 14:00 A | 18 | 100% |  | 2006-05-03 08:55 | 2006-05-03 11:30 | 0.32d |  |  | Cognizant | 6.17h | 6.17h |
| 25 | 1.2.4.1 | Initial setup for test Drivers (starting processes on GC Slave.) |  | 30min | 2006-05-03 09:55 A | 2006-05-03 10:25 A |  | 100% |  | 2006-05-03 08:55 | 2006-05-03 09:25 | 30min |  |  | Cognizant | 0.5h | 0.5h |
| 26 | 1.2.4.2 | Quote/Order BC20 Hybrid and ONE_MAIN traffic going before/during/after failover. Should not hang to verify no Global Dependency introduced. Test Execution |  | 45min | 2006-05-03 10:25 A | 2006-05-03 11:10 A | 25 | 100% |  | 2006-05-03 09:25 | 2006-05-03 10:10 | 45min |  |  | Cognizant | 0.75h | 0.75h |
| 27 | 1.2.4.3 | ITG Checkout script (for W_MAIN and ONE_MAIN Session) |  | 30min | 2006-05-03 11:10 A | 2006-05-03 11:40 A | 26 | 100% |  | 2006-05-03 10:10 | 2006-05-03 10:40 | 30min |  |  | Cognizant | 0.5h | 0.5h |
| 28 | 1.2.4.4 | Backup for Failover and ITG Checkout |  | 20min | 2006-05-03 11:40 A | 2006-05-03 12:00 A | 27 | 100% |  | 2006-05-03 10:40 | 2006-05-03 11:00 | 20min |  |  | Cognizant | 0.33h | 0.33h |
| 29 | 1.2.4.5 | Generate Report for Failover Timings for all GC Processes (taking time from log files) |  | 30min | 2006-05-03 13:00 A | 2006-05-03 13:30 A | 28 | 100% |  | 2006-05-03 11:00 | 2006-05-03 11:30 | 30min |  |  | Cognizant | 0.5h | 0.5h |
| 30 | 1.2.4.6 | Check: Sign Off on Checkout Scripts, Logs and Results |  | 30min | 2006-05-03 13:30 A | 2006-05-03 14:00 A | 29 | 100% |  | 2006-05-03 11:30 | 2006-05-03 11:30 | 0h |  |  | CBOE | 0.5h | 0.5h |

| ID | WBS | Task | Duration | Start | Finish | Predecessors | Complete | Remaining | Baseline start | Baseline finish | Baseline duration | Total slack | Constraint | Resources | Work | Actual work |
| --- | --- | --- | --- | --- | --- | --- | --- | --- | --- | --- | --- | --- | --- | --- | --- | --- |
| 31 | 1.3 | **Install and perform tests on GC B Side** | 0.56d | 2006-05-03 14:00 A | 2006-05-04 09:30 A | 7 | 100% |  | 2006-05-03 11:30 | 2006-05-04 11:50 | 1.04d |  |  | Cognizant | 13.5h | 13.5h |
| 32 | 1.3.1 | **Install GC "B" side** | 0.56d | 2006-05-03 14:00 A | 2006-05-04 09:30 A |  | 100% |  | 2006-05-03 11:30 | 2006-05-03 16:30 | 0.5d |  |  | Cognizant | 9h | 9h |
| 33 | 1.3.1.1 | Cleanup, createCurrentBusinessDay,starting all GC Processes on B side | 3h | 2006-05-03 14:00 A | 2006-05-03 17:00 A | 30 | 100% |  | 2006-05-03 11:30 | 2006-05-03 15:30 | 3h |  |  | Cognizant | 3h | 3h |
| 34 | 1.3.1.2 | ITG Checkout script (for W_MAIN and ONE_MAIN Session) | 40min | 2006-05-04 08:00 A | 2006-05-04 08:40 A | 33 | 100% |  | 2006-05-03 15:30 | 2006-05-03 16:10 | 40min |  |  | Cognizant | 0.67h | 0.67h |
| 35 | 1.3.1.3 | Backup for GC Upgrade and ITG Checkout | 20min | 2006-05-04 08:40 A | 2006-05-04 09:00 A | 34 | 100% |  | 2006-05-03 16:10 | 2006-05-03 16:30 | 20min |  |  | Cognizant | 0.33h | 0.33h |
| 36 | 1.3.1.4 | Check: Sign Off on Checkout Scripts, Logs and Results | 30min | 2006-05-04 09:00 A | 2006-05-04 09:30 A | 35 | 100% |  | 2006-05-03 16:30 | 2006-05-03 16:30 | 0h |  |  | CBOE | 0.5h | 0.5h |
| 37 | 1.4 | **Install and Perform Tests on Hybrid BC A Side** | 1.81d | 2006-05-04 09:30 A | 2006-05-05 17:00 | 31 | 91% | 0.16d | 2006-05-04 11:50 | 2006-05-09 10:40 | 2.85d | 5.85d |  | Cognizant | 56.08h | 52.84h |
| 38 | 1.10 | **Install Hybrid BC (A)** | 0.33d | 2006-05-04 09:30 A | 2006-05-04 13:10 A | 32 | 100% |  | 2006-05-04 11:50 | 2006-05-04 14:50 | 0.25d |  |  | Cognizant | 5.33h | 5.33h |
| 39 | 1.10.1 | Configuration and starting processes | 1.5h | 2006-05-04 09:30 A | 2006-05-04 11:00 A | 35 | 100% |  | 2006-05-04 11:50 | 2006-05-04 13:50 | 1h |  |  | Cognizant | 1.5h | 1.5h |
| 40 | 1.10.2 | ITG Checkout script (W_MAIN Session) | 20min | 2006-05-04 11:00 A | 2006-05-04 11:20 A | 39 | 100% |  | 2006-05-04 13:50 | 2006-05-04 14:30 | 40min |  |  | Cognizant | 0.33h | 0.33h |
| 41 | 1.10.3 | Backup and Reporting | 20min | 2006-05-04 11:20 A | 2006-05-04 11:40 A | 40 | 100% |  | 2006-05-04 14:30 | 2006-05-04 14:50 | 20min |  |  | Cognizant | 0.33h | 0.33h |
| 42 | 1.4.1.4 | Check: Sign Off on Checkout Scripts, Logs and Results | 30min | 2006-05-04 11:40 A | 2006-05-04 13:10 A | 41 | 100% |  | 2006-05-04 14:50 | 2006-05-04 14:50 | 0h |  |  | CBOE | 0.5h | 0.5h |
| 43 | 1.4.2 | FIX Strategy Order Test | 2h | 2006-05-04 13:10 | 2006-05-04 15:10 | 38 |  |  |  |  |  | 7.08d |  | Cognizant | 2h |  |
| 44 | 1.4.3 | **Global Dependency Test** | 0.17d | 2006-05-05 08:00 A | 2006-05-05 09:20 A | 43 | 100% |  | 2006-05-04 14:50 | 2006-05-04 15:40 | 0.1d |  |  | Cognizant | 2.67h | 2.67h |
| 45 | 1.4.3.1 | Test Execution | 30min | 2006-05-05 08:00 A | 2006-05-05 08:30 A | 42 | 100% |  | 2006-05-04 14:50 | 2006-05-04 15:20 | 30min |  | start no earlier than 2006-05-05 08:00 | Cognizant | 0.5h | 0.5h |
| 46 | 1.4.3.2 | Log Backup and Reporting | 20min | 2006-05-05 08:30 A | 2006-05-05 08:50 A | 45 | 100% |  | 2006-05-04 15:20 | 2006-05-04 15:40 | 20min |  |  | Cognizant | 0.33h | 0.33h |
| 47 | 1.4.3.3 | Check:Log and Results verification | 30min | 2006-05-05 08:50 A | 2006-05-05 09:20 A | 46 | 100% |  | 2006-05-04 15:40 | 2006-05-04 15:40 | 0h |  |  | Cognizant | 0.5h | 0.5h |
| 48 | 1.4.4 | **Mult Class Quote Step-up with Quotes only (Scenario 0)** | 0.32d | 2006-05-05 09:20 A | 2006-05-05 11:55 A | 44 | 100% |  |  |  |  |  |  | Cognizant | 5.17h | 5.17h |
| 49 | 1.4.4.1 | BC Cleanup, Initial Driver Setup, | 20min | 2006-05-05 09:20 A | 2006-05-05 09:40 A | 47 | 100% |  |  |  |  |  | start no earlier than 2006-04-24 08:00 | Cognizant | 0.33h | 0.33h |
| 50 | 1.4.4.2 | Test Execution for No BOTR | 1h | 2006-05-05 09:40 A | 2006-05-05 10:40 A | 49 | 100% |  |  |  |  |  | start no earlier than 2006-04-24 08:00 | Cognizant | 1h | 1h |
| 51 | 1.4.4.3 | endOfPerformance and Backup | 30min | 2006-05-05 10:40 A | 2006-05-05 11:10 A | 50 | 100% |  |  |  |  |  |  | Cognizant | 0.5h | 0.5h |
| 52 | 1.4.4.4 | Reporting through KR site | 15min | 2006-05-05 11:10 A | 2006-05-05 11:25 A | 51 | 100% |  |  |  |  |  |  | Cognizant | 0.25h | 0.25h |
| 53 | 1.4.4.5 | Check: Sign Off on Logs and Results | 30min | 2006-05-05 11:25 A | 2006-05-05 11:55 A | 52 | 100% |  |  |  |  |  |  | CBOE | 0.5h | 0.5h |
| 54 | 1.4.5 | **Hybrid test scenario 5 (Product State Change Test)** | 0.25d | 2006-05-05 11:55 A | 2006-05-05 14:55 A | 48 | 100% |  | 2006-05-04 15:40 | 2006-05-05 08:10 | 0.19d |  |  | Cognizant | 4h | 4h |
| 55 | 1.4.5.1 | BC Cleanup, Initial Driver Setup, | 20min | 2006-05-05 11:55 A | 2006-05-05 13:15 A | 47 | 100% |  | 2006-05-04 15:40 | 2006-05-04 16:00 | 20min |  |  | Cognizant | 0.33h | 0.33h |
| 56 | 1.4.5.2 | Test Execution - Global Server Bounce | 40min | 2006-05-05 13:15 A | 2006-05-05 13:55 A | 55 | 100% |  | 2006-05-04 16:00 | 2006-05-04 16:40 | 40min |  |  | Cognizant | 0.67h | 0.67h |
| 57 | 1.4.5.3 | Monitor and Backup logs | 20min | 2006-05-05 13:55 A | 2006-05-05 14:15 A | 56 | 100% |  | 2006-05-04 16:40 | 2006-05-04 17:00 | 20min |  |  | Cognizant | 0.33h | 0.33h |
| 58 | 1.4.5.4 | Reporting through KR site | 10min | 2006-05-05 14:15 A | 2006-05-05 14:25 A | 57 | 100% |  | 2006-05-05 08:00 | 2006-05-05 08:10 | 10min |  |  | Cognizant | 0.17h | 0.17h |
| 59 | 1.4.5.5 | Check: Sign Off on Logs and Results | 30min | 2006-05-05 14:25 A | 2006-05-05 14:55 A | 58 | 100% |  | 2006-05-05 08:10 | 2006-05-05 08:10 | 0h |  |  | CBOE | 0.5h | 0.5h |

| ID | WBS | Task | Type | Duration | Start | Finish | Predecessors | Complete | Baseline start | Baseline finish | Baseline duration | Resources | Work | Actual work |
| --- | --- | --- | --- | --- | --- | --- | --- | --- | --- | --- | --- | --- | --- | --- |
| 60 | 1.12 | **Multi-class Quote step-up test with BOTR [Scenario 3]** |  | 0.26d | 2006-05-05 14:55 A | 2006-05-05 17:00 A | 54 | 100% | 2006-05-05 08:10 | 2006-05-05 11:15 | 0.39d | Cognizant | 4.17h | 4.17h |
| 61 | 1.12.1 | BC Cleanup, Initial Driver Setup, |  | 20min | 2006-05-05 14:55 A | 2006-05-05 15:15 A | 59 | 100% | 2006-05-05 08:10 | 2006-05-05 08:30 | 20min | Cognizant | 0.33h | 0.33h |
| 62 | 1.12.2 | Test Execution for No BOTR |  | 1h | 2006-05-05 15:15 A | 2006-05-05 16:15 A | 61 | 100% | 2006-05-05 08:30 | 2006-05-05 09:30 | 1h | Cognizant | 1h | 1h |
| 63 | 1.12.3 | BOTR from 4000 to 16000 |  | 30min | 2006-05-05 16:15 A | 2006-05-05 16:45 A | 62 | 100% | 2006-05-05 09:30 | 2006-05-05 10:00 | 30min | Cognizant | 0.5h | 0.5h |
| 64 | 1.12.4 | endOfPerformance and Backup |  | 15min | 2006-05-05 16:45 A | 2006-05-05 17:00 A | 63 | 100% | 2006-05-05 10:00 | 2006-05-05 10:45 | 45min | Cognizant | 0.25h | 0.25h |
| 65 | 1.12.5 | Reporting through KR site | milestone | 0min | 2006-05-05 17:00 A | 2006-05-05 17:00 A | 64 | 100% | 2006-05-05 10:45 | 2006-05-05 11:15 | 30min | Cognizant |  |  |
| 66 | 1.4.6.6 | Check: Sign Off on Logs and Results | milestone | 0min | 2006-05-05 17:00 A | 2006-05-05 17:00 A | 65 | 100% | 2006-05-05 11:15 | 2006-05-05 11:15 | 0h | CBOE |  |  |
| 67 | 1.13 | **Single-class Quote step-up test with BOTR [Scenario 1]** |  | 0.25d | 2006-05-05 08:00 A | 2006-05-05 10:00 A | 60 | 100% | 2006-05-05 11:15 | 2006-05-05 15:00 | 0.34d | Cognizant | 6.92h | 6.92h |
| 68 | 1.13.1 | BC Cleanup, Initial Driver Setup, |  | 120min | 2006-05-05 08:00 A | 2006-05-05 10:00 A | 66 | 100% | 2006-05-05 11:15 | 2006-05-05 11:35 | 20min | Cognizant | 2h | 2h |
| 69 | 1.13.2 | Test Execution for No BOTR |  | 1h | 2006-05-05 08:00 A | 2006-05-05 09:00 A | 68 | 100% | 2006-05-05 11:35 | 2006-05-05 13:35 | 1h | Cognizant | 1h | 1h |
| 70 | 1.13.3 | BOTR 16000 |  | 10min | 2006-05-05 08:00 A | 2006-05-05 08:10 A | 69 | 100% | 2006-05-05 13:35 | 2006-05-05 13:45 | 10min | Cognizant | 0.17h | 0.17h |
| 71 | 1.13.4 | endOfPerformance and Backup |  | 45min | 2006-05-05 08:00 A | 2006-05-05 08:45 A | 70 | 100% | 2006-05-05 13:45 | 2006-05-05 14:30 | 45min | Cognizant | 0.75h | 0.75h |
| 72 | 1.13.5 | Reporting through KR site |  | 30min | 2006-05-05 08:00 A | 2006-05-05 08:30 A | 71 | 100% | 2006-05-05 14:30 | 2006-05-05 15:00 | 30min | Cognizant | 0.5h | 0.5h |
| 73 | 1.4.7.6 | Check: Sign Off On Logs and Results |  | 30min | 2006-05-05 08:00 A | 2006-05-05 08:30 A | 72 | 100% | 2006-05-05 15:00 | 2006-05-05 15:00 | 0h | CBOE | 0.5h | 0.5h |
| 74 | 1.14 | **Multi-class Order step-up test [Scenario 4]** |  | 0.24d | 2006-05-05 10:00 A | 2006-05-05 11:55 A | 67 | 100% | 2006-05-05 15:00 | 2006-05-05 16:55 | 0.24d | Cognizant | 3.83h | 3.83h |
| 75 | 1.14.1 | BC Cleanup, Initial Driver Setup, |  | 20min | 2006-05-05 10:00 A | 2006-05-05 10:20 A | 73 | 100% | 2006-05-05 15:00 | 2006-05-05 15:20 | 20min | Cognizant | 0.33h | 0.33h |
| 76 | 1.14.2 | Test Execution for No BOTR |  | 1h | 2006-05-05 10:20 A | 2006-05-05 11:20 A | 75 | 100% | 2006-05-05 15:20 | 2006-05-05 16:20 | 1h | Cognizant | 1h | 1h |
| 77 | 1.14.3 | endOfPerformance and Backup |  | 20min | 2006-05-05 11:20 A | 2006-05-05 11:40 A | 76 | 100% | 2006-05-05 16:20 | 2006-05-05 16:40 | 20min | Cognizant | 0.33h | 0.33h |
| 78 | 1.14.4 | Reporting through KR site |  | 15min | 2006-05-05 11:40 A | 2006-05-05 11:55 A | 77 | 100% | 2006-05-05 16:40 | 2006-05-05 16:55 | 15min | Cognizant | 0.25h | 0.25h |
| 79 | 1.4.8.5 | Check: Sign Off on Logs and Results | milestone | 0h | 2006-05-05 11:55 A | 2006-05-05 11:55 A | 78 | 100% | 2006-05-05 16:55 | 2006-05-05 16:55 | 0h | CBOE |  |  |
| 80 | 1.15 | **Hybrid BC failover (new release to old release)** |  | 0.47d | 2006-05-05 11:55 A | 2006-05-05 16:40 A | 74 | 100% | 2006-05-08 16:55 | 2006-05-09 10:40 | 0.34d | Cognizant | 7.5h | 7.5h |
| 81 | 1.4.9.1 | BC Cleanup start A Side as Master |  | 20min | 2006-05-05 11:55 A | 2006-05-05 13:15 A | 79 | 100% | 2006-05-08 16:55 | 2006-05-09 08:15 | 20min | Cognizant | 0.33h | 0.33h |
| 82 | 1.15.1 | Initial setup for test Drivers (starting processes on BC Slave.) |  | 25min | 2006-05-05 13:15 A | 2006-05-05 13:40 A | 81 | 100% | 2006-05-09 08:15 | 2006-05-09 08:40 | 25min | Cognizant | 0.42h | 0.42h |
| 83 | 1.15.2 | Quote/Order BC20 Hybrid traffic going before/during/after failover. Test Execution |  | 1h | 2006-05-05 13:40 A | 2006-05-05 14:40 A | 82 | 100% | 2006-05-09 08:40 | 2006-05-09 09:10 | 30min | Cognizant | 1h | 1h |
| 84 | 1.15.3 | ITG Checkout script (for W_MAIN and ONE_MAIN Session) |  | 40min | 2006-05-05 14:40 A | 2006-05-05 15:20 A | 83 | 100% | 2006-05-09 09:10 | 2006-05-09 09:50 | 40min | Cognizant | 0.67h | 0.67h |
| 85 | 1.15.4 | Backup for Failover and ITG Checkout |  | 20min | 2006-05-05 15:20 A | 2006-05-05 15:40 A | 84 | 100% | 2006-05-09 09:50 | 2006-05-09 10:10 | 20min | Cognizant | 0.33h | 0.33h |
| 86 | 1.15.5 | Generate Report for Failover Timings for all BC Processes (taking time from log files) |  | 30min | 2006-05-05 15:40 A | 2006-05-05 16:10 A | 85 | 100% | 2006-05-09 10:10 | 2006-05-09 10:40 | 30min | Cognizant | 0.5h | 0.5h |
| 87 | 1.4.9.7 | Check: Sign Off on Checkout Scripts, Logs and Results |  | 30min | 2006-05-05 16:10 A | 2006-05-05 16:40 A | 86 | 100% | 2006-05-09 10:40 | 2006-05-09 10:40 | 0h | CBOE | 0.5h | 0.5h |

| ID | WBS | Task | Duration | Start | Finish | Predecessors | Complete | Baseline start | Baseline finish | Baseline duration | Resources | Work | Actual work |
| --- | --- | --- | --- | --- | --- | --- | --- | --- | --- | --- | --- | --- | --- |
| 88 | 1.5 | **Install and Perform Failoveron Hybrid BC B Side** | 0.76d | 2006-05-08 08:00 A | 2006-05-08 15:05 A | 37 | 100% | 2006-05-09 10:40 | 2006-05-09 16:25 | 0.59d | Cognizant | 18.25h | 18.25h |
| 89 | 1.16 | **Install Hybrid BC "B" side** | 0.38d | 2006-05-08 08:00 A | 2006-05-08 11:00 A | 80 | 100% | 2006-05-09 10:40 | 2006-05-09 14:00 | 0.29d | Cognizant | 6h | 6h |
| 90 | 1.5.1.1 | Cleanup | 20min | 2006-05-08 08:00 A | 2006-05-08 08:20 A | 87 | 100% | 2006-05-09 10:40 | 2006-05-09 11:00 | 20min | Cognizant | 0.33h | 0.33h |
| 91 | 1.16.1 | Configuration and starting processes | 1.5h | 2006-05-08 08:20 A | 2006-05-08 09:50 A | 90 | 100% | 2006-05-09 11:00 | 2006-05-09 12:00 | 1h | Cognizant | 1.5h | 1.5h |
| 92 | 1.16.2 | ITG Checkout script (W_MAIN Session) | 20min | 2006-05-08 09:50 A | 2006-05-08 10:10 A | 91 | 100% | 2006-05-09 13:00 | 2006-05-09 13:40 | 40min | Cognizant | 0.33h | 0.33h |
| 93 | 1.16.3 | Backup and Reporting | 20min | 2006-05-08 10:10 A | 2006-05-08 10:30 A | 92 | 100% | 2006-05-09 13:40 | 2006-05-09 14:00 | 20min | Cognizant | 0.33h | 0.33h |
| 94 | 1.5.1.5 | Check: Sign Off on Checkout Scripts, Logs and Results | 30min | 2006-05-08 10:30 A | 2006-05-08 11:00 A | 93 | 100% | 2006-05-09 14:00 | 2006-05-09 14:00 | 0h | CBOE | 0.5h | 0.5h |
| 95 | 1.17 | **Hybrid BC failover (new release to new release)** | 0.39d | 2006-05-08 11:00 A | 2006-05-08 15:05 A | 89 | 100% | 2006-05-09 14:00 | 2006-05-09 16:25 | 0.3d | Cognizant | 6.17h | 6.17h |
| 96 | 1.17.1 | Initial setup for test Drivers (starting processes on BC Slave.) | 25min | 2006-05-08 11:00 A | 2006-05-08 11:25 A | 94 | 100% | 2006-05-09 14:00 | 2006-05-09 14:25 | 25min | Cognizant | 0.42h | 0.42h |
| 97 | 1.17.2 | Quote/Order BC20 Hybrid traffic going before/during/after failover. Test Execution | 1h | 2006-05-08 11:25 A | 2006-05-08 13:25 A | 96 | 100% | 2006-05-09 14:25 | 2006-05-09 14:55 | 30min | Cognizant | 1h | 1h |
| 98 | 1.17.3 | ITG Checkout script (for W_MAIN Session) | 20min | 2006-05-08 13:25 A | 2006-05-08 13:45 A | 97 | 100% | 2006-05-09 14:55 | 2006-05-09 15:35 | 40min | Cognizant | 0.33h | 0.33h |
| 99 | 1.17.4 | Backup for Failover and ITG Checkout | 20min | 2006-05-08 13:45 A | 2006-05-08 14:05 A | 98 | 100% | 2006-05-09 15:35 | 2006-05-09 15:55 | 20min | Cognizant | 0.33h | 0.33h |
| 100 | 1.17.5 | Generate Report for Failover Timings for all BC Processes (taking time from log files) | 30min | 2006-05-08 14:05 A | 2006-05-08 14:35 A | 99 | 100% | 2006-05-09 15:55 | 2006-05-09 16:25 | 30min | Cognizant | 0.5h | 0.5h |
| 101 | 1.5.2.6 | Check: Sign Off on Checkout Scripts,Logs and Results | 30min | 2006-05-08 14:35 A | 2006-05-08 15:05 A | 100 | 100% | 2006-05-09 16:25 | 2006-05-09 16:25 | 0h | CBOE | 0.5h | 0.5h |
| 102 | 1.6 | **Install and Perform Tests on ONE_MAIN BC A Side** | 1.32d | 2006-05-08 15:05 A | 2006-05-10 08:40 A | 88 | 100% | 2006-05-09 16:25 | 2006-05-11 08:10 | 1.09d | Cognizant | 31.75h | 31.75h |
| 103 | 1.26 | **Install ONE_MAIN BC (A)** | 0.33d | 2006-05-08 15:05 A | 2006-05-09 08:45 A | 95 | 100% | 2006-05-09 16:25 | 2006-05-10 09:25 | 0.25d | Cognizant | 5.33h | 5.33h |
| 104 | 1.26.1 | Configuration and starting processes | 1.5h | 2006-05-08 15:05 A | 2006-05-08 16:35 A | 101 | 100% | 2006-05-09 16:25 | 2006-05-10 08:25 | 1h | Cognizant | 1.5h | 1.5h |
| 105 | 1.26.2 | ITG Checkout script (ONE_MAIN Session) | 20min | 2006-05-08 16:35 A | 2006-05-08 16:55 A | 104 | 100% | 2006-05-10 08:25 | 2006-05-10 09:05 | 40min | Cognizant | 0.33h | 0.33h |
| 106 | 1.26.3 | Backup and Reporting | 20min | 2006-05-08 16:55 A | 2006-05-09 08:15 A | 105 | 100% | 2006-05-10 09:05 | 2006-05-10 09:25 | 20min | Cognizant | 0.33h | 0.33h |
| 107 | 1.6.1.4 | Check: Sign Off on Checkout Scripts, Logs and Results | 30min | 2006-05-09 08:15 A | 2006-05-09 08:45 A | 106 | 100% | 2006-05-10 09:25 | 2006-05-10 09:25 | 0h | CBOE | 0.5h | 0.5h |
| 108 | 1.27 | **Multi-class Order step-up test for ONE_MAIN [Scenario 2]** | 0.29d | 2006-05-09 08:45 A | 2006-05-09 11:05 A | 103 | 100% | 2006-05-10 09:25 | 2006-05-10 11:15 | 0.23d | Cognizant | 4.67h | 4.67h |
| 109 | 1.27.1 | BC Cleanup, Initial Driver Setup, | 20min | 2006-05-09 08:45 A | 2006-05-09 09:05 A |  | 100% | 2006-05-10 09:25 | 2006-05-10 09:45 | 20min | Cognizant | 0.33h | 0.33h |
| 110 | 1.27.2 | Test Execution for No BOTR | 1h | 2006-05-09 09:05 A | 2006-05-09 10:05 A | 109 | 100% | 2006-05-10 09:45 | 2006-05-10 10:45 | 1h | Cognizant | 1h | 1h |
| 111 | 1.27.3 | endOfPerformance and Backup | 15min | 2006-05-09 10:05 A | 2006-05-09 10:20 A | 110 | 100% | 2006-05-10 10:45 | 2006-05-10 11:00 | 15min | Cognizant | 0.25h | 0.25h |
| 112 | 1.27.4 | Reporting through KR site | 15min | 2006-05-09 10:20 A | 2006-05-09 10:35 A | 111 | 100% | 2006-05-10 11:00 | 2006-05-10 11:15 | 15min | Cognizant | 0.25h | 0.25h |
| 113 | 1.6.2.5 | Check: Sign Off on Logs and Results | 30min | 2006-05-09 10:35 A | 2006-05-09 11:05 A | 112 | 100% | 2006-05-10 11:15 | 2006-05-10 11:15 | 0h | CBOE | 0.5h | 0.5h |

| ID | WBS | Task | Duration | Start | Finish | Predecessors | Complete | Baseline start | Baseline finish | Baseline duration | Total slack | Resources | Work | Actual work |
| --- | --- | --- | --- | --- | --- | --- | --- | --- | --- | --- | --- | --- | --- | --- |
| 114 | 1.28 | **Multi-class Quote step-up test [Scenario 1]** | 0.33d | 2006-05-09 11:05 A | 2006-05-09 14:45 A | 108 | 100% | 2006-05-10 11:15 | 2006-05-10 14:25 | 0.27d |  | Cognizant | 5.33h | 5.33h |
| 115 | 1.28.1 | BC Cleanup, Initial Driver Setup, | 20min | 2006-05-09 11:05 A | 2006-05-09 11:25 A |  | 100% | 2006-05-10 11:15 | 2006-05-10 11:35 | 20min |  | Cognizant | 0.33h | 0.33h |
| 116 | 1.28.2 | Test Execution for No BOTR | 1h | 2006-05-09 11:25 A | 2006-05-09 13:25 A | 115 | 100% | 2006-05-10 11:35 | 2006-05-10 13:35 | 1h |  | Cognizant | 1h | 1h |
| 117 | 1.28.3 | endOfPerformance and Backup | 30min | 2006-05-09 13:25 A | 2006-05-09 13:55 A | 116 | 100% | 2006-05-10 13:35 | 2006-05-10 14:05 | 30min |  | Cognizant | 0.5h | 0.5h |
| 118 | 1.28.4 | Reporting through KR site | 20min | 2006-05-09 13:55 A | 2006-05-09 14:15 A | 117 | 100% | 2006-05-10 14:05 | 2006-05-10 14:25 | 20min |  | Cognizant | 0.33h | 0.33h |
| 119 | 1.6.3.5 | Check: Sign Off on Logs and Results | 30min | 2006-05-09 14:15 A | 2006-05-09 14:45 A | 118 | 100% | 2006-05-10 14:25 | 2006-05-10 14:25 | 0h |  | CBOE | 0.5h | 0.5h |
| 120 | 1.30 | **Failover ONE_MAIN BC (New to Old)** | 0.36d | 2006-05-09 14:45 A | 2006-05-10 08:40 A | 114 | 100% | 2006-05-10 14:25 | 2006-05-11 08:10 | 0.34d |  | Cognizant | 5.83h | 5.83h |
| 121 | 1.6.4.1 | Cleanup | 20min | 2006-05-09 14:45 A | 2006-05-09 15:05 A | 119 | 100% | 2006-05-10 14:25 | 2006-05-10 14:45 | 20min |  | Cognizant | 0.33h | 0.33h |
| 122 | 1.30.1 | Initial setup for test Drivers (starting processes on BC Slave.) | 25min | 2006-05-09 15:05 A | 2006-05-09 15:30 A | 121 | 100% | 2006-05-10 14:45 | 2006-05-10 15:10 | 25min |  | Cognizant | 0.42h | 0.42h |
| 123 | 1.30.2 | Quote/Order ONE_MAIN traffic going before/during/after failover. Test Execution | 30min | 2006-05-09 15:30 A | 2006-05-09 16:00 A | 122 | 100% | 2006-05-10 15:10 | 2006-05-10 15:40 | 30min |  | Cognizant | 0.5h | 0.5h |
| 124 | 1.30.3 | ITG Checkout script (for ONE_MAIN Session) | 20min | 2006-05-09 16:00 A | 2006-05-09 16:20 A | 123 | 100% | 2006-05-10 15:40 | 2006-05-10 16:20 | 40min |  | Cognizant | 0.33h | 0.33h |
| 125 | 1.30.4 | Backup for Failover and ITG Checkout | 20min | 2006-05-09 16:20 A | 2006-05-09 16:40 A | 124 | 100% | 2006-05-10 16:20 | 2006-05-10 16:40 | 20min |  | Cognizant | 0.33h | 0.33h |
| 126 | 1.30.5 | Generate Report for Failover Timings for all BC Processes (taking time from log files) | 30min | 2006-05-09 16:40 A | 2006-05-10 08:10 A | 125 | 100% | 2006-05-10 16:40 | 2006-05-11 08:10 | 30min |  | Cognizant | 0.5h | 0.5h |
| 127 | 1.6.4.7 | Check: Sign Off on Checkout Scripts,Logs and Results | 30min | 2006-05-10 08:10 A | 2006-05-10 08:40 A | 126 | 100% | 2006-05-11 08:10 | 2006-05-11 08:10 | 0h |  | CBOE | 0.5h | 0.5h |
| 128 | 1.7 | **Install and Perform failover on ONE_MAIN BC B Side** | 0.7d | 2006-05-10 08:40 | 2006-05-10 15:15 | 102 |  | 2006-05-11 08:10 | 2006-05-11 13:55 | 0.59d | 0d | Cognizant | 16.75h |  |
| 129 | 1.31 | **Install ONE_MAIN BC (B)** | 0.33d | 2006-05-10 08:40 | 2006-05-10 11:20 | 120 |  | 2006-05-11 08:10 | 2006-05-11 10:10 | 0.25d | 0d | Cognizant | 5.33h |  |
| 130 | 1.31.1 | Configuration and starting processes | 1.5h | 2006-05-10 08:40 | 2006-05-10 10:10 | 127 |  | 2006-05-11 08:10 | 2006-05-11 09:10 | 1h | 0d | Cognizant | 1.5h |  |
| 131 | 1.31.2 | ITG Checkout script ( ONE_MAIN Session) | 20min | 2006-05-10 10:10 | 2006-05-10 10:30 | 130 |  | 2006-05-11 09:10 | 2006-05-11 09:50 | 40min | 0d | Cognizant | 0.33h |  |
| 132 | 1.31.3 | Backup and Reporting | 20min | 2006-05-10 10:30 | 2006-05-10 10:50 | 131 |  | 2006-05-11 09:50 | 2006-05-11 10:10 | 20min | 0d | Cognizant | 0.33h |  |
| 133 | 1.7.1.4 | Check: Sign Off on Checkout Scripts, Logs and Results | 30min | 2006-05-10 10:50 | 2006-05-10 11:20 | 132 |  | 2006-05-11 10:10 | 2006-05-11 10:10 | 0h | 0d | CBOE | 0.5h |  |
| 134 | 1.7.2 | **Failover ONE_MAIN BC (New to New)** | 0.36d | 2006-05-10 11:20 | 2006-05-10 15:15 | 129 |  | 2006-05-11 10:10 | 2006-05-11 13:55 | 0.34d | 0d | Cognizant | 5.83h |  |
| 135 | 1.7.2.1 | Cleanup | 20min | 2006-05-10 11:20 | 2006-05-10 11:40 | 133 |  | 2006-05-11 10:10 | 2006-05-11 10:30 | 20min | 0d | Cognizant | 0.33h |  |
| 136 | 1.7.2.2 | Initial setup for test Drivers (starting processes on BC Slave.) | 25min | 2006-05-10 11:40 | 2006-05-10 13:05 | 135 |  | 2006-05-11 10:30 | 2006-05-11 10:55 | 25min | 0d | Cognizant | 0.42h |  |
| 137 | 1.7.2.3 | Quote/Order ONE_MAIN traffic going before/during/after failover. Test Execution | 30min | 2006-05-10 13:05 | 2006-05-10 13:35 | 136 |  | 2006-05-11 10:55 | 2006-05-11 11:25 | 30min | 0d | Cognizant | 0.5h |  |
| 138 | 1.7.2.4 | ITG Checkout script (for ONE_MAIN Session) | 20min | 2006-05-10 13:35 | 2006-05-10 13:55 | 137 |  | 2006-05-11 11:25 | 2006-05-11 13:05 | 40min | 0d | Cognizant | 0.33h |  |
| 139 | 1.7.2.5 | Backup for Failover and ITG Checkout | 20min | 2006-05-10 13:55 | 2006-05-10 14:15 | 138 |  | 2006-05-11 13:05 | 2006-05-11 13:25 | 20min | 0d | Cognizant | 0.33h |  |
| 140 | 1.7.2.6 | Generate Report for Failover Timings for all BC Processes (taking time from log files) | 30min | 2006-05-10 14:15 | 2006-05-10 14:45 | 139 |  | 2006-05-11 13:25 | 2006-05-11 13:55 | 30min | 0d | Cognizant | 0.5h |  |
| 141 | 1.7.2.7 | Check: Sign Off on Checkout Scripts,Logs and Results | 30min | 2006-05-10 14:45 | 2006-05-10 15:15 | 140 |  | 2006-05-11 13:55 | 2006-05-11 13:55 | 0h | 0d | CBOE | 0.5h |  |

| ID | WBS | Task | Duration | Start | Finish | Predecessors | Baseline start | Baseline finish | Baseline duration | Total slack | Constraint | Resources | Work |
| --- | --- | --- | --- | --- | --- | --- | --- | --- | --- | --- | --- | --- | --- |
| 142 | 1.8 | **4 Hour Endurance Test** | 0.81d | 2006-05-10 15:15 | 2006-05-11 13:45 | 128 | 2006-05-11 13:55 | 2006-05-12 10:55 | 0.75d | 0d |  | Cognizant | 13h |
| 143 | 1.8.1 | Cleanup for W_MAIN and ONE_MAIN BC | 20min | 2006-05-10 15:15 | 2006-05-10 15:35 |  | 2006-05-11 13:55 | 2006-05-11 14:15 | 20min | 0d |  | Cognizant | 0.33h |
| 144 | 1.8.2 | Driver setup | 20min | 2006-05-10 15:35 | 2006-05-10 15:55 | 143 | 2006-05-11 14:15 | 2006-05-11 14:35 | 20min | 0d |  | Cognizant | 0.33h |
| 145 | 1.8.3 | CAS bounce | 20min | 2006-05-10 15:55 | 2006-05-10 16:15 | 144 | 2006-05-11 14:35 | 2006-05-11 14:55 | 20min | 0d |  | Cognizant | 0.33h |
| 146 | 1.8.4 | 4 hour Sanity Check | 4h | 2006-05-10 16:15 | 2006-05-11 11:15 | 145 | 2006-05-11 14:55 | 2006-05-12 09:55 | 4h | 0d |  | Cognizant | 4h |
| 147 | 1.8.5 | endOfPerformance and Backup and Reporting | 1h | 2006-05-11 11:15 | 2006-05-11 13:15 | 146 | 2006-05-12 09:55 | 2006-05-12 10:55 | 1h | 0d |  | Cognizant | 1h |
| 148 | 1.8.6 | Check: Sign Off on Logs and Results | 30min | 2006-05-11 13:15 | 2006-05-11 13:45 | 147 | 2006-05-12 10:55 | 2006-05-12 10:55 | 0h | 0d |  | CBOE | 0.5h |
| 149 | 1.9 | **Install and Perform tests on FE A Side** | 0.99d | 2006-05-11 13:45 | 2006-05-12 13:40 | 142 |  |  |  | 0d |  | Cognizant | 23.75h |
| 150 | 1.9.1 | **Install FE A** | 0.38d | 2006-05-11 13:45 | 2006-05-11 16:45 | 142 |  |  |  | 0d |  | Cognizant | 6h |
| 151 | 1.10.1 | Configuration and starting processes | 1.5h | 2006-05-11 13:45 | 2006-05-11 15:15 | 134 | 2006-05-04 11:50 | 2006-05-04 13:50 | 1h | 0d |  | Cognizant | 1.5h |
| 152 | 1.10.2 | ITG Checkout script (W_MAIN and ONE_MAIN Session) | 40min | 2006-05-11 15:15 | 2006-05-11 15:55 | 151 | 2006-05-04 13:50 | 2006-05-04 14:30 | 40min | 0d |  | Cognizant | 0.67h |
| 153 | 1.10.3 | Backup and Reporting | 20min | 2006-05-11 15:55 | 2006-05-11 16:15 | 152 | 2006-05-04 14:30 | 2006-05-04 14:50 | 20min | 0d |  | Cognizant | 0.33h |
| 154 | 1.9.1.4 | Check: Sign Off on Checkout Scripts, Logs and Results | 30min | 2006-05-11 16:15 | 2006-05-11 16:45 | 153 | 2006-05-04 14:50 | 2006-05-04 14:50 | 0h | 0d |  | CBOE | 0.5h |
| 155 | 1.9.2 | **Mult Class Quote Step-up with Quotes only (Scenario 0)** | 0.32d | 2006-05-11 16:45 | 2006-05-12 10:20 | 150 |  |  |  | 0d |  | Cognizant | 5.17h |
| 156 | 1.9.2.1 | BC Cleanup, Initial Driver Setup, | 20min | 2006-05-11 16:45 | 2006-05-12 08:05 | 154 |  |  |  | 0d | start no earlier than 2006-04-24 08:00 | Cognizant | 0.33h |
| 157 | 1.9.2.2 | Test Execution for No BOTR | 1h | 2006-05-12 08:05 | 2006-05-12 09:05 | 156 |  |  |  | 0d | start no earlier than 2006-04-24 08:00 | Cognizant | 1h |
| 158 | 1.9.2.3 | endOfPerformance and Backup | 30min | 2006-05-12 09:05 | 2006-05-12 09:35 | 157 |  |  |  | 0d |  | Cognizant | 0.5h |
| 159 | 1.9.2.4 | Reporting through KR site | 15min | 2006-05-12 09:35 | 2006-05-12 09:50 | 158 |  |  |  | 0d |  | Cognizant | 0.25h |
| 160 | 1.9.2.5 | Check: Sign Off on Logs and Results | 30min | 2006-05-12 09:50 | 2006-05-12 10:20 | 159 |  |  |  | 0d |  | CBOE | 0.5h |
| 161 | 1.9.3 | **FE Failover - New to Old** | 0.29d | 2006-05-12 10:20 | 2006-05-12 13:40 | 155 |  |  |  | 0d |  | Cognizant | 4.67h |
| 162 | 1.9.3.1 | initial cleanup and driver setup | 20min | 2006-05-12 10:20 | 2006-05-12 10:40 | 160 |  |  |  | 0d |  | Cognizant | 0.33h |
| 163 | 1.9.3.2 | Quote and order traffic | 20min | 2006-05-12 10:40 | 2006-05-12 11:00 | 162 |  |  |  | 0d |  | Cognizant | 0.33h |
| 164 | 1.9.3.3 | stop A side FE processes and see effect on traffic | 10min | 2006-05-12 11:00 | 2006-05-12 11:10 | 163 |  |  |  | 0d |  | Cognizant | 0.17h |
| 165 | 1.9.3.4 | ITG Checkout with only Old FE processes up | 40min | 2006-05-12 11:10 | 2006-05-12 11:50 | 164 |  |  |  | 0d |  | Cognizant | 0.67h |
| 166 | 1.9.3.5 | Log backup | 20min | 2006-05-12 11:50 | 2006-05-12 13:10 | 165 |  |  |  | 0d |  | Cognizant | 0.33h |
| 167 | 1.9.3.6 | Check: Sign Off on Checkout Scripts, Logs and Results | 30min | 2006-05-12 13:10 | 2006-05-12 13:40 | 166 | 2006-05-09 10:40 | 2006-05-09 10:40 | 0h | 0d |  | CBOE | 0.5h |

| ID | WBS | Task | Type | Duration | Start | Finish | Predecessors | Baseline start | Baseline finish | Baseline duration | Total slack | Resources | Work |
| --- | --- | --- | --- | --- | --- | --- | --- | --- | --- | --- | --- | --- | --- |
| 168 | 1.10 | **Install and Perform tests on FE B Side** |  | 0.67d | 2006-05-12 13:40 | 2006-05-15 10:00 | 149 |  |  |  | 0d | Cognizant | 16h |
| 169 | 1.10.1 | **Install FE B** |  | 0.38d | 2006-05-12 13:40 | 2006-05-12 16:40 | 161 |  |  |  | 0d | Cognizant | 6h |
| 170 | 1.10.1 | Configuration and starting processes |  | 1.5h | 2006-05-12 13:40 | 2006-05-12 15:10 | 167 | 2006-05-04 11:50 | 2006-05-04 13:50 | 1h | 0d | Cognizant | 1.5h |
| 171 | 1.10.2 | ITG Checkout script (W_MAIN and ONE_MAIN Session) |  | 40min | 2006-05-12 15:10 | 2006-05-12 15:50 | 170 | 2006-05-04 13:50 | 2006-05-04 14:30 | 40min | 0d | Cognizant | 0.67h |
| 172 | 1.10.3 | Backup and Reporting |  | 20min | 2006-05-12 15:50 | 2006-05-12 16:10 | 171 | 2006-05-04 14:30 | 2006-05-04 14:50 | 20min | 0d | Cognizant | 0.33h |
| 173 | 1.10.1.4 | Check: Sign Off on Checkout Scripts, Logs and Results |  | 30min | 2006-05-12 16:10 | 2006-05-12 16:40 | 172 | 2006-05-04 14:50 | 2006-05-04 14:50 | 0h | 0d | CBOE | 0.5h |
| 174 | 1.10.2 | **FE Failover - New to New** |  | 0.29d | 2006-05-12 16:40 | 2006-05-15 10:00 | 169 |  |  |  | 0d | Cognizant | 4.67h |
| 175 | 1.10.2.1 | initial cleanup and driver setup |  | 20min | 2006-05-12 16:40 | 2006-05-12 17:00 | 173 |  |  |  | 0d | Cognizant | 0.33h |
| 176 | 1.10.2.2 | Quote and order traffic |  | 20min | 2006-05-15 08:00 | 2006-05-15 08:20 | 175 |  |  |  | 0d | Cognizant | 0.33h |
| 177 | 1.10.2.3 | stop A side FE processes and see effect on traffic |  | 10min | 2006-05-15 08:20 | 2006-05-15 08:30 | 176 |  |  |  | 0d | Cognizant | 0.17h |
| 178 | 1.10.2.4 | ITG Checkout with only Old FE processes up |  | 40min | 2006-05-15 08:30 | 2006-05-15 09:10 | 177 |  |  |  | 0d | Cognizant | 0.67h |
| 179 | 1.10.2.5 | Log backup |  | 20min | 2006-05-15 09:10 | 2006-05-15 09:30 | 178 |  |  |  | 0d | Cognizant | 0.33h |
| 180 | 1.10.2.6 | Check: Sign Off on Checkout Scripts, Logs and Results |  | 30min | 2006-05-15 09:30 | 2006-05-15 10:00 | 179 | 2006-05-09 10:40 | 2006-05-09 10:40 | 0h | 0d | CBOE | 0.5h |
| 181 | 1.42 | **Server Side Full Cleanup after All Server upgrades.** |  | 0.6d | 2006-05-15 10:00 | 2006-05-15 15:50 | 168 | 2006-05-15 08:55 | 2006-05-15 14:15 | 0.54d | 0d | Cognizant | 9.67h |
| 182 | 1.42.1 | Time server full startup after cleanup (See Server Startup Timing Page) |  | 4h | 2006-05-15 10:00 | 2006-05-15 15:00 | 180 | 2006-05-15 08:55 | 2006-05-15 13:55 | 4h | 0d | Cognizant | 4h |
| 183 | 1.42.2 | Backup for server Timings |  | 20min | 2006-05-15 15:00 | 2006-05-15 15:20 | 182 | 2006-05-15 13:55 | 2006-05-15 14:15 | 20min | 0d | Cognizant | 0.33h |
| 184 | 1.11.3 | Check: Sign Off on Logs and Results |  | 30min | 2006-05-15 15:20 | 2006-05-15 15:50 | 183 | 2006-05-15 14:15 | 2006-05-15 14:15 | 0h | 0d | CBOE | 0.5h |
| 185 | 1.12 | **Check: Overall Verification** |  | 0d | 2006-05-15 15:20 | 2006-05-15 15:20 |  | 2006-05-15 14:15 | 2006-05-15 14:15 | 0d | 0.06d | CBOE |  |
| 186 | 1.12.1 | All Results Signed Off | milestone | 0h | 2006-05-15 15:20 | 2006-05-15 15:20 | 183 | 2006-05-15 14:15 | 2006-05-15 14:15 | 0h | 0.06d | CBOE |  |
| 187 | 1.12.2 | All Tests Completed | milestone | 0h | 2006-05-15 15:20 | 2006-05-15 15:20 | 183 | 2006-05-15 14:15 | 2006-05-15 14:15 | 0h | 0.06d | CBOE |  |
| 188 | 1.12.3 | Results approved by Paul and Respective Groups | milestone | 0h | 2006-05-15 15:20 | 2006-05-15 15:20 | 183 | 2006-05-15 14:15 | 2006-05-15 14:15 | 0h | 0.06d | CBOE |  |
