Schedule from MS Project, 2006-05-02 to 2006-05-17.
Cognizant Technology Solutions

## Calendars

- Standard: Mon-Fri 08:00-12:00, 13:00-17:00; Sat-Sun off.

## Resources

| Resource |
| --- |
| Cognizant |
| 2 |
| CBOE |
| Piwnicki |
| Bobbie |

## Schedule

| ID | WBS | Task | Type | Duration | Start | Finish | Predecessors | Baseline start | Baseline finish | Baseline duration | Total slack | Free slack | Constraint | Resources | Work |
| --- | --- | --- | --- | --- | --- | --- | --- | --- | --- | --- | --- | --- | --- | --- | --- |
| 1 | 1 | **Rollout Task** |  | 11.16d | 2006-05-02 08:00 | 2006-05-17 09:15 |  | 2006-05-02 08:00 | 2006-05-15 14:15 | 9.66d | 0d |  |  |  | 250.75h |
| 2 | 1.1 | **Pre-Rollout Verification/Changes [If required]** |  | 0d | 2006-05-02 08:00 | 2006-05-02 08:00 |  | 2006-05-02 08:00 | 2006-05-02 08:00 | 0d | 0.23d | 0d |  |  |  |
| 3 | 1.1.1 | Database changes | milestone | 0h | 2006-05-02 08:00 | 2006-05-02 08:00 |  | 2006-05-02 08:00 | 2006-05-02 08:00 | 0h | 0.23d | 0d | start no earlier than 2006-05-02 08:00 | CBOE |  |
| 4 | 1.1.2 | Extent Map changes | milestone | 0h | 2006-05-02 08:00 | 2006-05-02 08:00 | 3 | 2006-05-02 08:00 | 2006-05-02 08:00 | 0h | 0.23d | 0d |  | CBOE |  |
| 5 | 1.1.3 | Version label verification on all boxes | milestone | 0h | 2006-05-02 08:00 | 2006-05-02 08:00 | 4 | 2006-05-02 08:00 | 2006-05-02 08:00 | 0h | 0.23d | 0d |  | CBOE |  |
| 6 | 1.1.4 | Check: Tier Lead has verified information and obtained a sign off | milestone | 0h | 2006-05-02 08:00 | 2006-05-02 08:00 | 3, 4, 5 | 2006-05-02 08:00 | 2006-05-02 08:00 | 0h | 0.23d |  |  | CBOE |  |
| 7 | 1.2 | **Install and perform tests on GC A Side** |  | 1.62d | 2006-05-02 08:00 | 2006-05-03 14:00 | 2 | 2006-05-02 08:00 | 2006-05-03 11:30 | 1.44d | 0.23d | 0d |  | Cognizant | 39h |
| 8 | 1.2.1 | **Install GC "A" side with new release – load idl, create EC** |  | 0.85d | 2006-05-02 08:00 | 2006-05-02 15:50 |  | 2006-05-02 08:00 | 2006-05-02 15:20 | 0.79d | 0.23d | 0d |  | Cognizant | 13.67h |
| 9 | 1.2.1.1 | Generate XML, build Localrep, load All IFR and other Installation steps. |  | 2h | 2006-05-02 08:00 | 2006-05-02 10:00 | 5 | 2006-05-02 08:00 | 2006-05-02 10:00 | 2h | 0.23d | 0d | start no earlier than 2006-05-02 08:00 | Cognizant | 2h |
| 10 | 1.2.1.2 | Server Side Full Cleanup |  | 3h | 2006-05-02 10:00 | 2006-05-02 14:00 | 9 | 2006-05-02 10:00 | 2006-05-02 14:00 | 3h | 0.23d | 0d |  | Cognizant | 3h |
| 11 | 1.2.1.3 | Time server full startup after cleanup (See Server Startup Timing Page) |  | 1h | 2006-05-02 14:00 | 2006-05-02 15:00 | 10 | 2006-05-02 14:00 | 2006-05-02 15:00 | 1h | 0.23d | 0d |  | Cognizant | 1h |
| 12 | 1.2.1.4 | Backup for server Timings |  | 20min | 2006-05-02 15:00 | 2006-05-02 15:20 | 11 | 2006-05-02 15:00 | 2006-05-02 15:20 | 20min | 0.23d | 0d |  | Cognizant | 0.33h |
| 13 | 1.2.1.5 | Check: Sign off on Server Timings |  | 30min | 2006-05-02 15:20 | 2006-05-02 15:50 | 12 | 2006-05-02 15:20 | 2006-05-02 15:20 | 0h | 0.23d | 0d |  | CBOE | 0.5h |
| 14 | 1.2.2 | **ITG Checkout Script** |  | 0.19d | 2006-05-02 15:50 | 2006-05-03 08:20 | 8 | 2006-05-02 15:20 | 2006-05-02 16:50 | 0.19d | 0.23d | 0d |  | Cognizant | 3h |
| 15 | 1.2.1 | ITG Checkout for W_MAIN , ONE_MAIN session s |  | 40min | 2006-05-02 15:50 | 2006-05-02 16:30 | 13 | 2006-05-02 15:20 | 2006-05-02 16:00 | 40min | 0.23d | 0d |  | Cognizant | 0.67h |
| 16 | 1.2.5 | Backup for ITG Checkout (endOfPerformanceReport) |  | 20min | 2006-05-02 16:30 | 2006-05-02 16:50 | 15 | 2006-05-02 16:00 | 2006-05-02 16:20 | 20min | 0.23d | 0d |  | Cognizant | 0.33h |
| 17 | 1.2.2.3 | Check: Sign off on Checkout Scripts |  | 30min | 2006-05-02 16:50 | 2006-05-03 08:20 | 16 | 2006-05-02 16:20 | 2006-05-02 16:50 | 30min | 0.23d | 0d |  | CBOE | 0.5h |
| 18 | 1.2.3 | **User Login test1** |  | 0.2d | 2006-05-03 08:20 | 2006-05-03 09:55 | 14 | 2006-05-02 16:50 | 2006-05-03 08:55 | 0.14d | 0.23d | 0d |  | Cognizant | 3.17h |
| 19 | 1.2.3.1 | Initial setup like bouncing Global Server and SACAS. |  | 15min | 2006-05-03 08:20 | 2006-05-03 08:35 | 17 | 2006-05-02 16:50 | 2006-05-03 08:05 | 15min | 0.23d | 0d | start no earlier than 2006-05-03 08:00 | Cognizant | 0.25h |
| 20 | 1.2.3.2 | Login Test for 1 and 2 Users |  | 15min | 2006-05-03 08:35 | 2006-05-03 08:50 | 19 | 2006-05-03 08:05 | 2006-05-03 08:20 | 15min | 0.23d | 0d |  | Cognizant | 0.25h |
| 21 | 1.2.3.3 | Product State Update to CLOSE on VLO (visually timing Single class CLOSED with SAGUI) |  | 15min | 2006-05-03 08:50 | 2006-05-03 09:05 | 20 | 2006-05-03 08:20 | 2006-05-03 08:35 | 15min | 0.23d | 0d |  | Cognizant | 0.25h |
| 22 | 1.2.3.4 | Backup for Login User Test and Product state Update through SAGUI |  | 20min | 2006-05-03 09:05 | 2006-05-03 09:25 | 21 | 2006-05-03 08:35 | 2006-05-03 08:55 | 20min | 0.23d | 0d |  | Cognizant | 0.33h |
| 23 | 1.2.3.5 | Check: Sign Off on Logs and Results |  | 30min | 2006-05-03 09:25 | 2006-05-03 09:55 | 22 | 2006-05-03 08:55 | 2006-05-03 08:55 | 0h | 0.23d |  |  | CBOE | 0.5h |
| 24 | 1.2.4 | **GC failover to "B" side** |  | 0.39d | 2006-05-03 09:55 | 2006-05-03 14:00 | 18 | 2006-05-03 08:55 | 2006-05-03 11:30 | 0.32d | 0.23d |  |  | Cognizant | 6.17h |
| 25 | 1.2.4.1 | Initial setup for test Drivers (starting processes on GC Slave.) |  | 30min | 2006-05-03 09:55 | 2006-05-03 10:25 |  | 2006-05-03 08:55 | 2006-05-03 09:25 | 30min | 0.23d | 0d |  | Cognizant | 0.5h |
| 26 | 1.2.4.2 | Quote/Order BC20 Hybrid and ONE_MAIN traffic going before/during/after failover. Should not hang to verify no Global Dependency introduced. Test Execution |  | 45min | 2006-05-03 10:25 | 2006-05-03 11:10 | 25 | 2006-05-03 09:25 | 2006-05-03 10:10 | 45min | 0.23d | 0d |  | Cognizant | 0.75h |
| 27 | 1.2.4.3 | ITG Checkout script (for W_MAIN and ONE_MAIN Session) |  | 30min | 2006-05-03 11:10 | 2006-05-03 11:40 | 26 | 2006-05-03 10:10 | 2006-05-03 10:40 | 30min | 0.23d | 0d |  | Cognizant | 0.5h |
| 28 | 1.2.4.4 | Backup for Failover and ITG Checkout |  | 20min | 2006-05-03 11:40 | 2006-05-03 12:00 | 27 | 2006-05-03 10:40 | 2006-05-03 11:00 | 20min | 0.23d | 0d |  | Cognizant | 0.33h |
| 29 | 1.2.4.5 | Generate Report for Failover Timings for all GC Processes (taking time from log files) |  | 30min | 2006-05-03 13:00 | 2006-05-03 13:30 | 28 | 2006-05-03 11:00 | 2006-05-03 11:30 | 30min | 0.23d | 0d |  | Cognizant | 0.5h |
| 30 | 1.2.4.6 | Check: Sign Off on Checkout Scripts, Logs and Results |  | 30min | 2006-05-03 13:30 | 2006-05-03 14:00 | 29 | 2006-05-03 11:30 | 2006-05-03 11:30 | 0h | 0.23d | 0d |  | CBOE | 0.5h |

| ID | WBS | Task | Duration | Start | Finish | Predecessors | Baseline start | Baseline finish | Baseline duration | Total slack | Free slack | Constraint | Resources | Work |
| --- | --- | --- | --- | --- | --- | --- | --- | --- | --- | --- | --- | --- | --- | --- |
| 31 | 1.3 | **Install and perform tests on GC B Side** | 0.56d | 2006-05-03 14:00 | 2006-05-04 09:30 | 7 | 2006-05-03 11:30 | 2006-05-04 11:50 | 1.04d | 0.23d | 0d |  | Cognizant | 13.5h |
| 32 | 1.3.1 | **Install GC "B" side** | 0.56d | 2006-05-03 14:00 | 2006-05-04 09:30 |  | 2006-05-03 11:30 | 2006-05-03 16:30 | 0.5d | 0.23d | 0d |  | Cognizant | 9h |
| 33 | 1.3.1.1 | Cleanup, createCurrentBusinessDay,starting all GC Processes on B side | 3h | 2006-05-03 14:00 | 2006-05-03 17:00 | 30 | 2006-05-03 11:30 | 2006-05-03 15:30 | 3h | 0.23d | 0d |  | Cognizant | 3h |
| 34 | 1.3.1.2 | ITG Checkout script (for W_MAIN and ONE_MAIN Session) | 40min | 2006-05-04 08:00 | 2006-05-04 08:40 | 33 | 2006-05-03 15:30 | 2006-05-03 16:10 | 40min | 0.23d | 0d |  | Cognizant | 0.67h |
| 35 | 1.3.1.3 | Backup for GC Upgrade and ITG Checkout | 20min | 2006-05-04 08:40 | 2006-05-04 09:00 | 34 | 2006-05-03 16:10 | 2006-05-03 16:30 | 20min | 0.23d | 0d |  | Cognizant | 0.33h |
| 36 | 1.3.1.4 | Check: Sign Off on Checkout Scripts, Logs and Results | 30min | 2006-05-04 09:00 | 2006-05-04 09:30 | 35 | 2006-05-03 16:30 | 2006-05-03 16:30 | 0h | 0.23d |  |  | CBOE | 0.5h |
| 37 | 1.4 | **Install and Perform Tests on Hybrid BC A Side** | 3.11d | 2006-05-04 09:30 | 2006-05-09 10:25 | 31 | 2006-05-04 11:50 | 2006-05-09 10:40 | 2.85d | 0d |  |  | Cognizant | 69.08h |
| 38 | 1.10 | **Install Hybrid BC (A)** | 0.33d | 2006-05-04 09:30 | 2006-05-04 13:10 | 32 | 2006-05-04 11:50 | 2006-05-04 14:50 | 0.25d | 0.23d | 0d |  | Cognizant | 5.33h |
| 39 | 1.10.1 | Configuration and starting processes | 1.5h | 2006-05-04 09:30 | 2006-05-04 11:00 | 35 | 2006-05-04 11:50 | 2006-05-04 13:50 | 1h | 0.23d | 0d |  | Cognizant | 1.5h |
| 40 | 1.10.2 | ITG Checkout script (W_MAIN Session) | 20min | 2006-05-04 11:00 | 2006-05-04 11:20 | 39 | 2006-05-04 13:50 | 2006-05-04 14:30 | 40min | 0.23d | 0d |  | Cognizant | 0.33h |
| 41 | 1.10.3 | Backup and Reporting | 20min | 2006-05-04 11:20 | 2006-05-04 11:40 | 40 | 2006-05-04 14:30 | 2006-05-04 14:50 | 20min | 0.23d | 0d |  | Cognizant | 0.33h |
| 42 | 1.4.1.4 | Check: Sign Off on Checkout Scripts, Logs and Results | 30min | 2006-05-04 11:40 | 2006-05-04 13:10 | 41 | 2006-05-04 14:50 | 2006-05-04 14:50 | 0h | 0.23d |  |  | CBOE | 0.5h |
| 43 | 1.4.2 | FIX Strategy Order Test | 2h | 2006-05-04 13:10 | 2006-05-04 15:10 | 38 |  |  |  | 0.23d |  |  | Cognizant | 2h |
| 44 | 1.4.3 | **Global Dependency Test** | 0.17d | 2006-05-05 08:00 | 2006-05-05 09:20 | 43 | 2006-05-04 14:50 | 2006-05-04 15:40 | 0.1d | 0d |  |  | Cognizant | 2.67h |
| 45 | 1.4.3.1 | Test Execution | 30min | 2006-05-05 08:00 | 2006-05-05 08:30 | 42 | 2006-05-04 14:50 | 2006-05-04 15:20 | 30min | 0d |  | start no earlier than 2006-05-05 08:00 | Cognizant | 0.5h |
| 46 | 1.4.3.2 | Log Backup and Reporting | 20min | 2006-05-05 08:30 | 2006-05-05 08:50 | 45 | 2006-05-04 15:20 | 2006-05-04 15:40 | 20min | 0d |  |  | Cognizant | 0.33h |
| 47 | 1.4.3.3 | Check:Log and Results verification | 30min | 2006-05-05 08:50 | 2006-05-05 09:20 | 46 | 2006-05-04 15:40 | 2006-05-04 15:40 | 0h | 0d |  |  | Cognizant | 0.5h |
| 48 | 1.4.4 | **Mult Class Quote Step-up with Quotes only (Scenario 0)** | 0.32d | 2006-05-05 09:20 | 2006-05-05 11:55 | 44 |  |  |  | 0d |  |  | Cognizant | 5.17h |
| 49 | 1.4.4.1 | BC Cleanup, Initial Driver Setup, | 20min | 2006-05-05 09:20 | 2006-05-05 09:40 | 47 |  |  |  | 0d |  | start no earlier than 2006-04-24 08:00 | Cognizant | 0.33h |
| 50 | 1.4.4.2 | Test Execution for No BOTR | 1h | 2006-05-05 09:40 | 2006-05-05 10:40 | 49 |  |  |  | 0d |  | start no earlier than 2006-04-24 08:00 | Cognizant | 1h |
| 51 | 1.4.4.3 | endOfPerformance and Backup | 30min | 2006-05-05 10:40 | 2006-05-05 11:10 | 50 |  |  |  | 0d |  |  | Cognizant | 0.5h |
| 52 | 1.4.4.4 | Reporting through KR site | 15min | 2006-05-05 11:10 | 2006-05-05 11:25 | 51 |  |  |  | 0d |  |  | Cognizant | 0.25h |
| 53 | 1.4.4.5 | Check: Sign Off on Logs and Results | 30min | 2006-05-05 11:25 | 2006-05-05 11:55 | 52 |  |  |  | 0d |  |  | CBOE | 0.5h |
| 54 | 1.4.5 | **Hybrid test scenario 5 (Product State Change Test)** | 0.25d | 2006-05-05 11:55 | 2006-05-05 14:55 | 48 | 2006-05-04 15:40 | 2006-05-05 08:10 | 0.19d | 0d |  |  | Cognizant | 4h |
| 55 | 1.4.5.1 | BC Cleanup, Initial Driver Setup, | 20min | 2006-05-05 11:55 | 2006-05-05 13:15 | 47 | 2006-05-04 15:40 | 2006-05-04 16:00 | 20min | 0d |  |  | Cognizant | 0.33h |
| 56 | 1.4.5.2 | Test Execution - Global Server Bounce | 40min | 2006-05-05 13:15 | 2006-05-05 13:55 | 55 | 2006-05-04 16:00 | 2006-05-04 16:40 | 40min | 0d |  |  | Cognizant | 0.67h |
| 57 | 1.4.5.3 | Monitor and Backup logs | 20min | 2006-05-05 13:55 | 2006-05-05 14:15 | 56 | 2006-05-04 16:40 | 2006-05-04 17:00 | 20min | 0d |  |  | Cognizant | 0.33h |
| 58 | 1.4.5.4 | Reporting through KR site | 10min | 2006-05-05 14:15 | 2006-05-05 14:25 | 57 | 2006-05-05 08:00 | 2006-05-05 08:10 | 10min | 0d |  |  | Cognizant | 0.17h |
| 59 | 1.4.5.5 | Check: Sign Off on Logs and Results | 30min | 2006-05-05 14:25 | 2006-05-05 14:55 | 58 | 2006-05-05 08:10 | 2006-05-05 08:10 | 0h | 0d |  |  | CBOE | 0.5h |

| ID | WBS | Task | Type | Duration | Start | Finish | Predecessors | Baseline start | Baseline finish | Baseline duration | Total slack | Resources | Work |
| --- | --- | --- | --- | --- | --- | --- | --- | --- | --- | --- | --- | --- | --- |
| 60 | 1.12 | **Multi-class Quote step-up test with BOTR [Scenario 3]** |  | 0.45d | 2006-05-05 14:55 | 2006-05-08 09:30 | 54 | 2006-05-05 08:10 | 2006-05-05 11:15 | 0.39d | 0d | Cognizant | 7.17h |
| 61 | 1.12.1 | BC Cleanup, Initial Driver Setup, |  | 20min | 2006-05-05 14:55 | 2006-05-05 15:15 | 59 | 2006-05-05 08:10 | 2006-05-05 08:30 | 20min | 0d | Cognizant | 0.33h |
| 62 | 1.12.2 | Test Execution for No BOTR |  | 1h | 2006-05-05 15:15 | 2006-05-05 16:15 | 61 | 2006-05-05 08:30 | 2006-05-05 09:30 | 1h | 0d | Cognizant | 1h |
| 63 | 1.12.3 | BOTR from 4000 to 16000 |  | 30min | 2006-05-05 16:15 | 2006-05-05 16:45 | 62 | 2006-05-05 09:30 | 2006-05-05 10:00 | 30min | 0d | Cognizant | 0.5h |
| 64 | 1.12.4 | endOfPerformance and Backup |  | 45min | 2006-05-05 16:45 | 2006-05-08 08:30 | 63 | 2006-05-05 10:00 | 2006-05-05 10:45 | 45min | 0d | Cognizant | 0.75h |
| 65 | 1.12.5 | Reporting through KR site |  | 30min | 2006-05-08 08:30 | 2006-05-08 09:00 | 64 | 2006-05-05 10:45 | 2006-05-05 11:15 | 30min | 0d | Cognizant | 0.5h |
| 66 | 1.4.6.6 | Check: Sign Off on Logs and Results |  | 30min | 2006-05-08 09:00 | 2006-05-08 09:30 | 65 | 2006-05-05 11:15 | 2006-05-05 11:15 | 0h | 0d | CBOE | 0.5h |
| 67 | 1.13 | **Single-class Quote step-up test with BOTR [Scenario 1]** |  | 0.41d | 2006-05-08 09:30 | 2006-05-08 13:45 | 60 | 2006-05-05 11:15 | 2006-05-05 15:00 | 0.34d | 0d | Cognizant | 6.5h |
| 68 | 1.13.1 | BC Cleanup, Initial Driver Setup, |  | 20min | 2006-05-08 09:30 | 2006-05-08 09:50 | 66 | 2006-05-05 11:15 | 2006-05-05 11:35 | 20min | 0d | Cognizant | 0.33h |
| 69 | 1.13.2 | Test Execution for No BOTR |  | 1h | 2006-05-08 09:50 | 2006-05-08 10:50 | 68 | 2006-05-05 11:35 | 2006-05-05 13:35 | 1h | 0d | Cognizant | 1h |
| 70 | 1.13.3 | BOTR 16000 |  | 10min | 2006-05-08 10:50 | 2006-05-08 11:00 | 69 | 2006-05-05 13:35 | 2006-05-05 13:45 | 10min | 0d | Cognizant | 0.17h |
| 71 | 1.13.4 | endOfPerformance and Backup |  | 45min | 2006-05-08 11:00 | 2006-05-08 11:45 | 70 | 2006-05-05 13:45 | 2006-05-05 14:30 | 45min | 0d | Cognizant | 0.75h |
| 72 | 1.13.5 | Reporting through KR site |  | 30min | 2006-05-08 11:45 | 2006-05-08 13:15 | 71 | 2006-05-05 14:30 | 2006-05-05 15:00 | 30min | 0d | Cognizant | 0.5h |
| 73 | 1.4.7.6 | Check: Sign Off On Logs and Results |  | 30min | 2006-05-08 13:15 | 2006-05-08 13:45 | 72 | 2006-05-05 15:00 | 2006-05-05 15:00 | 0h | 0d | CBOE | 0.5h |
| 74 | 1.14 | **Multi-class Order step-up test [Scenario 4]** |  | 0.24d | 2006-05-08 13:45 | 2006-05-08 15:40 | 67 | 2006-05-05 15:00 | 2006-05-05 16:55 | 0.24d | 0d | Cognizant | 3.83h |
| 75 | 1.14.1 | BC Cleanup, Initial Driver Setup, |  | 20min | 2006-05-08 13:45 | 2006-05-08 14:05 | 73 | 2006-05-05 15:00 | 2006-05-05 15:20 | 20min | 0d | Cognizant | 0.33h |
| 76 | 1.14.2 | Test Execution for No BOTR |  | 1h | 2006-05-08 14:05 | 2006-05-08 15:05 | 75 | 2006-05-05 15:20 | 2006-05-05 16:20 | 1h | 0d | Cognizant | 1h |
| 77 | 1.14.3 | endOfPerformance and Backup |  | 20min | 2006-05-08 15:05 | 2006-05-08 15:25 | 76 | 2006-05-05 16:20 | 2006-05-05 16:40 | 20min | 0d | Cognizant | 0.33h |
| 78 | 1.14.4 | Reporting through KR site |  | 15min | 2006-05-08 15:25 | 2006-05-08 15:40 | 77 | 2006-05-05 16:40 | 2006-05-05 16:55 | 15min | 0d | Cognizant | 0.25h |
| 79 | 1.4.8.5 | Check: Sign Off on Logs and Results | milestone | 0h | 2006-05-08 15:40 | 2006-05-08 15:40 | 78 | 2006-05-05 16:55 | 2006-05-05 16:55 | 0h | 0d | CBOE |  |
| 80 | 1.15 | **Hybrid BC failover (new release to old release)** |  | 0.47d | 2006-05-08 15:40 | 2006-05-09 10:25 | 74 | 2006-05-08 16:55 | 2006-05-09 10:40 | 0.34d | 0d | Cognizant | 7.5h |
| 81 | 1.4.9.1 | BC Cleanup start A Side as Master |  | 20min | 2006-05-08 15:40 | 2006-05-08 16:00 | 79 | 2006-05-08 16:55 | 2006-05-09 08:15 | 20min | 0d | Cognizant | 0.33h |
| 82 | 1.15.1 | Initial setup for test Drivers (starting processes on BC Slave.) |  | 25min | 2006-05-08 16:00 | 2006-05-08 16:25 | 81 | 2006-05-09 08:15 | 2006-05-09 08:40 | 25min | 0d | Cognizant | 0.42h |
| 83 | 1.15.2 | Quote/Order BC20 Hybrid traffic going before/during/after failover. Test Execution |  | 1h | 2006-05-08 16:25 | 2006-05-09 08:25 | 82 | 2006-05-09 08:40 | 2006-05-09 09:10 | 30min | 0d | Cognizant | 1h |
| 84 | 1.15.3 | ITG Checkout script (for W_MAIN and ONE_MAIN Session) |  | 40min | 2006-05-09 08:25 | 2006-05-09 09:05 | 83 | 2006-05-09 09:10 | 2006-05-09 09:50 | 40min | 0d | Cognizant | 0.67h |
| 85 | 1.15.4 | Backup for Failover and ITG Checkout |  | 20min | 2006-05-09 09:05 | 2006-05-09 09:25 | 84 | 2006-05-09 09:50 | 2006-05-09 10:10 | 20min | 0d | Cognizant | 0.33h |
| 86 | 1.15.5 | Generate Report for Failover Timings for all BC Processes (taking time from log files) |  | 30min | 2006-05-09 09:25 | 2006-05-09 09:55 | 85 | 2006-05-09 10:10 | 2006-05-09 10:40 | 30min | 0d | Cognizant | 0.5h |
| 87 | 1.4.9.7 | Check: Sign Off on Checkout Scripts, Logs and Results |  | 30min | 2006-05-09 09:55 | 2006-05-09 10:25 | 86 | 2006-05-09 10:40 | 2006-05-09 10:40 | 0h | 0d | CBOE | 0.5h |

| ID | WBS | Task | Duration | Start | Finish | Predecessors | Baseline start | Baseline finish | Baseline duration | Total slack | Resources | Work |
| --- | --- | --- | --- | --- | --- | --- | --- | --- | --- | --- | --- | --- |
| 88 | 1.5 | **Install and Perform Failoveron Hybrid BC B Side** | 0.76d | 2006-05-09 10:25 | 2006-05-10 08:30 | 37 | 2006-05-09 10:40 | 2006-05-09 16:25 | 0.59d | 0d | Cognizant | 18.25h |
| 89 | 1.16 | **Install Hybrid BC "B" side** | 0.38d | 2006-05-09 10:25 | 2006-05-09 14:25 | 80 | 2006-05-09 10:40 | 2006-05-09 14:00 | 0.29d | 0d | Cognizant | 6h |
| 90 | 1.5.1.1 | Cleanup | 20min | 2006-05-09 10:25 | 2006-05-09 10:45 | 87 | 2006-05-09 10:40 | 2006-05-09 11:00 | 20min | 0d | Cognizant | 0.33h |
| 91 | 1.16.1 | Configuration and starting processes | 1.5h | 2006-05-09 10:45 | 2006-05-09 13:15 | 90 | 2006-05-09 11:00 | 2006-05-09 12:00 | 1h | 0d | Cognizant | 1.5h |
| 92 | 1.16.2 | ITG Checkout script (W_MAIN Session) | 20min | 2006-05-09 13:15 | 2006-05-09 13:35 | 91 | 2006-05-09 13:00 | 2006-05-09 13:40 | 40min | 0d | Cognizant | 0.33h |
| 93 | 1.16.3 | Backup and Reporting | 20min | 2006-05-09 13:35 | 2006-05-09 13:55 | 92 | 2006-05-09 13:40 | 2006-05-09 14:00 | 20min | 0d | Cognizant | 0.33h |
| 94 | 1.5.1.5 | Check: Sign Off on Checkout Scripts, Logs and Results | 30min | 2006-05-09 13:55 | 2006-05-09 14:25 | 93 | 2006-05-09 14:00 | 2006-05-09 14:00 | 0h | 0d | CBOE | 0.5h |
| 95 | 1.17 | **Hybrid BC failover (new release to new release)** | 0.39d | 2006-05-09 14:25 | 2006-05-10 08:30 | 89 | 2006-05-09 14:00 | 2006-05-09 16:25 | 0.3d | 0d | Cognizant | 6.17h |
| 96 | 1.17.1 | Initial setup for test Drivers (starting processes on BC Slave.) | 25min | 2006-05-09 14:25 | 2006-05-09 14:50 | 94 | 2006-05-09 14:00 | 2006-05-09 14:25 | 25min | 0d | Cognizant | 0.42h |
| 97 | 1.17.2 | Quote/Order BC20 Hybrid traffic going before/during/after failover. Test Execution | 1h | 2006-05-09 14:50 | 2006-05-09 15:50 | 96 | 2006-05-09 14:25 | 2006-05-09 14:55 | 30min | 0d | Cognizant | 1h |
| 98 | 1.17.3 | ITG Checkout script (for W_MAIN Session) | 20min | 2006-05-09 15:50 | 2006-05-09 16:10 | 97 | 2006-05-09 14:55 | 2006-05-09 15:35 | 40min | 0d | Cognizant | 0.33h |
| 99 | 1.17.4 | Backup for Failover and ITG Checkout | 20min | 2006-05-09 16:10 | 2006-05-09 16:30 | 98 | 2006-05-09 15:35 | 2006-05-09 15:55 | 20min | 0d | Cognizant | 0.33h |
| 100 | 1.17.5 | Generate Report for Failover Timings for all BC Processes (taking time from log files) | 30min | 2006-05-09 16:30 | 2006-05-09 17:00 | 99 | 2006-05-09 15:55 | 2006-05-09 16:25 | 30min | 0d | Cognizant | 0.5h |
| 101 | 1.5.2.6 | Check: Sign Off on Checkout Scripts,Logs and Results | 30min | 2006-05-10 08:00 | 2006-05-10 08:30 | 100 | 2006-05-09 16:25 | 2006-05-09 16:25 | 0h | 0d | CBOE | 0.5h |
| 102 | 1.6 | **Install and Perform Tests on ONE_MAIN BC A Side** | 1.32d | 2006-05-10 08:30 | 2006-05-11 11:05 | 88 | 2006-05-09 16:25 | 2006-05-11 08:10 | 1.09d | 0d | Cognizant | 31.75h |
| 103 | 1.26 | **Install ONE_MAIN BC (A)** | 0.33d | 2006-05-10 08:30 | 2006-05-10 11:10 | 95 | 2006-05-09 16:25 | 2006-05-10 09:25 | 0.25d | 0d | Cognizant | 5.33h |
| 104 | 1.26.1 | Configuration and starting processes | 1.5h | 2006-05-10 08:30 | 2006-05-10 10:00 | 101 | 2006-05-09 16:25 | 2006-05-10 08:25 | 1h | 0d | Cognizant | 1.5h |
| 105 | 1.26.2 | ITG Checkout script (ONE_MAIN Session) | 20min | 2006-05-10 10:00 | 2006-05-10 10:20 | 104 | 2006-05-10 08:25 | 2006-05-10 09:05 | 40min | 0d | Cognizant | 0.33h |
| 106 | 1.26.3 | Backup and Reporting | 20min | 2006-05-10 10:20 | 2006-05-10 10:40 | 105 | 2006-05-10 09:05 | 2006-05-10 09:25 | 20min | 0d | Cognizant | 0.33h |
| 107 | 1.6.1.4 | Check: Sign Off on Checkout Scripts, Logs and Results | 30min | 2006-05-10 10:40 | 2006-05-10 11:10 | 106 | 2006-05-10 09:25 | 2006-05-10 09:25 | 0h | 0d | CBOE | 0.5h |
| 108 | 1.27 | **Multi-class Order step-up test for ONE_MAIN [Scenario 2]** | 0.29d | 2006-05-10 11:10 | 2006-05-10 14:30 | 103 | 2006-05-10 09:25 | 2006-05-10 11:15 | 0.23d | 0d | Cognizant | 4.67h |
| 109 | 1.27.1 | BC Cleanup, Initial Driver Setup, | 20min | 2006-05-10 11:10 | 2006-05-10 11:30 |  | 2006-05-10 09:25 | 2006-05-10 09:45 | 20min | 0d | Cognizant | 0.33h |
| 110 | 1.27.2 | Test Execution for No BOTR | 1h | 2006-05-10 11:30 | 2006-05-10 13:30 | 109 | 2006-05-10 09:45 | 2006-05-10 10:45 | 1h | 0d | Cognizant | 1h |
| 111 | 1.27.3 | endOfPerformance and Backup | 15min | 2006-05-10 13:30 | 2006-05-10 13:45 | 110 | 2006-05-10 10:45 | 2006-05-10 11:00 | 15min | 0d | Cognizant | 0.25h |
| 112 | 1.27.4 | Reporting through KR site | 15min | 2006-05-10 13:45 | 2006-05-10 14:00 | 111 | 2006-05-10 11:00 | 2006-05-10 11:15 | 15min | 0d | Cognizant | 0.25h |
| 113 | 1.6.2.5 | Check: Sign Off on Logs and Results | 30min | 2006-05-10 14:00 | 2006-05-10 14:30 | 112 | 2006-05-10 11:15 | 2006-05-10 11:15 | 0h | 0d | CBOE | 0.5h |

| ID | WBS | Task | Duration | Start | Finish | Predecessors | Baseline start | Baseline finish | Baseline duration | Total slack | Resources | Work |
| --- | --- | --- | --- | --- | --- | --- | --- | --- | --- | --- | --- | --- |
| 114 | 1.28 | **Multi-class Quote step-up test [Scenario 1]** | 0.33d | 2006-05-10 14:30 | 2006-05-11 08:10 | 108 | 2006-05-10 11:15 | 2006-05-10 14:25 | 0.27d | 0d | Cognizant | 5.33h |
| 115 | 1.28.1 | BC Cleanup, Initial Driver Setup, | 20min | 2006-05-10 14:30 | 2006-05-10 14:50 |  | 2006-05-10 11:15 | 2006-05-10 11:35 | 20min | 0d | Cognizant | 0.33h |
| 116 | 1.28.2 | Test Execution for No BOTR | 1h | 2006-05-10 14:50 | 2006-05-10 15:50 | 115 | 2006-05-10 11:35 | 2006-05-10 13:35 | 1h | 0d | Cognizant | 1h |
| 117 | 1.28.3 | endOfPerformance and Backup | 30min | 2006-05-10 15:50 | 2006-05-10 16:20 | 116 | 2006-05-10 13:35 | 2006-05-10 14:05 | 30min | 0d | Cognizant | 0.5h |
| 118 | 1.28.4 | Reporting through KR site | 20min | 2006-05-10 16:20 | 2006-05-10 16:40 | 117 | 2006-05-10 14:05 | 2006-05-10 14:25 | 20min | 0d | Cognizant | 0.33h |
| 119 | 1.6.3.5 | Check: Sign Off on Logs and Results | 30min | 2006-05-10 16:40 | 2006-05-11 08:10 | 118 | 2006-05-10 14:25 | 2006-05-10 14:25 | 0h | 0d | CBOE | 0.5h |
| 120 | 1.30 | **Failover ONE_MAIN BC (Old to New)** | 0.36d | 2006-05-11 08:10 | 2006-05-11 11:05 | 114 | 2006-05-10 14:25 | 2006-05-11 08:10 | 0.34d | 0d | Cognizant | 5.83h |
| 121 | 1.6.4.1 | Cleanup | 20min | 2006-05-11 08:10 | 2006-05-11 08:30 | 119 | 2006-05-10 14:25 | 2006-05-10 14:45 | 20min | 0d | Cognizant | 0.33h |
| 122 | 1.30.1 | Initial setup for test Drivers (starting processes on BC Slave.) | 25min | 2006-05-11 08:30 | 2006-05-11 08:55 | 121 | 2006-05-10 14:45 | 2006-05-10 15:10 | 25min | 0d | Cognizant | 0.42h |
| 123 | 1.30.2 | Quote/Order ONE_MAIN traffic going before/during/after failover. Test Execution | 30min | 2006-05-11 08:55 | 2006-05-11 09:25 | 122 | 2006-05-10 15:10 | 2006-05-10 15:40 | 30min | 0d | Cognizant | 0.5h |
| 124 | 1.30.3 | ITG Checkout script (for ONE_MAIN Session) | 20min | 2006-05-11 09:25 | 2006-05-11 09:45 | 123 | 2006-05-10 15:40 | 2006-05-10 16:20 | 40min | 0d | Cognizant | 0.33h |
| 125 | 1.30.4 | Backup for Failover and ITG Checkout | 20min | 2006-05-11 09:45 | 2006-05-11 10:05 | 124 | 2006-05-10 16:20 | 2006-05-10 16:40 | 20min | 0d | Cognizant | 0.33h |
| 126 | 1.30.5 | Generate Report for Failover Timings for all BC Processes (taking time from log files) | 30min | 2006-05-11 10:05 | 2006-05-11 10:35 | 125 | 2006-05-10 16:40 | 2006-05-11 08:10 | 30min | 0d | Cognizant | 0.5h |
| 127 | 1.6.4.7 | Check: Sign Off on Checkout Scripts,Logs and Results | 30min | 2006-05-11 10:35 | 2006-05-11 11:05 | 126 | 2006-05-11 08:10 | 2006-05-11 08:10 | 0h | 0d | CBOE | 0.5h |
| 128 | 1.7 | **Install and Perform failover on ONE_MAIN BC B Side** | 0.7d | 2006-05-11 11:05 | 2006-05-12 08:40 | 102 | 2006-05-11 08:10 | 2006-05-11 13:55 | 0.59d | 0d | Cognizant | 16.75h |
| 129 | 1.31 | **Install ONE_MAIN BC (B)** | 0.33d | 2006-05-11 11:05 | 2006-05-11 14:45 | 120 | 2006-05-11 08:10 | 2006-05-11 10:10 | 0.25d | 0d | Cognizant | 5.33h |
| 130 | 1.31.1 | Configuration and starting processes | 1.5h | 2006-05-11 11:05 | 2006-05-11 13:35 | 127 | 2006-05-11 08:10 | 2006-05-11 09:10 | 1h | 0d | Cognizant | 1.5h |
| 131 | 1.31.2 | ITG Checkout script ( ONE_MAIN Session) | 20min | 2006-05-11 13:35 | 2006-05-11 13:55 | 130 | 2006-05-11 09:10 | 2006-05-11 09:50 | 40min | 0d | Cognizant | 0.33h |
| 132 | 1.31.3 | Backup and Reporting | 20min | 2006-05-11 13:55 | 2006-05-11 14:15 | 131 | 2006-05-11 09:50 | 2006-05-11 10:10 | 20min | 0d | Cognizant | 0.33h |
| 133 | 1.7.1.4 | Check: Sign Off on Checkout Scripts, Logs and Results | 30min | 2006-05-11 14:15 | 2006-05-11 14:45 | 132 | 2006-05-11 10:10 | 2006-05-11 10:10 | 0h | 0d | CBOE | 0.5h |
| 134 | 1.7.2 | **Failover ONE_MAIN BC (New to New)** | 0.36d | 2006-05-11 14:45 | 2006-05-12 08:40 | 129 | 2006-05-11 10:10 | 2006-05-11 13:55 | 0.34d | 0d | Cognizant | 5.83h |
| 135 | 1.7.2.1 | Cleanup | 20min | 2006-05-11 14:45 | 2006-05-11 15:05 | 133 | 2006-05-11 10:10 | 2006-05-11 10:30 | 20min | 0d | Cognizant | 0.33h |
| 136 | 1.7.2.2 | Initial setup for test Drivers (starting processes on BC Slave.) | 25min | 2006-05-11 15:05 | 2006-05-11 15:30 | 135 | 2006-05-11 10:30 | 2006-05-11 10:55 | 25min | 0d | Cognizant | 0.42h |
| 137 | 1.7.2.3 | Quote/Order ONE_MAIN traffic going before/during/after failover. Test Execution | 30min | 2006-05-11 15:30 | 2006-05-11 16:00 | 136 | 2006-05-11 10:55 | 2006-05-11 11:25 | 30min | 0d | Cognizant | 0.5h |
| 138 | 1.7.2.4 | ITG Checkout script (for ONE_MAIN Session) | 20min | 2006-05-11 16:00 | 2006-05-11 16:20 | 137 | 2006-05-11 11:25 | 2006-05-11 13:05 | 40min | 0d | Cognizant | 0.33h |
| 139 | 1.7.2.5 | Backup for Failover and ITG Checkout | 20min | 2006-05-11 16:20 | 2006-05-11 16:40 | 138 | 2006-05-11 13:05 | 2006-05-11 13:25 | 20min | 0d | Cognizant | 0.33h |
| 140 | 1.7.2.6 | Generate Report for Failover Timings for all BC Processes (taking time from log files) | 30min | 2006-05-11 16:40 | 2006-05-12 08:10 | 139 | 2006-05-11 13:25 | 2006-05-11 13:55 | 30min | 0d | Cognizant | 0.5h |
| 141 | 1.7.2.7 | Check: Sign Off on Checkout Scripts,Logs and Results | 30min | 2006-05-12 08:10 | 2006-05-12 08:40 | 140 | 2006-05-11 13:55 | 2006-05-11 13:55 | 0h | 0d | CBOE | 0.5h |

| ID | WBS | Task | Duration | Start | Finish | Predecessors | Baseline start | Baseline finish | Baseline duration | Total slack | Constraint | Resources | Work |
| --- | --- | --- | --- | --- | --- | --- | --- | --- | --- | --- | --- | --- | --- |
| 142 | 1.8 | **4 Hour Endurance Test** | 0.81d | 2006-05-12 08:40 | 2006-05-12 16:10 | 128 | 2006-05-11 13:55 | 2006-05-12 10:55 | 0.75d | 0d |  | Cognizant | 13h |
| 143 | 1.8.1 | Cleanup for W_MAIN and ONE_MAIN BC | 20min | 2006-05-12 08:40 | 2006-05-12 09:00 |  | 2006-05-11 13:55 | 2006-05-11 14:15 | 20min | 0d |  | Cognizant | 0.33h |
| 144 | 1.8.2 | Driver setup | 20min | 2006-05-12 09:00 | 2006-05-12 09:20 | 143 | 2006-05-11 14:15 | 2006-05-11 14:35 | 20min | 0d |  | Cognizant | 0.33h |
| 145 | 1.8.3 | CAS bounce | 20min | 2006-05-12 09:20 | 2006-05-12 09:40 | 144 | 2006-05-11 14:35 | 2006-05-11 14:55 | 20min | 0d |  | Cognizant | 0.33h |
| 146 | 1.8.4 | 4 hour Sanity Check | 4h | 2006-05-12 09:40 | 2006-05-12 14:40 | 145 | 2006-05-11 14:55 | 2006-05-12 09:55 | 4h | 0d |  | Cognizant | 4h |
| 147 | 1.8.5 | endOfPerformance and Backup and Reporting | 1h | 2006-05-12 14:40 | 2006-05-12 15:40 | 146 | 2006-05-12 09:55 | 2006-05-12 10:55 | 1h | 0d |  | Cognizant | 1h |
| 148 | 1.8.6 | Check: Sign Off on Logs and Results | 30min | 2006-05-12 15:40 | 2006-05-12 16:10 | 147 | 2006-05-12 10:55 | 2006-05-12 10:55 | 0h | 0d |  | CBOE | 0.5h |
| 149 | 1.9 | **Install and Perform tests on FE A Side** | 0.99d | 2006-05-12 16:10 | 2006-05-15 16:05 | 142 |  |  |  | 0d |  | Cognizant | 23.75h |
| 150 | 1.9.1 | **Install FE A** | 0.38d | 2006-05-12 16:10 | 2006-05-15 10:10 | 142 |  |  |  | 0d |  | Cognizant | 6h |
| 151 | 1.10.1 | Configuration and starting processes | 1.5h | 2006-05-12 16:10 | 2006-05-15 08:40 | 134 | 2006-05-04 11:50 | 2006-05-04 13:50 | 1h | 0d |  | Cognizant | 1.5h |
| 152 | 1.10.2 | ITG Checkout script (W_MAIN and ONE_MAIN Session) | 40min | 2006-05-15 08:40 | 2006-05-15 09:20 | 151 | 2006-05-04 13:50 | 2006-05-04 14:30 | 40min | 0d |  | Cognizant | 0.67h |
| 153 | 1.10.3 | Backup and Reporting | 20min | 2006-05-15 09:20 | 2006-05-15 09:40 | 152 | 2006-05-04 14:30 | 2006-05-04 14:50 | 20min | 0d |  | Cognizant | 0.33h |
| 154 | 1.9.1.4 | Check: Sign Off on Checkout Scripts, Logs and Results | 30min | 2006-05-15 09:40 | 2006-05-15 10:10 | 153 | 2006-05-04 14:50 | 2006-05-04 14:50 | 0h | 0d |  | CBOE | 0.5h |
| 155 | 1.9.2 | **Mult Class Quote Step-up with Quotes only (Scenario 0)** | 0.32d | 2006-05-15 10:10 | 2006-05-15 13:45 | 150 |  |  |  | 0d |  | Cognizant | 5.17h |
| 156 | 1.9.2.1 | BC Cleanup, Initial Driver Setup, | 20min | 2006-05-15 10:10 | 2006-05-15 10:30 | 154 |  |  |  | 0d | start no earlier than 2006-04-24 08:00 | Cognizant | 0.33h |
| 157 | 1.9.2.2 | Test Execution for No BOTR | 1h | 2006-05-15 10:30 | 2006-05-15 11:30 | 156 |  |  |  | 0d | start no earlier than 2006-04-24 08:00 | Cognizant | 1h |
| 158 | 1.9.2.3 | endOfPerformance and Backup | 30min | 2006-05-15 11:30 | 2006-05-15 12:00 | 157 |  |  |  | 0d |  | Cognizant | 0.5h |
| 159 | 1.9.2.4 | Reporting through KR site | 15min | 2006-05-15 13:00 | 2006-05-15 13:15 | 158 |  |  |  | 0d |  | Cognizant | 0.25h |
| 160 | 1.9.2.5 | Check: Sign Off on Logs and Results | 30min | 2006-05-15 13:15 | 2006-05-15 13:45 | 159 |  |  |  | 0d |  | CBOE | 0.5h |
| 161 | 1.9.3 | **FE Failover - New to Old** | 0.29d | 2006-05-15 13:45 | 2006-05-15 16:05 | 155 |  |  |  | 0d |  | Cognizant | 4.67h |
| 162 | 1.9.3.1 | initial cleanup and driver setup | 20min | 2006-05-15 13:45 | 2006-05-15 14:05 | 160 |  |  |  | 0d |  | Cognizant | 0.33h |
| 163 | 1.9.3.2 | Quote and order traffic | 20min | 2006-05-15 14:05 | 2006-05-15 14:25 | 162 |  |  |  | 0d |  | Cognizant | 0.33h |
| 164 | 1.9.3.3 | stop A side FE processes and see effect on traffic | 10min | 2006-05-15 14:25 | 2006-05-15 14:35 | 163 |  |  |  | 0d |  | Cognizant | 0.17h |
| 165 | 1.9.3.4 | ITG Checkout with only Old FE processes up | 40min | 2006-05-15 14:35 | 2006-05-15 15:15 | 164 |  |  |  | 0d |  | Cognizant | 0.67h |
| 166 | 1.9.3.5 | Log backup | 20min | 2006-05-15 15:15 | 2006-05-15 15:35 | 165 |  |  |  | 0d |  | Cognizant | 0.33h |
| 167 | 1.9.3.6 | Check: Sign Off on Checkout Scripts, Logs and Results | 30min | 2006-05-15 15:35 | 2006-05-15 16:05 | 166 | 2006-05-09 10:40 | 2006-05-09 10:40 | 0h | 0d |  | CBOE | 0.5h |

| ID | WBS | Task | Type | Duration | Start | Finish | Predecessors | Baseline start | Baseline finish | Baseline duration | Total slack | Resources | Work |
| --- | --- | --- | --- | --- | --- | --- | --- | --- | --- | --- | --- | --- | --- |
| 168 | 1.10 | **Install and Perform tests on FE B Side** |  | 0.67d | 2006-05-15 16:05 | 2006-05-16 13:25 | 149 |  |  |  | 0d | Cognizant | 16h |
| 169 | 1.10.1 | **Install FE B** |  | 0.38d | 2006-05-15 16:05 | 2006-05-16 10:05 | 161 |  |  |  | 0d | Cognizant | 6h |
| 170 | 1.10.1 | Configuration and starting processes |  | 1.5h | 2006-05-15 16:05 | 2006-05-16 08:35 | 167 | 2006-05-04 11:50 | 2006-05-04 13:50 | 1h | 0d | Cognizant | 1.5h |
| 171 | 1.10.2 | ITG Checkout script (W_MAIN and ONE_MAIN Session) |  | 40min | 2006-05-16 08:35 | 2006-05-16 09:15 | 170 | 2006-05-04 13:50 | 2006-05-04 14:30 | 40min | 0d | Cognizant | 0.67h |
| 172 | 1.10.3 | Backup and Reporting |  | 20min | 2006-05-16 09:15 | 2006-05-16 09:35 | 171 | 2006-05-04 14:30 | 2006-05-04 14:50 | 20min | 0d | Cognizant | 0.33h |
| 173 | 1.10.1.4 | Check: Sign Off on Checkout Scripts, Logs and Results |  | 30min | 2006-05-16 09:35 | 2006-05-16 10:05 | 172 | 2006-05-04 14:50 | 2006-05-04 14:50 | 0h | 0d | CBOE | 0.5h |
| 174 | 1.10.2 | **FE Failover - New to New** |  | 0.29d | 2006-05-16 10:05 | 2006-05-16 13:25 | 169 |  |  |  | 0d | Cognizant | 4.67h |
| 175 | 1.10.2.1 | initial cleanup and driver setup |  | 20min | 2006-05-16 10:05 | 2006-05-16 10:25 | 173 |  |  |  | 0d | Cognizant | 0.33h |
| 176 | 1.10.2.2 | Quote and order traffic |  | 20min | 2006-05-16 10:25 | 2006-05-16 10:45 | 175 |  |  |  | 0d | Cognizant | 0.33h |
| 177 | 1.10.2.3 | stop A side FE processes and see effect on traffic |  | 10min | 2006-05-16 10:45 | 2006-05-16 10:55 | 176 |  |  |  | 0d | Cognizant | 0.17h |
| 178 | 1.10.2.4 | ITG Checkout with only Old FE processes up |  | 40min | 2006-05-16 10:55 | 2006-05-16 11:35 | 177 |  |  |  | 0d | Cognizant | 0.67h |
| 179 | 1.10.2.5 | Log backup |  | 20min | 2006-05-16 11:35 | 2006-05-16 11:55 | 178 |  |  |  | 0d | Cognizant | 0.33h |
| 180 | 1.10.2.6 | Check: Sign Off on Checkout Scripts, Logs and Results |  | 30min | 2006-05-16 11:55 | 2006-05-16 13:25 | 179 | 2006-05-09 10:40 | 2006-05-09 10:40 | 0h | 0d | CBOE | 0.5h |
| 181 | 1.42 | **Server Side Full Cleanup after All Server upgrades.** |  | 0.6d | 2006-05-16 13:25 | 2006-05-17 09:15 | 168 | 2006-05-15 08:55 | 2006-05-15 14:15 | 0.54d | 0d | Cognizant | 9.67h |
| 182 | 1.42.1 | Time server full startup after cleanup (See Server Startup Timing Page) |  | 4h | 2006-05-16 13:25 | 2006-05-17 08:25 | 180 | 2006-05-15 08:55 | 2006-05-15 13:55 | 4h | 0d | Cognizant | 4h |
| 183 | 1.42.2 | Backup for server Timings |  | 20min | 2006-05-17 08:25 | 2006-05-17 08:45 | 182 | 2006-05-15 13:55 | 2006-05-15 14:15 | 20min | 0d | Cognizant | 0.33h |
| 184 | 1.11.3 | Check: Sign Off on Logs and Results |  | 30min | 2006-05-17 08:45 | 2006-05-17 09:15 | 183 | 2006-05-15 14:15 | 2006-05-15 14:15 | 0h | 0d | CBOE | 0.5h |
| 185 | 1.12 | **Check: Overall Verification** |  | 0d | 2006-05-17 08:45 | 2006-05-17 08:45 |  | 2006-05-15 14:15 | 2006-05-15 14:15 | 0d | 0.06d | CBOE |  |
| 186 | 1.12.1 | All Results Signed Off | milestone | 0h | 2006-05-17 08:45 | 2006-05-17 08:45 | 183 | 2006-05-15 14:15 | 2006-05-15 14:15 | 0h | 0.06d | CBOE |  |
| 187 | 1.12.2 | All Tests Completed | milestone | 0h | 2006-05-17 08:45 | 2006-05-17 08:45 | 183 | 2006-05-15 14:15 | 2006-05-15 14:15 | 0h | 0.06d | CBOE |  |
| 188 | 1.12.3 | Results approved by Paul and Respective Groups | milestone | 0h | 2006-05-17 08:45 | 2006-05-17 08:45 | 183 | 2006-05-15 14:15 | 2006-05-15 14:15 | 0h | 0.06d | CBOE |  |
