Schedule from MS Project, 2006-09-21 to 2006-09-27.
Cognizant Technology Solutions

## Calendars

- Standard: Mon-Fri 08:00-12:00, 13:00-17:00; Sat-Sun off.

## Resources

| Resource |
| --- |
| Cognizant |
| 2 |
| CBOE |
| Cognizant and CBOE |
| Cognizant/CBOE |
| XTP Group |
| 13 |
| 16 |
| 18 |
| 19 |

## Schedule

| ID | WBS | Task | Duration | Start | Finish | Predecessors | Baseline start | Baseline finish | Baseline duration | Total slack | Constraint | Resources | Work |
| --- | --- | --- | --- | --- | --- | --- | --- | --- | --- | --- | --- | --- | --- |
| 1 | 1 | **Rollout Task** | 4.06d | 2006-09-21 08:00 | 2006-09-27 08:30 |  | 2006-03-14 08:00 | 2006-05-17 13:55 | 46.61d? | 0d |  |  | 89h |
| 2 | 1.1 | **Pre-Rollout Verification/Changes** | 3d | 2006-09-21 08:00 | 2006-09-25 17:00 |  | 2006-03-14 08:00 | 2006-05-17 13:55 | 46.61d? | 0d |  | Cognizant/CBOE | 72h |
| 3 | 1.1.1 | **Make Database Changes** | 3d | 2006-09-21 08:00 | 2006-09-25 17:00 |  | 2006-05-10 08:00 | 2006-05-10 10:00 | 0.25d? | 0d |  |  | 48h |
| 4 | 1.1.1.1 | **DB Refresh and Installations required** | 3d | 2006-09-21 08:00 | 2006-09-25 17:00 |  | 2006-05-10 08:00 | 2006-05-10 10:00 | 2h? | 0d |  | Cognizant | 48h |
| 5 | 1.1.1.1.1 | DB Refresh | 12h | 2006-09-21 08:00 | 2006-09-22 12:00 |  |  |  |  | 0d | start no earlier than 2006-09-21 08:00 | Cognizant/CBOE | 12h |
| 6 | 1.1.1.1.2 | Version Verification | 1h | 2006-09-22 13:00 | 2006-09-22 14:00 | 5 |  |  |  | 0d |  | Cognizant | 1h |
| 7 | 1.1.1.1.3 | Install and configure latest MDX on perf1 mdx | 2h | 2006-09-22 14:00 | 2006-09-22 16:00 | 6 |  |  |  | 0d |  | Cognizant/CBOE | 2h |
| 8 | 1.1.1.1.4 | Install and configute TipsMDXAdapter on perf1 mdgc box | 2h | 2006-09-22 16:00 | 2006-09-25 09:00 | 7 |  |  |  | 0d |  | Cognizant/CBOE | 2h |
| 9 | 1.1.1.1.5 | Install and Configure XTP in Perf1 | 2h | 2006-09-25 09:00 | 2006-09-25 11:00 | 8 |  |  |  | 0d |  | XTP Group | 2h |
| 10 | 1.1.1.1.6 | Install Perf Clients in Perf1 | 2h | 2006-09-25 11:00 | 2006-09-25 14:00 | 9 |  |  |  | 0d |  | Cognizant/CBOE | 2h |
| 11 | 1.1.1.1.7 | Install XTP data drivers in Perf1 | 2h | 2006-09-25 14:00 | 2006-09-25 16:00 | 10 |  |  |  | 0d |  | XTP Group | 2h |
| 12 | 1.1.1.1.8 | Create MDXPerfTest PCS group | 1h | 2006-09-25 16:00 | 2006-09-25 17:00 | 11 |  |  |  | 0d |  | Cognizant/CBOE | 1h |
| 13 | 1.2 | **Run ITG Checkout for W_MAIN/ONE_MAIN** | 0.12d | 2006-09-26 08:00 | 2006-09-26 09:00 | 3 |  |  |  | 0d |  | Cognizant | 2h |
| 14 | 1.2.1 | W_MAIN Checkout | 20min | 2006-09-26 08:00 | 2006-09-26 08:20 | 12 |  |  |  | 0d |  | Cognizant | 0.33h |
| 15 | 1.2.2 | ONE_MAIN Checkout | 20min | 2006-09-26 08:20 | 2006-09-26 08:40 | 14 |  |  |  | 0d |  | Cognizant | 0.33h |
| 16 | 1.2.3 | Log backup/Verification | 20min | 2006-09-26 08:40 | 2006-09-26 09:00 | 15 |  |  |  | 0d |  | CBOE | 0.33h |
| 17 | 1.3 | **Run Perf Test 4 (TipsMDXAdapter and MDX, all options data generated by XTP, all equity data generated by TIPS** | 0.2d | 2006-09-26 09:00 | 2006-09-26 10:35 | 13 |  |  |  | 0d |  | Cognizant | 3.17h |
| 18 | 1.3.1 | Test Setup | 20min | 2006-09-26 09:00 | 2006-09-26 09:20 | 16 |  |  |  | 0d |  | Cognizant | 0.33h |
| 19 | 1.3.2 | Test Execution | 50min | 2006-09-26 09:20 | 2006-09-26 10:10 | 18 |  |  |  | 0d |  | Cognizant | 0.83h |
| 20 | 1.3.3 | Log backup/Results | 25min | 2006-09-26 10:10 | 2006-09-26 10:35 | 19 |  |  |  | 0d |  | Cognizant | 0.42h |
| 21 | 1.4 | **Run Perf Test 5 (TipsMDXAdapter and MDX, all CBOE options data generated by BC, all away market options data generated by XTP, all equity data generated by TIPS** | 0.2d | 2006-09-26 10:35 | 2006-09-26 13:10 | 17 |  |  |  | 0d |  | Cognizant | 3.17h |
| 22 | 1.4.1 | Test Setup | 20min | 2006-09-26 10:35 | 2006-09-26 10:55 | 20 |  |  |  | 0d |  | Cognizant | 0.33h |
| 23 | 1.4.2 | Test Execution | 50min | 2006-09-26 10:55 | 2006-09-26 11:45 | 22 |  |  |  | 0d |  | Cognizant | 0.83h |
| 24 | 1.4.3 | Log backup/Results | 25min | 2006-09-26 11:45 | 2006-09-26 13:10 | 23 |  |  |  | 0d |  | Cognizant | 0.42h |

| ID | WBS | Task | Duration | Start | Finish | Predecessors | Total slack | Resources | Work |
| --- | --- | --- | --- | --- | --- | --- | --- | --- | --- |
| 25 | 1.5 | **MDX Failure Test** | 0.15d | 2006-09-26 13:10 | 2006-09-26 14:20 | 21 | 0d | Cognizant | 2.33h |
| 26 | 1.5.1 | Test Setup | 20min | 2006-09-26 13:10 | 2006-09-26 13:30 | 23 | 0d | Cognizant | 0.33h |
| 27 | 1.5.2 | Test Execution | 25min | 2006-09-26 13:30 | 2006-09-26 13:55 | 26 | 0d | Cognizant | 0.42h |
| 28 | 1.5.3 | Log backup/Results | 25min | 2006-09-26 13:55 | 2006-09-26 14:20 | 27 | 0d | Cognizant | 0.42h |
| 29 | 1.6 | **TipsMDXAdapter Failover Test** | 0.2d | 2006-09-26 14:20 | 2006-09-26 15:55 | 25 | 0d | Cognizant | 3.17h |
| 30 | 1.6.1 | Test Setup | 20min | 2006-09-26 14:20 | 2006-09-26 14:40 | 27 | 0d | Cognizant | 0.33h |
| 31 | 1.6.2 | Test Execution | 50min | 2006-09-26 14:40 | 2006-09-26 15:30 | 30 | 0d | Cognizant | 0.83h |
| 32 | 1.6.3 | Log backup/Results | 25min | 2006-09-26 15:30 | 2006-09-26 15:55 | 31 | 0d | Cognizant | 0.42h |
| 33 | 1.7 | **XTP Failover Test** | 0.2d | 2006-09-26 15:55 | 2006-09-27 08:30 | 29 | 0d | Cognizant | 3.17h |
| 34 | 1.7.1 | Test Setup | 20min | 2006-09-26 15:55 | 2006-09-26 16:15 | 32 | 0d | Cognizant | 0.33h |
| 35 | 1.7.2 | Test Execution | 50min | 2006-09-26 16:15 | 2006-09-27 08:05 | 34 | 0d | Cognizant | 0.83h |
| 36 | 1.7.3 | Log backup/Results | 25min | 2006-09-27 08:05 | 2006-09-27 08:30 | 35 | 0d | Cognizant | 0.42h |
