Schedule from MS Project, 2007-01-16 to 2007-02-02.
Cognizant Technology Solutions

## Calendars

- Standard: Mon-Fri 08:00-12:00, 13:00-17:00; Sat-Sun off. Exceptions (off unless hours are given): 2007-01-15 to 2007-01-19 01:00-05:00, 08:00-12:00, 13:00-17:00, 20:00-24:00, 2007-01-29 to 2007-02-02 01:00-05:00, 08:00-12:00, 13:00-17:00, 20:00-24:00.

## Resources

| Resource |
| --- |
| Cognizant |
| 2 |
| CBOE |

## Schedule

| ID | WBS | Task | Duration | Start | Finish | Predecessors | Baseline start | Baseline finish | Baseline duration | Total slack | Constraint | Resources | Work |
| --- | --- | --- | --- | --- | --- | --- | --- | --- | --- | --- | --- | --- | --- |
| 1 | 1 | **Rollout Task** | 20.89d | 2007-01-16 08:00 | 2007-02-02 04:05 |  | 2006-03-14 08:00 | 2006-05-17 13:55 | 46.61d? | 0d |  |  | 14.33h |
| 2 | 1.1 | **Pre-Rollout Verification/Changes** | 1d | 2007-01-16 08:00 | 2007-01-16 17:00 |  | 2006-03-14 08:00 | 2006-05-17 13:55 | 46.61d? | 0d |  |  |  |
| 3 | 1.1.1 | Pre-Rollout Upgrades/Changes | 8h | 2007-01-16 08:00 | 2007-01-16 17:00 |  | 2006-05-10 08:00 | 2006-05-10 10:00 | 0.25d? | 0d | start no earlier than 2007-01-16 08:00 |  |  |
| 4 | 1.2 | **Install and Perform FE Tests** | 1.79d | 2007-01-16 20:00 | 2007-01-17 15:20 | 2 |  |  |  | 0d |  | Cognizant | 14.33h |
| 5 | 1.2.1 | **Install A Side FE, Failover and Perf test** | 1.29d | 2007-01-16 20:00 | 2007-01-17 10:20 | 2 |  |  |  | 0d |  |  |  |
| 6 | 1.2.1.1 | **Install 1 FE** | 0.21d | 2007-01-16 20:00 | 2007-01-16 21:40 | 2 |  |  |  | 0d |  |  |  |
| 7 | 1.2.1.1.1 | Configuration and starting processes | 30min | 2007-01-16 20:00 | 2007-01-16 20:30 |  |  |  |  | 0d |  |  |  |
| 8 | 1.2.1.1.2 | ITG Checkout script (W_MAIN and ONE_MAIN Session) | 30min | 2007-01-16 20:30 | 2007-01-16 21:00 | 7 |  |  |  | 0d |  |  |  |
| 9 | 1.2.1.1.3 | Backup and Reporting | 20min | 2007-01-16 21:00 | 2007-01-16 21:20 | 8 |  |  |  | 0d |  |  |  |
| 10 | 1.2.1.1.4 | Check: Sign Off on Checkout Scripts,Logs and Results | 20min | 2007-01-16 21:20 | 2007-01-16 21:40 | 9 |  |  |  | 0d |  |  |  |
| 11 | 1.2.1.2 | **Hybrid Performance test Scenario_3 Multi-class Step-up with BOTR/EI/OT/LS/MDHQ/QQ session: W_MAIN** | 0.4d | 2007-01-16 21:40 | 2007-01-17 01:50 | 6 |  |  |  | 0d |  |  |  |
| 12 | 1.2.1.2.1 | BC Cleanup, Initial Driver Setup, | 30min | 2007-01-16 21:40 | 2007-01-16 22:10 | 10 |  |  |  | 0d |  |  |  |
| 13 | 1.2.1.2.2 | Test Execution | 1h | 2007-01-16 22:10 | 2007-01-16 23:10 | 12 |  |  |  | 0d |  |  |  |
| 14 | 1.2.1.2.3 | endOfPerformance and Backup | 30min | 2007-01-16 23:10 | 2007-01-16 23:40 | 13 |  |  |  | 0d |  |  |  |
| 15 | 1.2.1.2.4 | Reporting through KR site | 20min | 2007-01-16 23:40 | 2007-01-17 00:00 | 14 |  |  |  | 0d |  |  |  |
| 16 | 1.2.1.2.5 | Graphs Generation and Reporting | 30min | 2007-01-17 01:00 | 2007-01-17 01:30 | 15 |  |  |  | 0d |  |  |  |
| 17 | 1.2.1.2.6 | Check: Sign off on Checkout Scripts | 20min | 2007-01-17 01:30 | 2007-01-17 01:50 | 16 |  |  |  | 0d |  |  |  |
| 18 | 1.2.1.3 | **Multi-class Order step-up test** | 0.4d | 2007-01-17 01:50 | 2007-01-17 05:00 | 11 |  |  |  | 0d |  |  |  |
| 19 | 1.2.1.3.1 | BC Cleanup, Initial Driver Setup, | 30min | 2007-01-17 01:50 | 2007-01-17 02:20 |  |  |  |  | 0d |  |  |  |
| 20 | 1.2.1.3.2 | Test Execution | 1h | 2007-01-17 02:20 | 2007-01-17 03:20 | 19 |  |  |  | 0d |  |  |  |
| 21 | 1.2.1.3.3 | endOfPerformance and Backup | 30min | 2007-01-17 03:20 | 2007-01-17 03:50 | 20 |  |  |  | 0d |  |  |  |
| 22 | 1.2.1.3.4 | Reporting through KR site | 20min | 2007-01-17 03:50 | 2007-01-17 04:10 | 21 |  |  |  | 0d |  |  |  |
| 23 | 1.2.1.3.5 | Graphs Generation and Reporting | 30min | 2007-01-17 04:10 | 2007-01-17 04:40 | 22 |  |  |  | 0d |  |  |  |
| 24 | 1.2.1.3.6 | Check: Sign off on Checkout Scripts | 20min | 2007-01-17 04:40 | 2007-01-17 05:00 | 23 |  |  |  | 0d |  |  |  |

| ID | WBS | Task | Duration | Start | Finish | Predecessors | Total slack |
| --- | --- | --- | --- | --- | --- | --- | --- |
| 25 | 1.2.1.4 | **FE Failover New to Old** | 0.29d | 2007-01-17 08:00 | 2007-01-17 10:20 | 18 | 0d |
| 26 | 1.2.1.4.1 | Failover to FE2 side,Without restarting CAS, restart FE2 kill FE1 | 30min | 2007-01-17 08:00 | 2007-01-17 08:30 | 17 | 0d |
| 27 | 1.2.1.4.2 | Quote/Order BC ONE_MAIN and W_MAIN traffic going before/during/after failover. Test Execution | 30min | 2007-01-17 08:30 | 2007-01-17 09:00 | 26 | 0d |
| 28 | 1.2.1.4.3 | ITG Checkout script (W_MAIN and ONE_MAIN Session) | 30min | 2007-01-17 09:00 | 2007-01-17 09:30 | 27 | 0d |
| 29 | 1.2.1.4.4 | Backup for Failover and ITG Checkout | 30min | 2007-01-17 09:30 | 2007-01-17 10:00 | 28 | 0d |
| 30 | 1.2.1.4.5 | Check: Sign off on Checkout Scripts | 20min | 2007-01-17 10:00 | 2007-01-17 10:20 | 29 | 0d |
| 31 | 1.2.2 | **Install B Side FE and Failover Test** | 0.5d | 2007-01-17 10:20 | 2007-01-17 15:20 | 5 | 0d |
| 32 | 1.2.2.1 | **Install FE2(Kill A side FE to make sure using B side)** | 0.21d | 2007-01-17 10:20 | 2007-01-17 12:00 | 5 | 0d |
| 33 | 1.2.2.1.1 | Configuration and starting processes | 30min | 2007-01-17 10:20 | 2007-01-17 10:50 | 30 | 0d |
| 34 | 1.2.2.1.2 | ITG Checkout script (W_MAIN and ONE_MAIN Session) | 30min | 2007-01-17 10:50 | 2007-01-17 11:20 | 33 | 0d |
| 35 | 1.2.2.1.3 | Backup and Reporting | 20min | 2007-01-17 11:20 | 2007-01-17 11:40 | 34 | 0d |
| 36 | 1.2.2.1.4 | Check: Sign Off on Checkout Scripts,Logs and Results | 20min | 2007-01-17 11:40 | 2007-01-17 12:00 | 35 | 0d |
| 37 | 1.2.2.2 | **FE Failover** | 0.29d | 2007-01-17 13:00 | 2007-01-17 15:20 | 32 | 0d |
| 38 | 1.2.2.2.1 | Failover to FE1 side,Without restarting CAS, restart FE1 kill FE2 | 30min | 2007-01-17 13:00 | 2007-01-17 13:30 | 36 | 0d |
| 39 | 1.2.2.2.2 | Quote/Order BC ONE_MAIN and W_MAIN traffic going before/during/after failover. Test Execution | 30min | 2007-01-17 13:30 | 2007-01-17 14:00 | 38 | 0d |
| 40 | 1.2.2.2.3 | ITG Checkout script (W_MAIN and ONE_MAIN Session) | 30min | 2007-01-17 14:00 | 2007-01-17 14:30 | 39 | 0d |
| 41 | 1.2.2.2.4 | Backup for Failover and ITG Checkout | 30min | 2007-01-17 14:30 | 2007-01-17 15:00 | 40 | 0d |
| 42 | 1.2.2.2.5 | Check: Sign off on Checkout Scripts | 20min | 2007-01-17 15:00 | 2007-01-17 15:20 | 41 | 0d |
| 43 | 1.3 | **Server Side Full Cleanup and Server timings** | 0.43d | 2007-01-17 15:20 | 2007-01-17 21:45 | 31 | 0d |
| 44 | 1.3.1 | Server Side Full Cleanup | 2h | 2007-01-17 15:20 | 2007-01-17 20:20 | 42 | 0d |
| 45 | 1.3.2 | Time server full startup after cleanup (See Server Startup Timing Page) | 45min | 2007-01-17 20:20 | 2007-01-17 21:05 | 44 | 0d |
| 46 | 1.3.3 | Backup for server Timings | 20min | 2007-01-17 21:05 | 2007-01-17 21:25 | 45 | 0d |
| 47 | 1.3.4 | Check: Sign Off on Logs and Results | 20min | 2007-01-17 21:25 | 2007-01-17 21:45 | 46 | 0d |
| 48 | 1.4 | **Install CAS on perfcas6** | 0.25d | 2007-01-17 21:45 | 2007-01-17 23:45 | 43 | 0d |
| 49 | 1.4.1 | Upgrade perfcas6 | 40min | 2007-01-17 21:45 | 2007-01-17 22:25 | 42 | 0d |
| 50 | 1.4.2 | ITG Checkout script (W_MAIN, ONE_MAIN) | 30min | 2007-01-17 22:25 | 2007-01-17 22:55 | 49 | 0d |
| 51 | 1.4.3 | Backup and Reporting | 20min | 2007-01-17 22:55 | 2007-01-17 23:15 | 50 | 0d |
| 52 | 1.4.4 | Check: Sign off on Checkout Scripts | 30min | 2007-01-17 23:15 | 2007-01-17 23:45 | 51 | 0d |
| 53 | 1.5 | CAS Perf Tests (4x6, 8x3, 24x1) | 10h | 2007-01-17 23:45 | 2007-01-18 14:45 | 48 | 0d |

| ID | WBS | Task | Duration | Start | Finish | Predecessors | Total slack |
| --- | --- | --- | --- | --- | --- | --- | --- |
| 54 | 1.6 | **Install CAS on devcas5** | 0.25d | 2007-01-18 14:45 | 2007-01-18 16:45 | 48 | 0d |
| 55 | 1.6.1 | Upgrade devcas5 | 40min | 2007-01-18 14:45 | 2007-01-18 15:25 | 53 | 0d |
| 56 | 1.6.2 | ITG Checkout script (W_MAIN, ONE_MAIN) | 30min | 2007-01-18 15:25 | 2007-01-18 15:55 | 55 | 0d |
| 57 | 1.6.3 | Backup and Reporting | 20min | 2007-01-18 15:55 | 2007-01-18 16:15 | 56 | 0d |
| 58 | 1.6.4 | Check: Sign off on Checkout Scripts | 30min | 2007-01-18 16:15 | 2007-01-18 16:45 | 57 | 0d |
| 59 | 1.7 | **FIX CAS upgrade and perf tests** | 2.56d | 2007-01-18 16:45 | 2007-01-22 08:15 | 54 | 0d |
| 60 | 1.7.1 | FIX CAS upgrade | 1h | 2007-01-18 16:45 | 2007-01-18 20:45 | 58 | 0d |
| 61 | 1.7.2 | Fix MD Test | 4h | 2007-01-18 20:45 | 2007-01-19 01:45 | 60 | 0d |
| 62 | 1.7.3 | Fix Order test | 5h | 2007-01-19 01:45 | 2007-01-19 09:45 | 61 | 0d |
| 63 | 1.7.4 | Fix Quote Test | 5h | 2007-01-19 09:45 | 2007-01-19 15:45 | 62 | 0d |
| 64 | 1.7.5 | Fix Quote Test blocked FE | 5h | 2007-01-19 15:45 | 2007-01-19 23:45 | 63 | 0d |
| 65 | 1.7.6 | Check: Sign off on Checkout Scripts | 30min | 2007-01-19 23:45 | 2007-01-22 08:15 | 64 | 0d |
| 66 | 1.8 | **CSI Specific Tests** | 5.06d | 2007-01-22 08:15 | 2007-01-29 01:45 | 59 | 0d |
| 67 | 1.8.1 | CAS Tests 2 Scenarios x 5 tests | 20h | 2007-01-22 08:15 | 2007-01-24 13:15 | 65 | 0d |
| 68 | 1.8.2 | FIX Tests 2 Scenarios x 5 tests | 20h | 2007-01-24 13:15 | 2007-01-29 01:15 | 67 | 0d |
| 69 | 1.8.3 | Check: Sign off on Checkout Scripts | 30min | 2007-01-29 01:15 | 2007-01-29 01:45 | 68 | 0d |
| 70 | 1.9 | **MDCAS Upgrade and Perf tests** | 1.19d | 2007-01-29 01:45 | 2007-01-29 15:15 | 66 | 0d |
| 71 | 1.9.1 | MDCAS upgrade | 1h | 2007-01-29 01:45 | 2007-01-29 02:45 | 69 | 0d |
| 72 | 1.9.2 | MDCAS Perf tests | 8h | 2007-01-29 02:45 | 2007-01-29 14:45 | 71 | 0d |
| 73 | 1.9.3 | Check: Sign off on Checkout Scripts | 30min | 2007-01-29 14:45 | 2007-01-29 15:15 | 72 | 0d |
| 74 | 1.10 | **CFIX Perf tests (2 tests with 165 classes subscribe and 1 test with 100 classes subscribe)** | 0.69d | 2007-01-29 15:15 | 2007-01-29 23:45 | 70 | 0d |
| 75 | 1.10.1 | CFIX upgrade | 1h | 2007-01-29 15:15 | 2007-01-29 16:15 | 73 | 0d |
| 76 | 1.10.2 | CFIX Perf tests | 4h | 2007-01-29 16:15 | 2007-01-29 23:15 | 75 | 0d |
| 77 | 1.10.3 | Check: Sign off on Checkout Scripts | 30min | 2007-01-29 23:15 | 2007-01-29 23:45 | 76 | 0d |

| ID | WBS | Task | Duration | Start | Finish | Predecessors | Total slack |
| --- | --- | --- | --- | --- | --- | --- | --- |
| 78 | 1.11 | **Install SACAS and SAGUI** | 0.42d | 2007-01-29 23:45 | 2007-01-30 04:05 | 74 | 0d |
| 79 | 1.11.1 | Upgrade SACAS | 1h | 2007-01-29 23:45 | 2007-01-30 01:45 | 77 | 0d |
| 80 | 1.11.2 | ITG Checkout script (W_MAIN, ONE_MAIN) | 30min | 2007-01-30 01:45 | 2007-01-30 02:15 | 79 | 0d |
| 81 | 1.11.3 | Backup and Reporting | 20min | 2007-01-30 02:15 | 2007-01-30 02:35 | 80 | 0d |
| 82 | 1.11.4 | Install SAGUI and Tests | 1h | 2007-01-30 02:35 | 2007-01-30 03:35 | 81 | 0d |
| 83 | 1.11.5 | Check: Sign off on Checkout Scripts | 30min | 2007-01-30 03:35 | 2007-01-30 04:05 | 82 | 0d |
| 84 | 1.12 | **Misc Tasks** | 6d | 2007-01-30 04:05 | 2007-02-02 04:05 | 78 | 0d |
| 85 | 1.12.1 | Perf Environment InfraEOD and Server Cleanup during entire rollout | 18h | 2007-01-30 04:05 | 2007-01-31 09:05 | 83 | 0d |
| 86 | 1.12.2 | Buffer Time for test rerun/env issues/load issues | 30h | 2007-01-31 09:05 | 2007-02-02 04:05 | 85 | 0d |
