# PDPM Perf Project Plan

Schedule from MS Project, 2005-02-10 to 2005-02-16.
CBOE

## Calendars

- Standard: Mon-Fri 08:00-12:00, 13:00-17:00; Sat-Sun off.

## Schedule

| ID | WBS | Task | Type | Duration | Start | Finish | Predecessors | Total slack | Free slack | Constraint |
| --- | --- | --- | --- | --- | --- | --- | --- | --- | --- | --- |
| 1 | 1 | **PDPM Performance Schedule** |  | 5d? | 2005-02-10 08:00 | 2005-02-16 17:00 |  | 0d |  |  |
| 2 | 1.1 | **GC DB Upgrade(Day 0)** |  | 0.88d | 2005-02-10 08:00 | 2005-02-10 16:00 |  | 1.75d | 0d |  |
| 3 | 1.1.1 | Global Database changes |  | 1h | 2005-02-10 08:00 | 2005-02-10 09:00 |  | 1.75d | 0d | start no earlier than 2005-02-10 08:00 |
| 4 | 1.1.2 | Restart Global |  | 1h | 2005-02-10 09:00 | 2005-02-10 10:00 | 3 | 1.75d | 0d |  |
| 5 | 1.1.3 | Restart Sessions |  | 1h | 2005-02-10 10:00 | 2005-02-10 11:00 | 4 | 1.75d | 0d |  |
| 6 | 1.1.4 | Login Users |  | 1h | 2005-02-10 11:00 | 2005-02-10 12:00 | 5 | 1.75d | 0d |  |
| 7 | 1.1.5 | Run Checkout script |  | 3h | 2005-02-10 13:00 | 2005-02-10 16:00 | 6 | 1.75d |  |  |
| 8 | 1.2 | Extent Map Changes(N/A) | milestone | 0d | 2005-02-11 08:00 | 2005-02-11 08:00 |  | 2.19d |  |  |
| 9 | 1.3 | **GC "A" side upgrade** |  | 1.25d | 2005-02-10 16:00 | 2005-02-14 09:00 |  | 1.75d |  |  |
| 10 | 1.3.1 | Upgrade codebase |  | 0.5h | 2005-02-10 16:00 | 2005-02-10 16:30 | 2 | 1.75d | 0d |  |
| 11 | 1.3.2 | Load IFR/Create channels |  | 1h | 2005-02-10 16:30 | 2005-02-11 08:30 | 10 | 1.75d | 0d |  |
| 12 | 1.3.3 | Restart processes and configure |  | 3h | 2005-02-11 08:30 | 2005-02-11 11:30 | 11 | 1.75d | 0d |  |
| 13 | 1.3.4 | ITG Checkout Script |  | 1h | 2005-02-11 11:30 | 2005-02-11 13:30 | 12 | 1.75d | 0d |  |
| 14 | 1.3.5 | 50 User Login Test |  | 1h | 2005-02-11 13:30 | 2005-02-11 14:30 | 13 | 1.75d | 0d |  |
| 15 | 1.3.6 | Product State Change |  | 0.5h | 2005-02-11 14:30 | 2005-02-11 15:00 | 14 | 1.75d | 0d |  |
| 16 | 1.3.7 | Perform Quote Stepup test |  | 3h | 2005-02-11 15:00 | 2005-02-14 09:00 | 15 | 1.75d | 0d |  |
| 17 | 1.4 | Quote Stepup Test - Milestone | milestone | 0d | 2005-02-14 09:00 | 2005-02-14 09:00 | 16 | 1.75d | 0d |  |
| 18 | 1.5 | **GC Failover to "B" side** |  | 0.5d | 2005-02-14 09:00 | 2005-02-14 14:00 |  | 1.75d | 0d |  |
| 19 | 1.5.1 | Failover GC to "B" side |  | 1h | 2005-02-14 09:00 | 2005-02-14 10:00 | 17 | 1.75d | 0d |  |
| 20 | 1.5.2 | Quote/Order traffic going through before/while/after the failover |  | 2h | 2005-02-14 10:00 | 2005-02-14 12:00 | 19 | 1.75d | 0d |  |
| 21 | 1.5.3 | ITG Checkout script on B side |  | 1h | 2005-02-14 13:00 | 2005-02-14 14:00 | 20 | 1.75d |  |  |
| 22 | 1.6 | **GC "B" side upgrade** |  | 0.56d | 2005-02-14 14:00 | 2005-02-15 09:30 |  | 1.75d | 0d |  |
| 23 | 1.6.1 | Upgrade codebase on B side |  | 0.5h | 2005-02-14 14:00 | 2005-02-14 14:30 | 18 | 1.75d | 0d |  |
| 24 | 1.6.2 | Restart processes and configure |  | 2h | 2005-02-14 14:30 | 2005-02-14 16:30 | 23 | 1.75d | 0d |  |
| 25 | 1.6.3 | Failover to B side |  | 1h | 2005-02-14 16:30 | 2005-02-15 08:30 | 24 | 1.75d | 0d |  |
| 26 | 1.6.4 | ITG Checkout Script |  | 1h | 2005-02-15 08:30 | 2005-02-15 09:30 | 25 | 1.75d |  |  |

| ID | WBS | Task | Duration | Start | Finish | Predecessors | Total slack |
| --- | --- | --- | --- | --- | --- | --- | --- |
| 27 | 1.7 | **Upgrade Hybrid BC** | 2.25d? | 2005-02-11 08:00 | 2005-02-15 10:00 |  | 1.75d |
| 28 | 1.7.1 | Upgrade codebase | 0.5h | 2005-02-15 09:30 | 2005-02-15 10:00 | 22 | 1.75d |
| 29 | 1.7.2 | Restart process and configure | 2h | 2005-02-11 08:00 | 2005-02-11 10:00 |  | 2d |
| 30 | 1.7.3 | ITG Checkout script | 1.5h | 2005-02-11 08:00 | 2005-02-11 09:30 |  | 2.06d |
| 31 | 1.7.4 | ITG Full regression script | 4h | 2005-02-11 08:00 | 2005-02-11 12:00 |  | 1.75d |
| 32 | 1.7.5 | Quote stepup - Multiclass - Milestone | 3h | 2005-02-11 08:00 | 2005-02-11 11:00 |  | 1.88d |
| 33 | 1.7.6 | Quote stepup - Single class- Milestone | 3h | 2005-02-11 08:00 | 2005-02-11 11:00 |  | 1.88d |
| 34 | 1.7.7 | Order Pef - Milestone | 1d? | 2005-02-11 08:00 | 2005-02-11 17:00 |  | 1.25d |
| 35 | 1.7.8 | Global Dependency Test | 1d? | 2005-02-11 08:00 | 2005-02-11 17:00 |  | 1.25d |
| 36 | 1.7.9 | Endurance Perf Test - 4 hour | 1d? | 2005-02-11 08:00 | 2005-02-11 17:00 |  | 1.25d |
| 37 | 1.8 | **Upgrade ONE_MAIN** | 4d | 2005-02-11 08:00 | 2005-02-16 17:00 |  | 0d |
| 38 | 1.8.1 | Upgrade codebase | 0.5d | 2005-02-11 08:00 | 2005-02-11 12:00 |  | 3.5d |
| 39 | 1.8.2 | Restart process and configuration | 2d | 2005-02-11 08:00 | 2005-02-14 17:00 |  | 2d |
| 40 | 1.8.3 | Order Test | 1h | 2005-02-11 08:00 | 2005-02-11 09:00 |  | 3.88d |
| 41 | 1.8.4 | ITG Checkout script | 1.5h | 2005-02-11 08:00 | 2005-02-11 09:30 |  | 3.81d |
| 42 | 1.8.5 | ITG Full regression script | 4d | 2005-02-11 08:00 | 2005-02-16 17:00 |  | 0d |
