Schedule from MS Project, 2006-04-24 to 2006-05-30, A marks actual dates.
Cognizant Technology Solutions

## Calendars

- Standard: Mon-Fri 08:00-12:00, 13:00-17:00; Sat-Sun off.

## Resources

| Resource |
| --- |
| Cognizant |
| 2 |
| CBOE |
| Piwnicki |
| Bobbie |

## Schedule

| ID | WBS | Task | Type | Duration | Start | Finish | Predecessors | Complete | Remaining | Baseline start | Baseline finish | Baseline duration | Total slack | Constraint | Resources | Work | Actual work |
| --- | --- | --- | --- | --- | --- | --- | --- | --- | --- | --- | --- | --- | --- | --- | --- | --- | --- |
| 1 | 1 | **Rollout Task** |  | 26.27d | 2006-04-24 08:00 A | 2006-05-30 10:10 |  | 99% | 0d | 2006-03-17 08:00 | 2006-03-30 13:25 | 9.55d | 0d |  |  | 650.67h | 650.67h |
| 2 | 1.1 | **Pre-Rollout Verification/Changes [If required]** |  | 0d | 2006-04-24 08:00 A | 2006-04-24 08:00 A |  | 100% |  | 2006-03-17 08:00 | 2006-03-17 08:00 | 0d |  |  |  |  |  |
| 3 | 1.1.1 | Database changes | milestone | 0h | 2006-04-24 08:00 A | 2006-04-24 08:00 A |  | 100% |  | 2006-03-17 08:00 | 2006-03-17 08:00 | 0h |  | start no earlier than 2006-04-24 08:00 | CBOE |  |  |
| 4 | 1.1.2 | Extent Map changes | milestone | 0h | 2006-04-24 08:00 A | 2006-04-24 08:00 A | 3 | 100% |  | 2006-03-17 08:00 | 2006-03-17 08:00 | 0h |  |  | CBOE |  |  |
| 5 | 1.1.3 | Version label verification on all boxes | milestone | 0h | 2006-04-24 08:00 A | 2006-04-24 08:00 A | 4 | 100% |  | 2006-03-17 08:00 | 2006-03-17 08:00 | 0h |  |  | CBOE |  |  |
| 6 | 1.1.4 | Check: Tier Lead has verified information and obtained a sign off | milestone | 0h | 2006-04-24 08:00 A | 2006-04-24 08:00 A | 3, 4, 5 | 100% |  | 2006-03-17 08:00 | 2006-03-17 08:00 | 0h |  |  | CBOE |  |  |
| 7 | 1.4 | **Install & perform tests on Hybrid BC A Side** |  | 4.42d | 2006-04-24 08:00 A | 2006-04-28 11:20 A | 2 | 100% |  | 2006-03-21 11:00 | 2006-03-24 09:50 | 2.85d |  |  | Cognizant | 115.17h | 115.17h |
| 8 | 1.10 | **Install Hybrid BC (A)** |  | 0.25d | 2006-04-24 08:00 A | 2006-04-24 10:00 A | 6 | 100% |  | 2006-03-21 11:00 | 2006-03-21 14:00 | 0.25d |  |  | Cognizant | 4h | 4h |
| 9 | 1.10.1 | Configuration and starting processes |  | 1h | 2006-04-24 08:00 A | 2006-04-24 09:00 A | 6 | 100% |  | 2006-03-21 11:00 | 2006-03-21 12:00 | 1h |  | start no earlier than 2006-04-24 08:00 | Cognizant | 1h | 1h |
| 10 | 1.10.2 | ITG Checkout script (W_MAIN Session) |  | 20min | 2006-04-24 09:00 A | 2006-04-24 09:20 A | 9 | 100% |  | 2006-03-21 13:00 | 2006-03-21 13:40 | 40min |  |  | Cognizant | 0.33h | 0.33h |
| 11 | 1.10.3 | Backup and Reporting |  | 20min | 2006-04-24 09:20 A | 2006-04-24 09:40 A | 10 | 100% |  | 2006-03-21 13:40 | 2006-03-21 14:00 | 20min |  |  | Cognizant | 0.33h | 0.33h |
| 12 | 1.2.1.4 | Check: Sign Off on Checkout Scripts, Logs and Results |  | 20min | 2006-04-24 09:40 A | 2006-04-24 10:00 A | 11 | 100% |  | 2006-03-21 14:00 | 2006-03-21 14:00 | 0h |  |  | CBOE | 0.33h | 0.33h |
| 13 | 1.2.2 | **Global Dependency Test** |  | 0.17d | 2006-04-24 10:00 A | 2006-04-24 11:20 A | 8 | 100% |  | 2006-03-21 14:00 | 2006-03-21 14:50 | 0.1d |  |  | Cognizant | 2.67h | 2.67h |
| 14 | 1.2.2.1 | Test Execution |  | 40min | 2006-04-24 10:00 A | 2006-04-24 10:40 A | 12 | 100% |  | 2006-03-21 14:00 | 2006-03-21 14:30 | 30min |  |  | Cognizant | 0.67h | 0.67h |
| 15 | 1.2.2.2 | Log Backup and Reporting |  | 20min | 2006-04-24 10:40 A | 2006-04-24 11:00 A | 14 | 100% |  | 2006-03-21 14:30 | 2006-03-21 14:50 | 20min |  |  | Cognizant | 0.33h | 0.33h |
| 16 | 1.2.2.3 | Check:Log and Results verification |  | 20min | 2006-04-24 11:00 A | 2006-04-24 11:20 A | 15 | 100% |  | 2006-03-21 14:50 | 2006-03-21 14:50 | 0h |  |  | CBOE | 0.33h | 0.33h |
| 17 | 1.2.3 | **Mult Class Quote Step-up with Quotes only (Scenario 0)** |  | 0.3d | 2006-04-24 11:20 A | 2006-04-24 14:45 A | 13 | 100% |  |  |  |  |  |  | Cognizant | 4.83h | 4.83h |
| 18 | 1.2.3.1 | BC Cleanup, Initial Driver Setup, |  | 20min | 2006-04-24 11:20 A | 2006-04-24 11:40 A | 16 | 100% |  |  |  |  |  | start no earlier than 2006-04-24 08:00 | Cognizant | 0.33h | 0.33h |
| 19 | 1.2.3.2 | Test Execution for No BOTR |  | 1h | 2006-04-24 11:40 A | 2006-04-24 13:40 A | 18 | 100% |  |  |  |  |  | start no earlier than 2006-04-24 08:00 | Cognizant | 1h | 1h |
| 20 | 1.2.3.3 | endOfPerformance and Backup |  | 30min | 2006-04-24 13:40 A | 2006-04-24 14:10 A | 19 | 100% |  |  |  |  |  |  | Cognizant | 0.5h | 0.5h |
| 21 | 1.2.3.4 | Reporting through KR site |  | 15min | 2006-04-24 14:10 A | 2006-04-24 14:25 A | 20 | 100% |  |  |  |  |  |  | Cognizant | 0.25h | 0.25h |
| 22 | 1.2.3.5 | Check: Sign Off on Logs and Results |  | 20min | 2006-04-24 14:25 A | 2006-04-24 14:45 A | 21 | 100% |  |  |  |  |  |  | CBOE | 0.33h | 0.33h |
| 23 | 1.2.4 | **Hybrid test scenario 5 (Product State Change Test)** |  | 0.23d | 2006-04-24 14:45 A | 2006-04-24 16:35 A | 17 | 100% |  | 2006-03-21 14:50 | 2006-03-21 16:20 | 0.19d |  |  | Cognizant | 3.67h | 3.67h |
| 24 | 1.2.4.1 | BC Cleanup, Initial Driver Setup, |  | 20min | 2006-04-24 14:45 A | 2006-04-24 15:05 A | 22 | 100% |  | 2006-03-21 14:50 | 2006-03-21 15:10 | 20min |  |  | Cognizant | 0.33h | 0.33h |
| 25 | 1.2.4.2 | Test Execution - Global Server Bounce |  | 40min | 2006-04-24 15:05 A | 2006-04-24 15:45 A | 24 | 100% |  | 2006-03-21 15:10 | 2006-03-21 15:50 | 40min |  |  | Cognizant | 0.67h | 0.67h |
| 26 | 1.2.4.3 | Monitor and Backup logs |  | 20min | 2006-04-24 15:45 A | 2006-04-24 16:05 A | 25 | 100% |  | 2006-03-21 15:50 | 2006-03-21 16:10 | 20min |  |  | Cognizant | 0.33h | 0.33h |
| 27 | 1.2.4.4 | Reporting through KR site |  | 10min | 2006-04-24 16:05 A | 2006-04-24 16:15 A | 26 | 100% |  | 2006-03-21 16:10 | 2006-03-21 16:20 | 10min |  |  | Cognizant | 0.17h | 0.17h |
| 28 | 1.2.4.5 | Check: Sign Off on Logs and Results |  | 20min | 2006-04-24 16:15 A | 2006-04-24 16:35 A | 27 | 100% |  | 2006-03-21 16:20 | 2006-03-21 16:20 | 0h |  |  | CBOE | 0.33h | 0.33h |

| ID | WBS | Task | Type | Duration | Start | Finish | Predecessors | Complete | Baseline start | Baseline finish | Baseline duration | Constraint | Resources | Work | Actual work |
| --- | --- | --- | --- | --- | --- | --- | --- | --- | --- | --- | --- | --- | --- | --- | --- |
| 29 | 1.12 | **Multi-class Quote step-up test with BOTR [Scenario 3]** |  | 0.43d | 2006-04-24 16:35 A | 2006-04-25 11:00 A | 23 | 100% | 2006-03-21 16:20 | 2006-03-22 10:25 | 0.39d |  | Cognizant | 6.83h | 6.83h |
| 30 | 1.12.1 | BC Cleanup, Initial Driver Setup, |  | 20min | 2006-04-24 16:35 A | 2006-04-24 16:55 A | 28 | 100% | 2006-03-21 16:20 | 2006-03-21 16:40 | 20min |  | Cognizant | 0.33h | 0.33h |
| 31 | 1.12.2 | Test Execution for No BOTR |  | 1h | 2006-04-24 16:55 A | 2006-04-25 08:55 A | 30 | 100% | 2006-03-21 16:40 | 2006-03-22 08:40 | 1h |  | Cognizant | 1h | 1h |
| 32 | 1.12.3 | BOTR from 4000 to 16000 |  | 30min | 2006-04-25 08:55 A | 2006-04-25 09:25 A | 31 | 100% | 2006-03-22 08:40 | 2006-03-22 09:10 | 30min |  | Cognizant | 0.5h | 0.5h |
| 33 | 1.12.4 | endOfPerformance and Backup |  | 45min | 2006-04-25 09:25 A | 2006-04-25 10:10 A | 32 | 100% | 2006-03-22 09:10 | 2006-03-22 09:55 | 45min |  | Cognizant | 0.75h | 0.75h |
| 34 | 1.12.5 | Reporting through KR site |  | 30min | 2006-04-25 10:10 A | 2006-04-25 10:40 A | 33 | 100% | 2006-03-22 09:55 | 2006-03-22 10:25 | 30min |  | Cognizant | 0.5h | 0.5h |
| 35 | 1.2.5.6 | Check: Sign Off on Logs and Results |  | 20min | 2006-04-25 10:40 A | 2006-04-25 11:00 A | 34 | 100% | 2006-03-22 10:25 | 2006-03-22 10:25 | 0h |  | CBOE | 0.33h | 0.33h |
| 36 | 1.13 | **Single-class Quote step-up test with BOTR [Scenario 1]** |  | 0.39d | 2006-04-25 11:00 A | 2006-04-25 15:05 A | 29 | 100% | 2006-03-22 10:25 | 2006-03-22 14:10 | 0.34d |  | Cognizant | 6.17h | 6.17h |
| 37 | 1.13.1 | BC Cleanup, Initial Driver Setup, |  | 20min | 2006-04-25 11:00 A | 2006-04-25 11:20 A | 35 | 100% | 2006-03-22 10:25 | 2006-03-22 10:45 | 20min |  | Cognizant | 0.33h | 0.33h |
| 38 | 1.13.2 | Test Execution for No BOTR |  | 1h | 2006-04-25 11:20 A | 2006-04-25 13:20 A | 37 | 100% | 2006-03-22 10:45 | 2006-03-22 11:45 | 1h |  | Cognizant | 1h | 1h |
| 39 | 1.13.3 | BOTR 16000 |  | 10min | 2006-04-25 13:20 A | 2006-04-25 13:30 A | 38 | 100% | 2006-03-22 11:45 | 2006-03-22 11:55 | 10min |  | Cognizant | 0.17h | 0.17h |
| 40 | 1.13.4 | endOfPerformance and Backup |  | 45min | 2006-04-25 13:30 A | 2006-04-25 14:15 A | 39 | 100% | 2006-03-22 11:55 | 2006-03-22 13:40 | 45min |  | Cognizant | 0.75h | 0.75h |
| 41 | 1.13.5 | Reporting through KR site |  | 30min | 2006-04-25 14:15 A | 2006-04-25 14:45 A | 40 | 100% | 2006-03-22 13:40 | 2006-03-22 14:10 | 30min |  | Cognizant | 0.5h | 0.5h |
| 42 | 1.2.6.6 | Check: Sign Off On Logs and Results |  | 20min | 2006-04-25 14:45 A | 2006-04-25 15:05 A | 41 | 100% | 2006-03-22 14:10 | 2006-03-22 14:10 | 0h |  | CBOE | 0.33h | 0.33h |
| 43 | 1.14 | **Multi-class Order step-up test [Scenario 4]** |  | 1d | 2006-04-24 08:00 A | 2006-04-24 17:00 A | 36 | 100% | 2006-03-22 14:10 | 2006-03-22 16:05 | 0.24d |  | Cognizant | 9.33h | 9.33h |
| 44 | 1.14.1 | BC Cleanup, Initial Driver Setup, |  | 20min | 2006-04-24 08:00 A | 2006-04-24 08:20 A | 42 | 100% | 2006-03-22 14:10 | 2006-03-22 14:30 | 20min | start no earlier than 2006-04-26 08:00 | Cognizant | 0.33h | 0.33h |
| 45 | 1.14.2 | Test Execution for No BOTR |  | 1h | 2006-04-24 08:00 A | 2006-04-24 09:00 A | 44 | 100% | 2006-03-22 14:30 | 2006-03-22 15:30 | 1h |  | Cognizant | 1h | 1h |
| 46 | 1.14.3 | endOfPerformance and Backup | milestone | 0min | 2006-04-24 17:00 A | 2006-04-24 17:00 A | 45 | 100% | 2006-03-22 15:30 | 2006-03-22 15:50 | 20min |  | Cognizant |  |  |
| 47 | 1.14.4 | Reporting through KR site | milestone | 0min | 2006-04-24 17:00 A | 2006-04-24 17:00 A | 46 | 100% | 2006-03-22 15:50 | 2006-03-22 16:05 | 15min |  | Cognizant |  |  |
| 48 | 1.2.7.5 | Check: Sign Off on Logs and Results | milestone | 0min | 2006-04-24 17:00 A | 2006-04-24 17:00 A | 47 | 100% | 2006-03-22 16:05 | 2006-03-22 16:05 | 0h |  | CBOE |  |  |
| 49 | 1.15 | **Hybrid BC failover (new release to old release)** |  | 1d | 2006-04-24 08:00 A | 2006-04-24 17:00 A | 43 | 100% | 2006-03-23 16:05 | 2006-03-24 09:50 | 0.34d |  | Cognizant | 8.67h | 8.67h |
| 50 | 1.2.8.1 | BC Cleanup start A Side as Master |  | 20min | 2006-04-24 08:00 A | 2006-04-24 08:20 A | 48 | 100% | 2006-03-23 16:05 | 2006-03-23 16:25 | 20min |  | Cognizant | 0.33h | 0.33h |
| 51 | 1.15.1 | Initial setup for test Drivers (starting processes on BC Slave.) |  | 20min | 2006-04-24 08:00 A | 2006-04-24 08:20 A | 50 | 100% | 2006-03-23 16:25 | 2006-03-23 16:50 | 25min |  | Cognizant | 0.33h | 0.33h |
| 52 | 1.15.2 | Quote/Order BC20 Hybrid traffic going before/during/after failover. Test Execution | milestone | 0min | 2006-04-24 17:00 A | 2006-04-24 17:00 A | 51 | 100% | 2006-03-23 16:50 | 2006-03-24 08:20 | 30min |  | Cognizant |  |  |
| 53 | 1.15.3 | ITG Checkout script for W_MAIN | milestone | 0min | 2006-04-24 17:00 A | 2006-04-24 17:00 A | 52 | 100% | 2006-03-24 08:20 | 2006-03-24 09:00 | 40min |  | Cognizant |  |  |
| 54 | 1.15.4 | Backup for Failover and ITG Checkout | milestone | 0min | 2006-04-24 17:00 A | 2006-04-24 17:00 A | 53 | 100% | 2006-03-24 09:00 | 2006-03-24 09:20 | 20min |  | Cognizant |  |  |
| 55 | 1.15.5 | Generate Report for Failover Timings for all BC Processes (taking time from log files) | milestone | 0min | 2006-04-24 17:00 A | 2006-04-24 17:00 A | 54 | 100% | 2006-03-24 09:20 | 2006-03-24 09:50 | 30min |  | Cognizant |  |  |
| 56 | 1.2.8.7 | Check: Sign Off on Checkout Scripts, Logs and Results | milestone | 0min | 2006-04-24 17:00 A | 2006-04-24 17:00 A | 55 | 100% | 2006-03-24 09:50 | 2006-03-24 09:50 | 0h |  | CBOE |  |  |

| ID | WBS | Task | Type | Duration | Start | Finish | Predecessors | Complete | Baseline start | Baseline finish | Baseline duration | Constraint | Resources | Work | Actual work |
| --- | --- | --- | --- | --- | --- | --- | --- | --- | --- | --- | --- | --- | --- | --- | --- |
| 57 | 1.15 | **Hybrid BC double failover (new to old to new release)** |  | 0d | 2006-04-24 17:00 A | 2006-04-24 17:00 A | 49 | 100% | 2006-03-23 16:05 | 2006-03-24 09:50 | 0.34d |  | Cognizant |  |  |
| 58 | 1.2.9.1 | BC Cleanup start A Side as Master | milestone | 0min | 2006-04-24 17:00 A | 2006-04-24 17:00 A | 56 | 100% | 2006-03-23 16:05 | 2006-03-23 16:25 | 20min | start no earlier than 2006-04-27 08:00 | Cognizant |  |  |
| 59 | 1.15.1 | Initial setup for test Drivers (starting processes on BC Slave.) | milestone | 0min | 2006-04-24 17:00 A | 2006-04-24 17:00 A | 58 | 100% | 2006-03-23 16:25 | 2006-03-23 16:50 | 25min |  | Cognizant |  |  |
| 60 | 1.15.2 | Quote/Order BC20 Hybrid traffic going before/during/after failover. Test Execution | milestone | 0min | 2006-04-24 17:00 A | 2006-04-24 17:00 A | 59 | 100% | 2006-03-23 16:50 | 2006-03-24 08:20 | 30min |  | Cognizant |  |  |
| 61 | 1.15.3 | ITG Checkout script for W_MAIN | milestone | 0min | 2006-04-24 17:00 A | 2006-04-24 17:00 A | 60 | 100% | 2006-03-24 08:20 | 2006-03-24 09:00 | 40min |  | Cognizant |  |  |
| 62 | 1.2.9.5 | Start A side as slave | milestone | 0min | 2006-04-24 17:00 A | 2006-04-24 17:00 A | 61 | 100% |  |  |  |  | Cognizant |  |  |
| 63 | 1.15.2 | Quote/Order BC20 Hybrid traffic going before/during/after failover. Test Execution | milestone | 0min | 2006-04-24 17:00 A | 2006-04-24 17:00 A | 62 | 100% | 2006-03-23 16:50 | 2006-03-24 08:20 | 30min |  | Cognizant |  |  |
| 64 | 1.15.3 | ITG Checkout script for W_MAIN | milestone | 0min | 2006-04-24 17:00 A | 2006-04-24 17:00 A | 63 | 100% | 2006-03-24 08:20 | 2006-03-24 09:00 | 40min |  | Cognizant |  |  |
| 65 | 1.15.4 | Backup for Failover and ITG Checkout | milestone | 0min | 2006-04-24 17:00 A | 2006-04-24 17:00 A | 64 | 100% | 2006-03-24 09:00 | 2006-03-24 09:20 | 20min |  | Cognizant |  |  |
| 66 | 1.15.5 | Generate Report for Failover Timings for all BC Processes (taking time from log files) | milestone | 0min | 2006-04-24 17:00 A | 2006-04-24 17:00 A | 65 | 100% | 2006-03-24 09:20 | 2006-03-24 09:50 | 30min |  | Cognizant |  |  |
| 67 | 1.2.9.10 | Check: Sign Off on Checkout Scripts, Logs and Results | milestone | 0min | 2006-04-24 17:00 A | 2006-04-24 17:00 A | 66 | 100% | 2006-03-24 09:50 | 2006-03-24 09:50 | 0h |  | CBOE |  |  |
| 68 | 1.2.10 | **HAL Scenarios** |  | 3.42d | 2006-04-25 08:00 A | 2006-04-28 11:20 A | 57 | 100% |  |  |  |  | Cognizant | 33.67h | 33.67h |
| 69 | 1.2.10.1 | Scenario 1: All Orders Trade - Baseline |  | 1.5h | 2006-04-25 08:00 A | 2006-04-25 09:30 A | 67 | 100% |  |  |  |  | Cognizant | 1.5h | 1.5h |
| 70 | 1.2.10.2 | Scenario 2: All Orders Book No Trade - Baseline |  | 1.5h | 2006-04-25 09:30 A | 2006-04-25 11:00 A | 69 | 100% |  |  |  |  | Cognizant | 1.5h | 1.5h |
| 71 | 1.2.10.3 | Scenario 3: All Orders Auction But No Trades |  | 1.5h | 2006-04-28 08:00 A | 2006-04-28 09:30 A | 70 | 100% |  |  |  | start no earlier than 2006-04-28 08:00 | Cognizant | 1.5h | 1.5h |
| 72 | 1.2.10.4 | Scenario 4: All Orders Auction and Trade |  | 1.5h | 2006-04-28 09:30 A | 2006-04-28 11:00 A | 71 | 100% |  |  |  |  | Cognizant | 1.5h | 1.5h |
| 73 | 1.2.10.5 | Check: Sign Off on Logs and Results |  | 20min | 2006-04-28 11:00 A | 2006-04-28 11:20 A | 72 | 100% |  |  |  |  | CBOE | 0.33h | 0.33h |
| 74 | 1.5 | **Install & perform tests on Hybrid BC B Side** |  | 23d | 2006-04-25 08:00 A | 2006-05-25 17:00 A | 7 | 100% | 2006-03-24 09:50 | 2006-03-24 15:35 | 0.59d |  | Cognizant | 471h | 471h |
| 75 | 1.16 | **Install Hybrid BC "B" side** |  | 1d | 2006-04-25 08:00 A | 2006-04-25 17:00 A | 68 | 100% | 2006-03-24 09:50 | 2006-03-24 13:10 | 0.29d |  | Cognizant | 8.33h | 8.33h |
| 76 | 1.3.1.1 | Cleanup |  | 20min | 2006-04-25 08:00 A | 2006-04-25 08:20 A | 73 | 100% | 2006-03-24 09:50 | 2006-03-24 10:10 | 20min |  | Cognizant | 0.33h | 0.33h |
| 77 | 1.16.1 | Configuration and starting processes | milestone | 0h | 2006-04-25 17:00 A | 2006-04-25 17:00 A | 76 | 100% | 2006-03-24 10:10 | 2006-03-24 11:10 | 1h |  | Cognizant |  |  |
| 78 | 1.16.2 | ITG Checkout script (W_MAIN and ONE_MAIN Session) | milestone | 0min | 2006-04-25 17:00 A | 2006-04-25 17:00 A | 77 | 100% | 2006-03-24 11:10 | 2006-03-24 11:50 | 40min |  | Cognizant |  |  |
| 79 | 1.16.3 | Backup and Reporting | milestone | 0min | 2006-04-25 17:00 A | 2006-04-25 17:00 A | 78 | 100% | 2006-03-24 11:50 | 2006-03-24 13:10 | 20min |  | Cognizant |  |  |
| 80 | 1.3.1.5 | Check: Sign Off on Checkout Scripts, Logs and Results | milestone | 0min | 2006-04-25 17:00 A | 2006-04-25 17:00 A | 79 | 100% | 2006-03-24 13:10 | 2006-03-24 13:10 | 0h |  | CBOE |  |  |

| ID | WBS | Task | Type | Duration | Start | Finish | Predecessors | Complete | Baseline start | Baseline finish | Baseline duration | Constraint | Resources | Work | Actual work |
| --- | --- | --- | --- | --- | --- | --- | --- | --- | --- | --- | --- | --- | --- | --- | --- |
| 81 | 1.17 | **Hybrid BC failover (new release to new release)** |  | 22d | 2006-04-25 17:00 A | 2006-05-25 17:00 A | 75 | 100% | 2006-03-24 13:10 | 2006-03-24 15:35 | 0.3d |  | Cognizant | 306h | 306h |
| 82 | 1.17.1 | Initial setup for test Drivers (starting processes on BC Slave.) | milestone | 0min | 2006-04-25 17:00 A | 2006-04-25 17:00 A | 80 | 100% | 2006-03-24 13:10 | 2006-03-24 13:35 | 25min |  | Cognizant |  |  |
| 83 | 1.17.2 | Quote/Order BC20 Hybrid traffic going before/during/after failover. Test Execution | milestone | 0min | 2006-04-25 17:00 A | 2006-04-25 17:00 A | 82 | 100% | 2006-03-24 13:35 | 2006-03-24 14:05 | 30min |  | Cognizant |  |  |
| 84 | 1.17.3 | ITG Checkout script (for W_MAIN Session) | milestone | 0min | 2006-04-25 17:00 A | 2006-04-25 17:00 A | 83 | 100% | 2006-03-24 14:05 | 2006-03-24 14:45 | 40min |  | Cognizant |  |  |
| 85 | 1.17.4 | Backup for Failover and ITG Checkout | milestone | 0min | 2006-04-25 17:00 A | 2006-04-25 17:00 A | 84 | 100% | 2006-03-24 14:45 | 2006-03-24 15:05 | 20min |  | Cognizant |  |  |
| 86 | 1.17.5 | Generate Report for Failover Timings for all BC Processes (taking time from log files) |  | 9120min | 2006-05-01 08:00 A | 2006-05-25 17:00 A | 85 | 100% | 2006-03-24 15:05 | 2006-03-24 15:35 | 30min | start no earlier than 2006-05-01 08:00 | Cognizant | 152h | 152h |
| 87 | 1.3.2.6 | Check: Sign Off on Checkout Scripts,Logs and Results | milestone | 0min | 2006-04-25 17:00 A | 2006-04-25 17:00 A | 86 | 100% | 2006-03-24 15:35 | 2006-03-24 15:35 | 0h |  | CBOE |  |  |
| 88 | 1.3.3 | Start/End session and Failover Timings - BC Failover Test scenario | milestone | 0h | 2006-04-25 17:00 A | 2006-04-25 17:00 A | 81 | 100% |  |  |  |  | Cognizant |  |  |
| 89 | 1.6 | **Install & perform tests on ONE_MAIN BC A Side** |  | 1.15d | 2006-05-26 08:00 A | 2006-05-29 09:10 A | 74 | 100% | 2006-03-24 15:35 | 2006-03-27 16:20 | 1.09d |  | Cognizant | 27.5h | 27.5h |
| 90 | 1.26 | **Install ONE_MAIN BC (A)** |  | 0.25d | 2006-05-26 08:00 A | 2006-05-26 10:00 A | 88 | 100% | 2006-03-24 15:35 | 2006-03-27 08:35 | 0.25d |  | Cognizant | 4h | 4h |
| 91 | 1.26.1 | Configuration and starting processes |  | 1h | 2006-05-26 08:00 A | 2006-05-26 09:00 A | 88 | 100% | 2006-03-24 15:35 | 2006-03-24 16:35 | 1h |  | Cognizant | 1h | 1h |
| 92 | 1.26.2 | ITG Checkout script (ONE_MAIN Session) |  | 20min | 2006-05-26 09:00 A | 2006-05-26 09:20 A | 91 | 100% | 2006-03-24 16:35 | 2006-03-27 08:15 | 40min |  | Cognizant | 0.33h | 0.33h |
| 93 | 1.26.3 | Backup and Reporting |  | 20min | 2006-05-26 09:20 A | 2006-05-26 09:40 A | 92 | 100% | 2006-03-27 08:15 | 2006-03-27 08:35 | 20min |  | Cognizant | 0.33h | 0.33h |
| 94 | 1.4.1.4 | Check: Sign Off on Checkout Scripts, Logs and Results |  | 20min | 2006-05-26 09:40 A | 2006-05-26 10:00 A | 93 | 100% | 2006-03-27 08:35 | 2006-03-27 08:35 | 0h |  | CBOE | 0.33h | 0.33h |
| 95 | 1.27 | **Multi-class Order step-up test for ONE_MAIN [Scenario 2]** |  | 0.27d | 2006-05-26 10:00 A | 2006-05-26 13:10 A | 90 | 100% | 2006-03-27 08:35 | 2006-03-27 10:25 | 0.23d |  | Cognizant | 4.33h | 4.33h |
| 96 | 1.27.1 | BC Cleanup, Initial Driver Setup, |  | 20min | 2006-05-26 10:00 A | 2006-05-26 10:20 A | 94 | 100% | 2006-03-27 08:35 | 2006-03-27 08:55 | 20min |  | Cognizant | 0.33h | 0.33h |
| 97 | 1.27.2 | Test Execution for No BOTR |  | 1h | 2006-05-26 10:20 A | 2006-05-26 11:20 A | 96 | 100% | 2006-03-27 08:55 | 2006-03-27 09:55 | 1h |  | Cognizant | 1h | 1h |
| 98 | 1.27.3 | endOfPerformance and Backup |  | 15min | 2006-05-26 11:20 A | 2006-05-26 11:35 A | 97 | 100% | 2006-03-27 09:55 | 2006-03-27 10:10 | 15min |  | Cognizant | 0.25h | 0.25h |
| 99 | 1.27.4 | Reporting through KR site |  | 15min | 2006-05-26 11:35 A | 2006-05-26 11:50 A | 98 | 100% | 2006-03-27 10:10 | 2006-03-27 10:25 | 15min |  | Cognizant | 0.25h | 0.25h |
| 100 | 1.4.2.5 | Check: Sign Off on Logs and Results |  | 20min | 2006-05-26 11:50 A | 2006-05-26 13:10 A | 99 | 100% | 2006-03-27 10:25 | 2006-03-27 10:25 | 0h |  | CBOE | 0.33h | 0.33h |
| 101 | 1.28 | **Multi-class Quote step-up test [Scenario 1]** |  | 0.31d | 2006-05-26 13:10 A | 2006-05-26 15:40 A | 95 | 100% | 2006-03-27 10:25 | 2006-03-27 13:35 | 0.27d |  | Cognizant | 5h | 5h |
| 102 | 1.28.1 | BC Cleanup, Initial Driver Setup, |  | 20min | 2006-05-26 13:10 A | 2006-05-26 13:30 A | 100 | 100% | 2006-03-27 10:25 | 2006-03-27 10:45 | 20min |  | Cognizant | 0.33h | 0.33h |
| 103 | 1.28.2 | Test Execution for No BOTR |  | 1h | 2006-05-26 13:30 A | 2006-05-26 14:30 A | 102 | 100% | 2006-03-27 10:45 | 2006-03-27 11:45 | 1h |  | Cognizant | 1h | 1h |
| 104 | 1.28.3 | endOfPerformance and Backup |  | 30min | 2006-05-26 14:30 A | 2006-05-26 15:00 A | 103 | 100% | 2006-03-27 11:45 | 2006-03-27 13:15 | 30min |  | Cognizant | 0.5h | 0.5h |
| 105 | 1.28.4 | Reporting through KR site |  | 20min | 2006-05-26 15:00 A | 2006-05-26 15:20 A | 104 | 100% | 2006-03-27 13:15 | 2006-03-27 13:35 | 20min |  | Cognizant | 0.33h | 0.33h |
| 106 | 1.4.3.5 | Check: Sign Off on Logs and Results |  | 20min | 2006-05-26 15:20 A | 2006-05-26 15:40 A | 105 | 100% | 2006-03-27 13:35 | 2006-03-27 13:35 | 0h |  | CBOE | 0.33h | 0.33h |

| ID | WBS | Task | Duration | Start | Finish | Predecessors | Complete | Baseline start | Baseline finish | Baseline duration | Constraint | Resources | Work | Actual work |
| --- | --- | --- | --- | --- | --- | --- | --- | --- | --- | --- | --- | --- | --- | --- |
| 107 | 1.30 | **Failover ONE_MAIN BC (New to Old)** | 0.31d | 2006-05-26 15:40 A | 2006-05-29 09:10 A | 101 | 100% | 2006-03-27 13:35 | 2006-03-27 16:20 | 0.34d |  | Cognizant | 5h | 5h |
| 108 | 1.4.4.1 | Cleanup | 20min | 2006-05-26 15:40 A | 2006-05-26 16:00 A | 106 | 100% | 2006-03-27 13:35 | 2006-03-27 13:55 | 20min |  | Cognizant | 0.33h | 0.33h |
| 109 | 1.30.1 | Initial setup for test Drivers (starting processes on BC Slave.) | 20min | 2006-05-26 16:00 A | 2006-05-26 16:20 A | 108 | 100% | 2006-03-27 13:55 | 2006-03-27 14:20 | 25min |  | Cognizant | 0.33h | 0.33h |
| 110 | 1.30.2 | Quote/Order ONE_MAIN traffic going before/during/after failover. Test Execution | 20min | 2006-05-26 16:20 A | 2006-05-26 16:40 A | 109 | 100% | 2006-03-27 14:20 | 2006-03-27 14:50 | 30min |  | Cognizant | 0.33h | 0.33h |
| 111 | 1.30.3 | ITG Checkout script (for ONE_MAIN Session) | 20min | 2006-05-26 16:40 A | 2006-05-26 17:00 A | 110 | 100% | 2006-03-27 14:50 | 2006-03-27 15:30 | 40min |  | Cognizant | 0.33h | 0.33h |
| 112 | 1.30.4 | Backup for Failover and ITG Checkout | 20min | 2006-05-29 08:00 A | 2006-05-29 08:20 A | 111 | 100% | 2006-03-27 15:30 | 2006-03-27 15:50 | 20min |  | Cognizant | 0.33h | 0.33h |
| 113 | 1.30.5 | Generate Report for Failover Timings for all BC Processes (taking time from log files) | 30min | 2006-05-29 08:20 A | 2006-05-29 08:50 A | 112 | 100% | 2006-03-27 15:50 | 2006-03-27 16:20 | 30min |  | Cognizant | 0.5h | 0.5h |
| 114 | 1.4.4.7 | Check: Sign Off on Checkout Scripts,Logs and Results | 20min | 2006-05-29 08:50 A | 2006-05-29 09:10 A | 113 | 100% | 2006-03-27 16:20 | 2006-03-27 16:20 | 0h |  | CBOE | 0.33h | 0.33h |
| 115 | 1.7 | **Install & perform tests on ONE_MAIN BC B Side** | 1.12d | 2006-05-29 09:10 A | 2006-05-30 10:10 A | 89 | 100% | 2006-03-27 16:20 | 2006-03-28 13:05 | 0.59d |  | Cognizant | 27h | 27h |
| 116 | 1.31 | **Install ONE_MAIN BC (B)** | 0.25d | 2006-05-29 09:10 A | 2006-05-29 11:10 A | 107 | 100% | 2006-03-27 16:20 | 2006-03-28 09:20 | 0.25d |  | Cognizant | 4h | 4h |
| 117 | 1.31.1 | Configuration and starting processes | 1h | 2006-05-29 09:10 A | 2006-05-29 10:10 A | 114 | 100% | 2006-03-27 16:20 | 2006-03-28 08:20 | 1h | finish no earlier than 2006-04-26 17:00 | Cognizant | 1h | 1h |
| 118 | 1.31.2 | ITG Checkout script (ONE_MAIN Session) | 20min | 2006-05-29 10:10 A | 2006-05-29 10:30 A | 117 | 100% | 2006-03-28 08:20 | 2006-03-28 09:00 | 40min |  | Cognizant | 0.33h | 0.33h |
| 119 | 1.31.3 | Backup and Reporting | 20min | 2006-05-29 10:30 A | 2006-05-29 10:50 A | 118 | 100% | 2006-03-28 09:00 | 2006-03-28 09:20 | 20min |  | Cognizant | 0.33h | 0.33h |
| 120 | 1.5.1.4 | Check: Sign Off on Checkout Scripts, Logs and Results | 20min | 2006-05-29 10:50 A | 2006-05-29 11:10 A | 119 | 100% | 2006-03-28 09:20 | 2006-03-28 09:20 | 0h |  | CBOE | 0.33h | 0.33h |
| 121 | 1.5.2 | **Failover ONE_MAIN BC (New to New)** | 0.88d | 2006-05-29 11:10 A | 2006-05-30 10:10 A | 116 | 100% | 2006-03-28 09:20 | 2006-03-28 13:05 | 0.34d |  | Cognizant | 14h | 14h |
| 122 | 1.5.2.1 | Cleanup | 290min | 2006-05-29 11:10 A | 2006-05-29 17:00 A | 120 | 100% | 2006-03-28 09:20 | 2006-03-28 09:40 | 20min | finish no earlier than 2006-05-29 17:00 | Cognizant | 4.83h | 4.83h |
| 123 | 1.5.2.2 | Initial setup for test Drivers (starting processes on BC Slave.) | 20min | 2006-05-30 08:00 A | 2006-05-30 08:20 A | 122 | 100% | 2006-03-28 09:40 | 2006-03-28 10:05 | 25min |  | Cognizant | 0.33h | 0.33h |
| 124 | 1.5.2.3 | Quote/Order ONE_MAIN traffic going before/during/after failover. Test Execution | 20min | 2006-05-30 08:20 A | 2006-05-30 08:40 A | 123 | 100% | 2006-03-28 10:05 | 2006-03-28 10:35 | 30min | start no earlier than 2006-04-26 08:00 | Cognizant | 0.33h | 0.33h |
| 125 | 1.5.2.4 | ITG Checkout script (ONE_MAIN Session) | 20min | 2006-05-30 08:40 A | 2006-05-30 09:00 A | 124 | 100% | 2006-03-28 10:35 | 2006-03-28 11:15 | 40min |  | Cognizant | 0.33h | 0.33h |
| 126 | 1.5.2.5 | Backup for Failover and ITG Checkout | 20min | 2006-05-30 09:00 A | 2006-05-30 09:20 A | 125 | 100% | 2006-03-28 11:15 | 2006-03-28 11:35 | 20min |  | Cognizant | 0.33h | 0.33h |
| 127 | 1.5.2.6 | Generate Report for Failover Timings for all BC Processes (taking time from log files) | 30min | 2006-05-30 09:20 A | 2006-05-30 09:50 A | 126 | 100% | 2006-03-28 11:35 | 2006-03-28 13:05 | 30min |  | Cognizant | 0.5h | 0.5h |
| 128 | 1.5.2.7 | Check: Sign Off on Checkout Scripts,Logs and Results | 20min | 2006-05-30 09:50 A | 2006-05-30 10:10 A | 127 | 100% | 2006-03-28 13:05 | 2006-03-28 13:05 | 0h |  | CBOE | 0.33h | 0.33h |
| 129 | 1.6 | **4 Hour Endurance Test** | 0.5d | 2006-04-26 08:00 A | 2006-04-26 12:00 A | 115 | 100% | 2006-03-28 13:05 | 2006-03-29 10:05 | 0.75d |  | Cognizant | 10h | 10h |
| 130 | 1.6.1 | Cleanup for W_MAIN and ONE_MAIN BC | 20min | 2006-04-26 08:00 A | 2006-04-26 08:20 A | 128 | 100% | 2006-03-28 13:05 | 2006-03-28 13:25 | 20min |  | Cognizant | 0.33h | 0.33h |
| 131 | 1.6.2 | Driver setup | 10min | 2006-04-26 08:00 A | 2006-04-26 08:10 A | 130 | 100% | 2006-03-28 13:25 | 2006-03-28 13:45 | 20min |  | Cognizant | 0.17h | 0.17h |
| 132 | 1.6.3 | CAS bounce | 30min | 2006-04-26 08:00 A | 2006-04-26 08:30 A | 131 | 100% | 2006-03-28 13:45 | 2006-03-28 14:05 | 20min |  | Cognizant | 0.5h | 0.5h |
| 133 | 1.6.4 | 4 hour Sanity Check | 4h | 2006-04-26 08:00 A | 2006-04-26 12:00 A | 132 | 100% | 2006-03-28 14:05 | 2006-03-29 09:05 | 4h |  | Cognizant | 4h | 4h |
| 134 | 1.6.5 | endOfPerformance and Backup and Reporting | 30min | 2006-04-26 08:00 A | 2006-04-26 08:30 A | 133 | 100% | 2006-03-29 09:05 | 2006-03-29 10:05 | 1h |  | Cognizant | 0.5h | 0.5h |
| 135 | 1.6.6 | Check: Sign Off on Logs and Results | 30min | 2006-04-26 08:00 A | 2006-04-26 08:30 A | 134 | 100% | 2006-03-29 10:05 | 2006-03-29 10:05 | 0h |  | CBOE | 0.5h | 0.5h |

| ID | WBS | Task | Type | Duration | Start | Finish | Predecessors | Baseline start | Baseline finish | Baseline duration | Total slack | Free slack | Resources |
| --- | --- | --- | --- | --- | --- | --- | --- | --- | --- | --- | --- | --- | --- |
| 136 | 1.7 | **Check: Overall Verification** |  | 0d | 2006-04-26 12:00 | 2006-04-26 12:00 | 129 | 2006-03-30 13:25 | 2006-03-30 13:25 | 0d | 23.77d |  | CBOE |
| 137 | 1.7.1 | All Results Signed Off | milestone | 0h | 2006-04-26 12:00 | 2006-04-26 12:00 | 135 | 2006-03-30 13:25 | 2006-03-30 13:25 | 0h | 23.77d | 0d | CBOE |
| 138 | 1.7.2 | All Tests Completed | milestone | 0h | 2006-04-26 12:00 | 2006-04-26 12:00 | 137 | 2006-03-30 13:25 | 2006-03-30 13:25 | 0h | 23.77d | 0d | CBOE |
| 139 | 1.7.3 | Results Approved by Paul and Respective Groups | milestone | 0h | 2006-04-26 12:00 | 2006-04-26 12:00 | 138 | 2006-03-30 13:25 | 2006-03-30 13:25 | 0h | 23.77d |  | CBOE |
