Schedule from MS Project, 2006-04-24 to 2006-05-03.
Cognizant Technology Solutions

## Calendars

- Standard: Mon-Fri 08:00-12:00, 13:00-17:00; Sat-Sun off.

## Resources

| Resource |
| --- |
| Cognizant |
| 2 |
| CBOE |
| Piwnicki |
| Bobbie |

## Schedule

| ID | WBS | Task | Type | Duration | Start | Finish | Predecessors | Baseline start | Baseline finish | Baseline duration | Total slack | Free slack | Constraint | Resources | Work |
| --- | --- | --- | --- | --- | --- | --- | --- | --- | --- | --- | --- | --- | --- | --- | --- |
| 1 | 1 | **Rollout Task** |  | 7.85d | 2006-04-24 08:00 | 2006-05-03 15:50 |  | 2006-03-17 08:00 | 2006-03-30 13:25 | 9.55d | 0d |  |  |  | 167.92h |
| 2 | 1.1 | **Pre-Rollout Verification/Changes [If required]** |  | 0d | 2006-04-24 08:00 | 2006-04-24 08:00 |  | 2006-03-17 08:00 | 2006-03-17 08:00 | 0d | 0.89d | 0d |  |  |  |
| 3 | 1.1.1 | Database changes | milestone | 0h | 2006-04-24 08:00 | 2006-04-24 08:00 |  | 2006-03-17 08:00 | 2006-03-17 08:00 | 0h | 0.65d | 0d | start no earlier than 2006-04-24 08:00 | CBOE |  |
| 4 | 1.1.2 | Extent Map changes | milestone | 0h | 2006-04-24 08:00 | 2006-04-24 08:00 | 3 | 2006-03-17 08:00 | 2006-03-17 08:00 | 0h | 0.65d | 0d |  | CBOE |  |
| 5 | 1.1.3 | Version label verification on all boxes | milestone | 0h | 2006-04-24 08:00 | 2006-04-24 08:00 | 4 | 2006-03-17 08:00 | 2006-03-17 08:00 | 0h | 0.65d | 0d |  | CBOE |  |
| 6 | 1.1.4 | Check: Tier Lead has verified information and obtained a sign off | milestone | 0h | 2006-04-24 08:00 | 2006-04-24 08:00 | 3, 4, 5 | 2006-03-17 08:00 | 2006-03-17 08:00 | 0h | 0.65d | 0d |  | CBOE |  |
| 7 | 1.4 | **Install & perform tests on Hybrid BC A Side** |  | 4.42d | 2006-04-24 08:00 | 2006-04-28 11:20 | 2 | 2006-03-21 11:00 | 2006-03-24 09:50 | 2.85d | 0.08d | 0d |  | Cognizant | 94.42h |
| 8 | 1.10 | **Install Hybrid BC (A)** |  | 0.25d | 2006-04-24 08:00 | 2006-04-24 10:00 | 6 | 2006-03-21 11:00 | 2006-03-21 14:00 | 0.25d | 0.89d | 0d |  | Cognizant | 4h |
| 9 | 1.10.1 | Configuration and starting processes |  | 1h | 2006-04-24 08:00 | 2006-04-24 09:00 | 6 | 2006-03-21 11:00 | 2006-03-21 12:00 | 1h | 0.89d | 0d | start no earlier than 2006-04-24 08:00 | Cognizant | 1h |
| 10 | 1.10.2 | ITG Checkout script (W_MAIN Session) |  | 20min | 2006-04-24 09:00 | 2006-04-24 09:20 | 9 | 2006-03-21 13:00 | 2006-03-21 13:40 | 40min | 0.89d | 0d |  | Cognizant | 0.33h |
| 11 | 1.10.3 | Backup and Reporting |  | 20min | 2006-04-24 09:20 | 2006-04-24 09:40 | 10 | 2006-03-21 13:40 | 2006-03-21 14:00 | 20min | 0.89d | 0d |  | Cognizant | 0.33h |
| 12 | 1.2.1.4 | Check: Sign Off on Checkout Scripts, Logs and Results |  | 20min | 2006-04-24 09:40 | 2006-04-24 10:00 | 11 | 2006-03-21 14:00 | 2006-03-21 14:00 | 0h | 0.89d | 0d |  | CBOE | 0.33h |
| 13 | 1.2.2 | **Global Dependency Test** |  | 0.17d | 2006-04-24 10:00 | 2006-04-24 11:20 | 8 | 2006-03-21 14:00 | 2006-03-21 14:50 | 0.1d | 0.89d | 0d |  | Cognizant | 2.67h |
| 14 | 1.2.2.1 | Test Execution |  | 40min | 2006-04-24 10:00 | 2006-04-24 10:40 | 12 | 2006-03-21 14:00 | 2006-03-21 14:30 | 30min | 0.65d | 0d |  | Cognizant | 0.67h |
| 15 | 1.2.2.2 | Log Backup and Reporting |  | 20min | 2006-04-24 10:40 | 2006-04-24 11:00 | 14 | 2006-03-21 14:30 | 2006-03-21 14:50 | 20min | 0.65d | 0d |  | Cognizant | 0.33h |
| 16 | 1.2.2.3 | Check:Log and Results verification |  | 20min | 2006-04-24 11:00 | 2006-04-24 11:20 | 15 | 2006-03-21 14:50 | 2006-03-21 14:50 | 0h | 0.65d | 0d |  | CBOE | 0.33h |
| 17 | 1.2.3 | **Mult Class Quote Step-up with Quotes only (Scenario 0)** |  | 0.3d | 2006-04-24 11:20 | 2006-04-24 14:45 | 13 |  |  |  | 0.89d | 0d |  | Cognizant | 4.83h |
| 18 | 1.2.3.1 | BC Cleanup, Initial Driver Setup, |  | 20min | 2006-04-24 11:20 | 2006-04-24 11:40 | 16 |  |  |  | 0.65d | 0d | start no earlier than 2006-04-24 08:00 | Cognizant | 0.33h |
| 19 | 1.2.3.2 | Test Execution for No BOTR |  | 1h | 2006-04-24 11:40 | 2006-04-24 13:40 | 18 |  |  |  | 0.65d | 0d | start no earlier than 2006-04-24 08:00 | Cognizant | 1h |
| 20 | 1.2.3.3 | endOfPerformance and Backup |  | 30min | 2006-04-24 13:40 | 2006-04-24 14:10 | 19 |  |  |  | 0.65d | 0d |  | Cognizant | 0.5h |
| 21 | 1.2.3.4 | Reporting through KR site |  | 15min | 2006-04-24 14:10 | 2006-04-24 14:25 | 20 |  |  |  | 0.65d | 0d |  | Cognizant | 0.25h |
| 22 | 1.2.3.5 | Check: Sign Off on Logs and Results |  | 20min | 2006-04-24 14:25 | 2006-04-24 14:45 | 21 |  |  |  | 0.65d | 0d |  | CBOE | 0.33h |
| 23 | 1.2.4 | **Hybrid test scenario 5 (Product State Change Test)** |  | 0.23d | 2006-04-24 14:45 | 2006-04-24 16:35 | 17 | 2006-03-21 14:50 | 2006-03-21 16:20 | 0.19d | 0.89d | 0d |  | Cognizant | 3.67h |
| 24 | 1.2.4.1 | BC Cleanup, Initial Driver Setup, |  | 20min | 2006-04-24 14:45 | 2006-04-24 15:05 | 22 | 2006-03-21 14:50 | 2006-03-21 15:10 | 20min | 0.65d | 0d |  | Cognizant | 0.33h |
| 25 | 1.2.4.2 | Test Execution - Global Server Bounce |  | 40min | 2006-04-24 15:05 | 2006-04-24 15:45 | 24 | 2006-03-21 15:10 | 2006-03-21 15:50 | 40min | 0.65d | 0d |  | Cognizant | 0.67h |
| 26 | 1.2.4.3 | Monitor and Backup logs |  | 20min | 2006-04-24 15:45 | 2006-04-24 16:05 | 25 | 2006-03-21 15:50 | 2006-03-21 16:10 | 20min | 0.65d | 0d |  | Cognizant | 0.33h |
| 27 | 1.2.4.4 | Reporting through KR site |  | 10min | 2006-04-24 16:05 | 2006-04-24 16:15 | 26 | 2006-03-21 16:10 | 2006-03-21 16:20 | 10min | 0.65d | 0d |  | Cognizant | 0.17h |
| 28 | 1.2.4.5 | Check: Sign Off on Logs and Results |  | 20min | 2006-04-24 16:15 | 2006-04-24 16:35 | 27 | 2006-03-21 16:20 | 2006-03-21 16:20 | 0h | 0.65d | 0d |  | CBOE | 0.33h |

| ID | WBS | Task | Duration | Start | Finish | Predecessors | Baseline start | Baseline finish | Baseline duration | Total slack | Free slack | Constraint | Resources | Work |
| --- | --- | --- | --- | --- | --- | --- | --- | --- | --- | --- | --- | --- | --- | --- |
| 29 | 1.12 | **Multi-class Quote step-up test with BOTR [Scenario 3]** | 0.43d | 2006-04-24 16:35 | 2006-04-25 11:00 | 23 | 2006-03-21 16:20 | 2006-03-22 10:25 | 0.39d | 0.89d | 0d |  | Cognizant | 6.83h |
| 30 | 1.12.1 | BC Cleanup, Initial Driver Setup, | 20min | 2006-04-24 16:35 | 2006-04-24 16:55 | 28 | 2006-03-21 16:20 | 2006-03-21 16:40 | 20min | 0.65d | 0d |  | Cognizant | 0.33h |
| 31 | 1.12.2 | Test Execution for No BOTR | 1h | 2006-04-24 16:55 | 2006-04-25 08:55 | 30 | 2006-03-21 16:40 | 2006-03-22 08:40 | 1h | 0.65d | 0d |  | Cognizant | 1h |
| 32 | 1.12.3 | BOTR from 4000 to 16000 | 30min | 2006-04-25 08:55 | 2006-04-25 09:25 | 31 | 2006-03-22 08:40 | 2006-03-22 09:10 | 30min | 0.65d | 0d |  | Cognizant | 0.5h |
| 33 | 1.12.4 | endOfPerformance and Backup | 45min | 2006-04-25 09:25 | 2006-04-25 10:10 | 32 | 2006-03-22 09:10 | 2006-03-22 09:55 | 45min | 0.65d | 0d |  | Cognizant | 0.75h |
| 34 | 1.12.5 | Reporting through KR site | 30min | 2006-04-25 10:10 | 2006-04-25 10:40 | 33 | 2006-03-22 09:55 | 2006-03-22 10:25 | 30min | 0.65d | 0d |  | Cognizant | 0.5h |
| 35 | 1.2.5.6 | Check: Sign Off on Logs and Results | 20min | 2006-04-25 10:40 | 2006-04-25 11:00 | 34 | 2006-03-22 10:25 | 2006-03-22 10:25 | 0h | 0.65d | 0d |  | CBOE | 0.33h |
| 36 | 1.13 | **Single-class Quote step-up test with BOTR [Scenario 1]** | 0.39d | 2006-04-25 11:00 | 2006-04-25 15:05 | 29 | 2006-03-22 10:25 | 2006-03-22 14:10 | 0.34d | 0.89d | 0.24d |  | Cognizant | 6.17h |
| 37 | 1.13.1 | BC Cleanup, Initial Driver Setup, | 20min | 2006-04-25 11:00 | 2006-04-25 11:20 | 35 | 2006-03-22 10:25 | 2006-03-22 10:45 | 20min | 0.65d | 0d |  | Cognizant | 0.33h |
| 38 | 1.13.2 | Test Execution for No BOTR | 1h | 2006-04-25 11:20 | 2006-04-25 13:20 | 37 | 2006-03-22 10:45 | 2006-03-22 11:45 | 1h | 0.65d | 0d |  | Cognizant | 1h |
| 39 | 1.13.3 | BOTR 16000 | 10min | 2006-04-25 13:20 | 2006-04-25 13:30 | 38 | 2006-03-22 11:45 | 2006-03-22 11:55 | 10min | 0.65d | 0d |  | Cognizant | 0.17h |
| 40 | 1.13.4 | endOfPerformance and Backup | 45min | 2006-04-25 13:30 | 2006-04-25 14:15 | 39 | 2006-03-22 11:55 | 2006-03-22 13:40 | 45min | 0.65d | 0d |  | Cognizant | 0.75h |
| 41 | 1.13.5 | Reporting through KR site | 30min | 2006-04-25 14:15 | 2006-04-25 14:45 | 40 | 2006-03-22 13:40 | 2006-03-22 14:10 | 30min | 0.65d | 0d |  | Cognizant | 0.5h |
| 42 | 1.2.6.6 | Check: Sign Off On Logs and Results | 20min | 2006-04-25 14:45 | 2006-04-25 15:05 | 41 | 2006-03-22 14:10 | 2006-03-22 14:10 | 0h | 0.65d | 0.24d |  | CBOE | 0.33h |
| 43 | 1.14 | **Multi-class Order step-up test [Scenario 4]** | 0.28d | 2006-04-26 08:00 | 2006-04-26 10:15 | 36 | 2006-03-22 14:10 | 2006-03-22 16:05 | 0.24d | 0.65d | 0d |  | Cognizant | 4.5h |
| 44 | 1.14.1 | BC Cleanup, Initial Driver Setup, | 20min | 2006-04-26 08:00 | 2006-04-26 08:20 | 42 | 2006-03-22 14:10 | 2006-03-22 14:30 | 20min | 0.65d | 0d | start no earlier than 2006-04-26 08:00 | Cognizant | 0.33h |
| 45 | 1.14.2 | Test Execution for No BOTR | 1h | 2006-04-26 08:20 | 2006-04-26 09:20 | 44 | 2006-03-22 14:30 | 2006-03-22 15:30 | 1h | 0.65d | 0d |  | Cognizant | 1h |
| 46 | 1.14.3 | endOfPerformance and Backup | 20min | 2006-04-26 09:20 | 2006-04-26 09:40 | 45 | 2006-03-22 15:30 | 2006-03-22 15:50 | 20min | 0.65d | 0d |  | Cognizant | 0.33h |
| 47 | 1.14.4 | Reporting through KR site | 15min | 2006-04-26 09:40 | 2006-04-26 09:55 | 46 | 2006-03-22 15:50 | 2006-03-22 16:05 | 15min | 0.65d | 0d |  | Cognizant | 0.25h |
| 48 | 1.2.7.5 | Check: Sign Off on Logs and Results | 20min | 2006-04-26 09:55 | 2006-04-26 10:15 | 47 | 2006-03-22 16:05 | 2006-03-22 16:05 | 0h | 0.65d | 0d |  | CBOE | 0.33h |
| 49 | 1.15 | **Hybrid BC failover (new release to old release)** | 0.31d | 2006-04-26 10:15 | 2006-04-26 13:45 | 43 | 2006-03-23 16:05 | 2006-03-24 09:50 | 0.34d | 0.65d | 0.41d |  | Cognizant | 5h |
| 50 | 1.2.8.1 | BC Cleanup start A Side as Master | 20min | 2006-04-26 10:15 | 2006-04-26 10:35 | 48 | 2006-03-23 16:05 | 2006-03-23 16:25 | 20min | 0.65d | 0d |  | Cognizant | 0.33h |
| 51 | 1.15.1 | Initial setup for test Drivers (starting processes on BC Slave.) | 20min | 2006-04-26 10:35 | 2006-04-26 10:55 | 50 | 2006-03-23 16:25 | 2006-03-23 16:50 | 25min | 0.65d | 0d |  | Cognizant | 0.33h |
| 52 | 1.15.2 | Quote/Order BC20 Hybrid traffic going before/during/after failover. Test Execution | 20min | 2006-04-26 10:55 | 2006-04-26 11:15 | 51 | 2006-03-23 16:50 | 2006-03-24 08:20 | 30min | 0.65d | 0d |  | Cognizant | 0.33h |
| 53 | 1.15.3 | ITG Checkout script for W_MAIN | 20min | 2006-04-26 11:15 | 2006-04-26 11:35 | 52 | 2006-03-24 08:20 | 2006-03-24 09:00 | 40min | 0.65d | 0d |  | Cognizant | 0.33h |
| 54 | 1.15.4 | Backup for Failover and ITG Checkout | 20min | 2006-04-26 11:35 | 2006-04-26 11:55 | 53 | 2006-03-24 09:00 | 2006-03-24 09:20 | 20min | 0.65d | 0d |  | Cognizant | 0.33h |
| 55 | 1.15.5 | Generate Report for Failover Timings for all BC Processes (taking time from log files) | 30min | 2006-04-26 11:55 | 2006-04-26 13:25 | 54 | 2006-03-24 09:20 | 2006-03-24 09:50 | 30min | 0.65d | 0d |  | Cognizant | 0.5h |
| 56 | 1.2.8.7 | Check: Sign Off on Checkout Scripts, Logs and Results | 20min | 2006-04-26 13:25 | 2006-04-26 13:45 | 55 | 2006-03-24 09:50 | 2006-03-24 09:50 | 0h | 0.65d | 0.41d |  | CBOE | 0.33h |

| ID | WBS | Task | Duration | Start | Finish | Predecessors | Baseline start | Baseline finish | Baseline duration | Total slack | Free slack | Constraint | Resources | Work |
| --- | --- | --- | --- | --- | --- | --- | --- | --- | --- | --- | --- | --- | --- | --- |
| 57 | 1.15 | **Hybrid BC double failover (new to old to new release)** | 0.47d | 2006-04-27 08:00 | 2006-04-27 11:45 | 49 | 2006-03-23 16:05 | 2006-03-24 09:50 | 0.34d | 0.24d | 0d |  | Cognizant | 7.5h |
| 58 | 1.2.9.1 | BC Cleanup start A Side as Master | 20min | 2006-04-27 08:00 | 2006-04-27 08:20 | 56 | 2006-03-23 16:05 | 2006-03-23 16:25 | 20min | 0.24d | 0d | start no earlier than 2006-04-27 08:00 | Cognizant | 0.33h |
| 59 | 1.15.1 | Initial setup for test Drivers (starting processes on BC Slave.) | 20min | 2006-04-27 08:20 | 2006-04-27 08:40 | 58 | 2006-03-23 16:25 | 2006-03-23 16:50 | 25min | 0.24d | 0d |  | Cognizant | 0.33h |
| 60 | 1.15.2 | Quote/Order BC20 Hybrid traffic going before/during/after failover. Test Execution | 20min | 2006-04-27 08:40 | 2006-04-27 09:00 | 59 | 2006-03-23 16:50 | 2006-03-24 08:20 | 30min | 0.24d | 0d |  | Cognizant | 0.33h |
| 61 | 1.15.3 | ITG Checkout script for W_MAIN | 20min | 2006-04-27 09:00 | 2006-04-27 09:20 | 60 | 2006-03-24 08:20 | 2006-03-24 09:00 | 40min | 0.24d | 0d |  | Cognizant | 0.33h |
| 62 | 1.2.9.5 | Start A side as slave | 20min | 2006-04-27 09:20 | 2006-04-27 09:40 | 61 |  |  |  | 0.24d | 0d |  | Cognizant | 0.33h |
| 63 | 1.15.2 | Quote/Order BC20 Hybrid traffic going before/during/after failover. Test Execution | 20min | 2006-04-27 09:40 | 2006-04-27 10:00 | 62 | 2006-03-23 16:50 | 2006-03-24 08:20 | 30min | 0.24d | 0d |  | Cognizant | 0.33h |
| 64 | 1.15.3 | ITG Checkout script for W_MAIN | 20min | 2006-04-27 10:00 | 2006-04-27 10:20 | 63 | 2006-03-24 08:20 | 2006-03-24 09:00 | 40min | 0.24d | 0d |  | Cognizant | 0.33h |
| 65 | 1.15.4 | Backup for Failover and ITG Checkout | 20min | 2006-04-27 10:20 | 2006-04-27 10:40 | 64 | 2006-03-24 09:00 | 2006-03-24 09:20 | 20min | 0.24d | 0d |  | Cognizant | 0.33h |
| 66 | 1.15.5 | Generate Report for Failover Timings for all BC Processes (taking time from log files) | 45min | 2006-04-27 10:40 | 2006-04-27 11:25 | 65 | 2006-03-24 09:20 | 2006-03-24 09:50 | 30min | 0.24d | 0d |  | Cognizant | 0.75h |
| 67 | 1.2.9.10 | Check: Sign Off on Checkout Scripts, Logs and Results | 20min | 2006-04-27 11:25 | 2006-04-27 11:45 | 66 | 2006-03-24 09:50 | 2006-03-24 09:50 | 0h | 0.24d | 0d |  | CBOE | 0.33h |
| 68 | 1.2.10 | **HAL Scenarios** | 0.95d | 2006-04-27 11:45 | 2006-04-28 11:20 | 57 |  |  |  | 0.08d | 0d |  | Cognizant | 13.92h |
| 69 | 1.2.10.1 | Scenario 1: All Orders Trade - Baseline | 1.5h | 2006-04-27 11:45 | 2006-04-27 14:15 | 67 |  |  |  | 0.24d | 0d |  | Cognizant | 1.5h |
| 70 | 1.2.10.2 | Scenario 2: All Orders Book No Trade - Baseline | 1.5h | 2006-04-27 14:15 | 2006-04-27 15:45 | 69 |  |  |  | 0.24d | 0.16d |  | Cognizant | 1.5h |
| 71 | 1.2.10.3 | Scenario 3: All Orders Auction But No Trades | 1.5h | 2006-04-28 08:00 | 2006-04-28 09:30 | 70 |  |  |  | 0.08d | 0d | start no earlier than 2006-04-28 08:00 | Cognizant | 1.5h |
| 72 | 1.2.10.4 | Scenario 4: All Orders Auction and Trade | 1.5h | 2006-04-28 09:30 | 2006-04-28 11:00 | 71 |  |  |  | 0.08d | 0d |  | Cognizant | 1.5h |
| 73 | 1.2.10.5 | Check: Sign Off on Logs and Results | 20min | 2006-04-28 11:00 | 2006-04-28 11:20 | 72 |  |  |  | 0.08d | 0d |  | CBOE | 0.33h |
| 74 | 1.5 | **Install & perform tests on Hybrid BC B Side** | 0.94d | 2006-04-28 11:20 | 2006-05-01 10:50 | 7 | 2006-03-24 09:50 | 2006-03-24 15:35 | 0.59d | 0d |  |  | Cognizant | 19.83h |
| 75 | 1.16 | **Install Hybrid BC "B" side** | 0.33d | 2006-04-28 11:20 | 2006-04-28 15:00 | 68 | 2006-03-24 09:50 | 2006-03-24 13:10 | 0.29d | 0.08d | 0d |  | Cognizant | 5.33h |
| 76 | 1.3.1.1 | Cleanup | 20min | 2006-04-28 11:20 | 2006-04-28 11:40 | 73 | 2006-03-24 09:50 | 2006-03-24 10:10 | 20min | 0.08d | 0d |  | Cognizant | 0.33h |
| 77 | 1.16.1 | Configuration and starting processes | 1h | 2006-04-28 11:40 | 2006-04-28 13:40 | 76 | 2006-03-24 10:10 | 2006-03-24 11:10 | 1h | 0.08d | 0d |  | Cognizant | 1h |
| 78 | 1.16.2 | ITG Checkout script (W_MAIN and ONE_MAIN Session) | 40min | 2006-04-28 13:40 | 2006-04-28 14:20 | 77 | 2006-03-24 11:10 | 2006-03-24 11:50 | 40min | 0.08d | 0d |  | Cognizant | 0.67h |
| 79 | 1.16.3 | Backup and Reporting | 20min | 2006-04-28 14:20 | 2006-04-28 14:40 | 78 | 2006-03-24 11:50 | 2006-03-24 13:10 | 20min | 0.08d | 0d |  | Cognizant | 0.33h |
| 80 | 1.3.1.5 | Check: Sign Off on Checkout Scripts, Logs and Results | 20min | 2006-04-28 14:40 | 2006-04-28 15:00 | 79 | 2006-03-24 13:10 | 2006-03-24 13:10 | 0h | 0.08d | 0d |  | CBOE | 0.33h |

| ID | WBS | Task | Duration | Start | Finish | Predecessors | Baseline start | Baseline finish | Baseline duration | Total slack | Free slack | Constraint | Resources | Work |
| --- | --- | --- | --- | --- | --- | --- | --- | --- | --- | --- | --- | --- | --- | --- |
| 81 | 1.17 | **Hybrid BC failover (new release to new release)** | 0.35d | 2006-04-28 15:00 | 2006-05-01 08:50 | 75 | 2006-03-24 13:10 | 2006-03-24 15:35 | 0.3d | 0d |  |  | Cognizant | 5h |
| 82 | 1.17.1 | Initial setup for test Drivers (starting processes on BC Slave.) | 20min | 2006-04-28 15:00 | 2006-04-28 15:20 | 80 | 2006-03-24 13:10 | 2006-03-24 13:35 | 25min | 0.08d | 0d |  | Cognizant | 0.33h |
| 83 | 1.17.2 | Quote/Order BC20 Hybrid traffic going before/during/after failover. Test Execution | 20min | 2006-04-28 15:20 | 2006-04-28 15:40 | 82 | 2006-03-24 13:35 | 2006-03-24 14:05 | 30min | 0.08d | 0d |  | Cognizant | 0.33h |
| 84 | 1.17.3 | ITG Checkout script (for W_MAIN Session) | 20min | 2006-04-28 15:40 | 2006-04-28 16:00 | 83 | 2006-03-24 14:05 | 2006-03-24 14:45 | 40min | 0.08d | 0d |  | Cognizant | 0.33h |
| 85 | 1.17.4 | Backup for Failover and ITG Checkout | 20min | 2006-04-28 16:00 | 2006-04-28 16:20 | 84 | 2006-03-24 14:45 | 2006-03-24 15:05 | 20min | 0.08d |  |  | Cognizant | 0.33h |
| 86 | 1.17.5 | Generate Report for Failover Timings for all BC Processes (taking time from log files) | 30min | 2006-05-01 08:00 | 2006-05-01 08:30 | 85 | 2006-03-24 15:05 | 2006-03-24 15:35 | 30min | 0d |  | start no earlier than 2006-05-01 08:00 | Cognizant | 0.5h |
| 87 | 1.3.2.6 | Check: Sign Off on Checkout Scripts,Logs and Results | 20min | 2006-05-01 08:30 | 2006-05-01 08:50 | 86 | 2006-03-24 15:35 | 2006-03-24 15:35 | 0h | 0d |  |  | CBOE | 0.33h |
| 88 | 1.3.3 | Start/End session and Failover Timings - BC Failover Test scenario | 2h | 2006-05-01 08:50 | 2006-05-01 10:50 | 81 |  |  |  | 0d |  |  | Cognizant | 2h |
| 89 | 1.6 | **Install & perform tests on ONE_MAIN BC A Side** | 1.15d | 2006-05-01 10:50 | 2006-05-02 12:00 | 74 | 2006-03-24 15:35 | 2006-03-27 16:20 | 1.09d | 0d |  |  | Cognizant | 27.5h |
| 90 | 1.26 | **Install ONE_MAIN BC (A)** | 0.25d | 2006-05-01 10:50 | 2006-05-01 13:50 | 88 | 2006-03-24 15:35 | 2006-03-27 08:35 | 0.25d | 0d |  |  | Cognizant | 4h |
| 91 | 1.26.1 | Configuration and starting processes | 1h | 2006-05-01 10:50 | 2006-05-01 11:50 | 88 | 2006-03-24 15:35 | 2006-03-24 16:35 | 1h | 0d |  |  | Cognizant | 1h |
| 92 | 1.26.2 | ITG Checkout script (ONE_MAIN Session) | 20min | 2006-05-01 11:50 | 2006-05-01 13:10 | 91 | 2006-03-24 16:35 | 2006-03-27 08:15 | 40min | 0d |  |  | Cognizant | 0.33h |
| 93 | 1.26.3 | Backup and Reporting | 20min | 2006-05-01 13:10 | 2006-05-01 13:30 | 92 | 2006-03-27 08:15 | 2006-03-27 08:35 | 20min | 0d |  |  | Cognizant | 0.33h |
| 94 | 1.4.1.4 | Check: Sign Off on Checkout Scripts, Logs and Results | 20min | 2006-05-01 13:30 | 2006-05-01 13:50 | 93 | 2006-03-27 08:35 | 2006-03-27 08:35 | 0h | 0d |  |  | CBOE | 0.33h |
| 95 | 1.27 | **Multi-class Order step-up test for ONE_MAIN [Scenario 2]** | 0.27d | 2006-05-01 13:50 | 2006-05-01 16:00 | 90 | 2006-03-27 08:35 | 2006-03-27 10:25 | 0.23d | 0d |  |  | Cognizant | 4.33h |
| 96 | 1.27.1 | BC Cleanup, Initial Driver Setup, | 20min | 2006-05-01 13:50 | 2006-05-01 14:10 | 94 | 2006-03-27 08:35 | 2006-03-27 08:55 | 20min | 0d |  |  | Cognizant | 0.33h |
| 97 | 1.27.2 | Test Execution for No BOTR | 1h | 2006-05-01 14:10 | 2006-05-01 15:10 | 96 | 2006-03-27 08:55 | 2006-03-27 09:55 | 1h | 0d |  |  | Cognizant | 1h |
| 98 | 1.27.3 | endOfPerformance and Backup | 15min | 2006-05-01 15:10 | 2006-05-01 15:25 | 97 | 2006-03-27 09:55 | 2006-03-27 10:10 | 15min | 0d |  |  | Cognizant | 0.25h |
| 99 | 1.27.4 | Reporting through KR site | 15min | 2006-05-01 15:25 | 2006-05-01 15:40 | 98 | 2006-03-27 10:10 | 2006-03-27 10:25 | 15min | 0d |  |  | Cognizant | 0.25h |
| 100 | 1.4.2.5 | Check: Sign Off on Logs and Results | 20min | 2006-05-01 15:40 | 2006-05-01 16:00 | 99 | 2006-03-27 10:25 | 2006-03-27 10:25 | 0h | 0d |  |  | CBOE | 0.33h |
| 101 | 1.28 | **Multi-class Quote step-up test [Scenario 1]** | 0.31d | 2006-05-01 16:00 | 2006-05-02 09:30 | 95 | 2006-03-27 10:25 | 2006-03-27 13:35 | 0.27d | 0d |  |  | Cognizant | 5h |
| 102 | 1.28.1 | BC Cleanup, Initial Driver Setup, | 20min | 2006-05-01 16:00 | 2006-05-01 16:20 | 100 | 2006-03-27 10:25 | 2006-03-27 10:45 | 20min | 0d |  |  | Cognizant | 0.33h |
| 103 | 1.28.2 | Test Execution for No BOTR | 1h | 2006-05-01 16:20 | 2006-05-02 08:20 | 102 | 2006-03-27 10:45 | 2006-03-27 11:45 | 1h | 0d |  |  | Cognizant | 1h |
| 104 | 1.28.3 | endOfPerformance and Backup | 30min | 2006-05-02 08:20 | 2006-05-02 08:50 | 103 | 2006-03-27 11:45 | 2006-03-27 13:15 | 30min | 0d |  |  | Cognizant | 0.5h |
| 105 | 1.28.4 | Reporting through KR site | 20min | 2006-05-02 08:50 | 2006-05-02 09:10 | 104 | 2006-03-27 13:15 | 2006-03-27 13:35 | 20min | 0d |  |  | Cognizant | 0.33h |
| 106 | 1.4.3.5 | Check: Sign Off on Logs and Results | 20min | 2006-05-02 09:10 | 2006-05-02 09:30 | 105 | 2006-03-27 13:35 | 2006-03-27 13:35 | 0h | 0d |  |  | CBOE | 0.33h |

| ID | WBS | Task | Duration | Start | Finish | Predecessors | Baseline start | Baseline finish | Baseline duration | Total slack | Resources | Work |
| --- | --- | --- | --- | --- | --- | --- | --- | --- | --- | --- | --- | --- |
| 107 | 1.30 | **Failover ONE_MAIN BC (New to Old)** | 0.31d | 2006-05-02 09:30 | 2006-05-02 12:00 | 101 | 2006-03-27 13:35 | 2006-03-27 16:20 | 0.34d | 0d | Cognizant | 5h |
| 108 | 1.4.4.1 | Cleanup | 20min | 2006-05-02 09:30 | 2006-05-02 09:50 | 106 | 2006-03-27 13:35 | 2006-03-27 13:55 | 20min | 0d | Cognizant | 0.33h |
| 109 | 1.30.1 | Initial setup for test Drivers (starting processes on BC Slave.) | 20min | 2006-05-02 09:50 | 2006-05-02 10:10 | 108 | 2006-03-27 13:55 | 2006-03-27 14:20 | 25min | 0d | Cognizant | 0.33h |
| 110 | 1.30.2 | Quote/Order ONE_MAIN traffic going before/during/after failover. Test Execution | 20min | 2006-05-02 10:10 | 2006-05-02 10:30 | 109 | 2006-03-27 14:20 | 2006-03-27 14:50 | 30min | 0d | Cognizant | 0.33h |
| 111 | 1.30.3 | ITG Checkout script (for ONE_MAIN Session) | 20min | 2006-05-02 10:30 | 2006-05-02 10:50 | 110 | 2006-03-27 14:50 | 2006-03-27 15:30 | 40min | 0d | Cognizant | 0.33h |
| 112 | 1.30.4 | Backup for Failover and ITG Checkout | 20min | 2006-05-02 10:50 | 2006-05-02 11:10 | 111 | 2006-03-27 15:30 | 2006-03-27 15:50 | 20min | 0d | Cognizant | 0.33h |
| 113 | 1.30.5 | Generate Report for Failover Timings for all BC Processes (taking time from log files) | 30min | 2006-05-02 11:10 | 2006-05-02 11:40 | 112 | 2006-03-27 15:50 | 2006-03-27 16:20 | 30min | 0d | Cognizant | 0.5h |
| 114 | 1.4.4.7 | Check: Sign Off on Checkout Scripts,Logs and Results | 20min | 2006-05-02 11:40 | 2006-05-02 12:00 | 113 | 2006-03-27 16:20 | 2006-03-27 16:20 | 0h | 0d | CBOE | 0.33h |
| 115 | 1.7 | **Install & perform tests on ONE_MAIN BC B Side** | 0.56d | 2006-05-02 13:00 | 2006-05-03 08:30 | 89 | 2006-03-27 16:20 | 2006-03-28 13:05 | 0.59d | 0d | Cognizant | 13.5h |
| 116 | 1.31 | **Install ONE_MAIN BC (B)** | 0.25d | 2006-05-02 13:00 | 2006-05-02 15:00 | 107 | 2006-03-27 16:20 | 2006-03-28 09:20 | 0.25d | 0d | Cognizant | 4h |
| 117 | 1.31.1 | Configuration and starting processes | 1h | 2006-05-02 13:00 | 2006-05-02 14:00 | 114 | 2006-03-27 16:20 | 2006-03-28 08:20 | 1h | 0d | Cognizant | 1h |
| 118 | 1.31.2 | ITG Checkout script (ONE_MAIN Session) | 20min | 2006-05-02 14:00 | 2006-05-02 14:20 | 117 | 2006-03-28 08:20 | 2006-03-28 09:00 | 40min | 0d | Cognizant | 0.33h |
| 119 | 1.31.3 | Backup and Reporting | 20min | 2006-05-02 14:20 | 2006-05-02 14:40 | 118 | 2006-03-28 09:00 | 2006-03-28 09:20 | 20min | 0d | Cognizant | 0.33h |
| 120 | 1.5.1.4 | Check: Sign Off on Checkout Scripts, Logs and Results | 20min | 2006-05-02 14:40 | 2006-05-02 15:00 | 119 | 2006-03-28 09:20 | 2006-03-28 09:20 | 0h | 0d | CBOE | 0.33h |
| 121 | 1.5.2 | **Failover ONE_MAIN BC (New to New)** | 0.31d | 2006-05-02 15:00 | 2006-05-03 08:30 | 116 | 2006-03-28 09:20 | 2006-03-28 13:05 | 0.34d | 0d | Cognizant | 5h |
| 122 | 1.5.2.1 | Cleanup | 20min | 2006-05-02 15:00 | 2006-05-02 15:20 | 120 | 2006-03-28 09:20 | 2006-03-28 09:40 | 20min | 0d | Cognizant | 0.33h |
| 123 | 1.5.2.2 | Initial setup for test Drivers (starting processes on BC Slave.) | 20min | 2006-05-02 15:20 | 2006-05-02 15:40 | 122 | 2006-03-28 09:40 | 2006-03-28 10:05 | 25min | 0d | Cognizant | 0.33h |
| 124 | 1.5.2.3 | Quote/Order ONE_MAIN traffic going before/during/after failover. Test Execution | 20min | 2006-05-02 15:40 | 2006-05-02 16:00 | 123 | 2006-03-28 10:05 | 2006-03-28 10:35 | 30min | 0d | Cognizant | 0.33h |
| 125 | 1.5.2.4 | ITG Checkout script (ONE_MAIN Session) | 20min | 2006-05-02 16:00 | 2006-05-02 16:20 | 124 | 2006-03-28 10:35 | 2006-03-28 11:15 | 40min | 0d | Cognizant | 0.33h |
| 126 | 1.5.2.5 | Backup for Failover and ITG Checkout | 20min | 2006-05-02 16:20 | 2006-05-02 16:40 | 125 | 2006-03-28 11:15 | 2006-03-28 11:35 | 20min | 0d | Cognizant | 0.33h |
| 127 | 1.5.2.6 | Generate Report for Failover Timings for all BC Processes (taking time from log files) | 30min | 2006-05-02 16:40 | 2006-05-03 08:10 | 126 | 2006-03-28 11:35 | 2006-03-28 13:05 | 30min | 0d | Cognizant | 0.5h |
| 128 | 1.5.2.7 | Check: Sign Off on Checkout Scripts,Logs and Results | 20min | 2006-05-03 08:10 | 2006-05-03 08:30 | 127 | 2006-03-28 13:05 | 2006-03-28 13:05 | 0h | 0d | CBOE | 0.33h |
| 129 | 1.6 | **4 Hour Endurance Test** | 0.79d | 2006-05-03 08:30 | 2006-05-03 15:50 | 115 | 2006-03-28 13:05 | 2006-03-29 10:05 | 0.75d | 0d | Cognizant | 12.67h |
| 130 | 1.6.1 | Cleanup for W_MAIN and ONE_MAIN BC | 20min | 2006-05-03 08:30 | 2006-05-03 08:50 | 128 | 2006-03-28 13:05 | 2006-03-28 13:25 | 20min | 0d | Cognizant | 0.33h |
| 131 | 1.6.2 | Driver setup | 20min | 2006-05-03 08:50 | 2006-05-03 09:10 | 130 | 2006-03-28 13:25 | 2006-03-28 13:45 | 20min | 0d | Cognizant | 0.33h |
| 132 | 1.6.3 | CAS bounce | 20min | 2006-05-03 09:10 | 2006-05-03 09:30 | 131 | 2006-03-28 13:45 | 2006-03-28 14:05 | 20min | 0d | Cognizant | 0.33h |
| 133 | 1.6.4 | 4 hour Sanity Check | 4h | 2006-05-03 09:30 | 2006-05-03 14:30 | 132 | 2006-03-28 14:05 | 2006-03-29 09:05 | 4h | 0d | Cognizant | 4h |
| 134 | 1.6.5 | endOfPerformance and Backup and Reporting | 1h | 2006-05-03 14:30 | 2006-05-03 15:30 | 133 | 2006-03-29 09:05 | 2006-03-29 10:05 | 1h | 0d | Cognizant | 1h |
| 135 | 1.6.6 | Check: Sign Off on Logs and Results | 20min | 2006-05-03 15:30 | 2006-05-03 15:50 | 134 | 2006-03-29 10:05 | 2006-03-29 10:05 | 0h | 0d | CBOE | 0.33h |

| ID | WBS | Task | Type | Duration | Start | Finish | Predecessors | Baseline start | Baseline finish | Baseline duration | Total slack | Resources |
| --- | --- | --- | --- | --- | --- | --- | --- | --- | --- | --- | --- | --- |
| 136 | 1.7 | **Check: Overall Verification** |  | 0d | 2006-05-03 15:50 | 2006-05-03 15:50 | 129 | 2006-03-30 13:25 | 2006-03-30 13:25 | 0d | 0d | CBOE |
| 137 | 1.7.1 | All Results Signed Off | milestone | 0h | 2006-05-03 15:50 | 2006-05-03 15:50 | 135 | 2006-03-30 13:25 | 2006-03-30 13:25 | 0h | 0d | CBOE |
| 138 | 1.7.2 | All Tests Completed | milestone | 0h | 2006-05-03 15:50 | 2006-05-03 15:50 | 137 | 2006-03-30 13:25 | 2006-03-30 13:25 | 0h | 0d | CBOE |
| 139 | 1.7.3 | Results Approved by Paul and Respective Groups | milestone | 0h | 2006-05-03 15:50 | 2006-05-03 15:50 | 138 | 2006-03-30 13:25 | 2006-03-30 13:25 | 0h | 0d | CBOE |
