Schedule from MS Project, 2006-05-15 to 2006-05-24, A marks actual dates.
Cognizant Technology Solutions

## Calendars

- Standard: Mon-Fri 08:00-12:00, 13:00-17:00; Sat-Sun off.

## Resources

| Resource |
| --- |
| Cognizant |
| 2 |
| CBOE |
| Piwnicki |
| Bobbie |

## Schedule

| ID | WBS | Task | Type | Duration | Start | Finish | Predecessors | Complete | Remaining | Baseline start | Baseline finish | Baseline duration | Total slack | Constraint | Resources | Work | Actual work |
| --- | --- | --- | --- | --- | --- | --- | --- | --- | --- | --- | --- | --- | --- | --- | --- | --- | --- |
| 1 | 1 | **Rollout Task** |  | 7.88d | 2006-05-15 08:00 A | 2006-05-24 16:00 |  | 74% | 2.03d | 2006-05-02 08:00 | 2006-05-15 14:15 | 9.66d | 0d |  |  | 141.67h | 115h |
| 2 | 1.1 | **Pre-Rollout Verification/Changes [If required]** |  | 0d | 2006-05-15 08:00 A | 2006-05-15 08:00 A |  | 100% |  | 2006-05-02 08:00 | 2006-05-02 08:00 | 0d |  |  |  |  |  |
| 3 | 1.1.1 | Database changes | milestone | 0h | 2006-05-15 08:00 A | 2006-05-15 08:00 A |  | 100% |  | 2006-05-02 08:00 | 2006-05-02 08:00 | 0h |  | start no earlier than 2006-05-15 08:00 | CBOE |  |  |
| 4 | 1.1.2 | Extent Map changes | milestone | 0h | 2006-05-15 08:00 A | 2006-05-15 08:00 A | 3 | 100% |  | 2006-05-02 08:00 | 2006-05-02 08:00 | 0h |  |  | CBOE |  |  |
| 5 | 1.1.3 | Version label verification on all boxes | milestone | 0h | 2006-05-15 08:00 A | 2006-05-15 08:00 A | 4 | 100% |  | 2006-05-02 08:00 | 2006-05-02 08:00 | 0h |  |  | CBOE |  |  |
| 6 | 1.1.4 | Check: Tier Lead has verified information and obtained a sign off | milestone | 0h | 2006-05-15 08:00 A | 2006-05-15 08:00 A | 3, 4, 5 | 100% |  | 2006-05-02 08:00 | 2006-05-02 08:00 | 0h |  |  | CBOE |  |  |
| 7 | 1.4 | **Install and Perform Tests on Hybrid BC A Side** |  | 2.43d | 2006-05-16 08:00 A | 2006-05-18 11:25 | 2 | 90% | 0.25d | 2006-05-04 11:50 | 2006-05-09 10:40 | 2.85d | 4.45d |  | Cognizant | 56.25h | 52.25h |
| 8 | 1.10 | **Install Hybrid BC (A)** |  | 0.27d | 2006-05-16 08:00 A | 2006-05-16 10:10 A |  | 100% |  | 2006-05-04 11:50 | 2006-05-04 14:50 | 0.25d |  |  | Cognizant | 4.33h | 4.33h |
| 9 | 1.10.1 | Configuration and starting processes |  | 1h | 2006-05-16 08:00 A | 2006-05-16 09:00 A |  | 100% |  | 2006-05-04 11:50 | 2006-05-04 13:50 | 1h |  | start no earlier than 2006-05-16 08:00 | Cognizant | 1h | 1h |
| 10 | 1.10.2 | ITG Checkout script (W_MAIN Session) |  | 20min | 2006-05-16 09:00 A | 2006-05-16 09:20 A | 9 | 100% |  | 2006-05-04 13:50 | 2006-05-04 14:30 | 40min |  |  | Cognizant | 0.33h | 0.33h |
| 11 | 1.10.3 | Backup and Reporting |  | 20min | 2006-05-16 09:20 A | 2006-05-16 09:40 A | 10 | 100% |  | 2006-05-04 14:30 | 2006-05-04 14:50 | 20min |  |  | Cognizant | 0.33h | 0.33h |
| 12 | 1.2.1.4 | Check: Sign Off on Checkout Scripts, Logs and Results |  | 30min | 2006-05-16 09:40 A | 2006-05-16 10:10 A | 11 | 100% |  | 2006-05-04 14:50 | 2006-05-04 14:50 | 0h |  |  | CBOE | 0.5h | 0.5h |
| 13 | 1.2.2 | FIX Strategy Order Test |  | 2h | 2006-05-16 10:10 | 2006-05-16 13:10 | 8 |  |  |  |  |  | 6.35d |  | Cognizant | 2h |  |
| 14 | 1.2.4 | **Mult Class Quote Step-up with Quotes only (Scenario 0)** |  | 0.32d | 2006-05-16 13:10 A | 2006-05-16 15:45 A | 13 | 100% |  |  |  |  |  |  | Cognizant | 5.17h | 5.17h |
| 15 | 1.2.4.1 | BC Cleanup, Initial Driver Setup, |  | 20min | 2006-05-16 13:10 A | 2006-05-16 13:30 A |  | 100% |  |  |  |  |  | start no earlier than 2006-04-24 08:00 | Cognizant | 0.33h | 0.33h |
| 16 | 1.2.4.2 | Test Execution for No BOTR |  | 1h | 2006-05-16 13:30 A | 2006-05-16 14:30 A | 15 | 100% |  |  |  |  |  | start no earlier than 2006-04-24 08:00 | Cognizant | 1h | 1h |
| 17 | 1.2.4.3 | endOfPerformance and Backup |  | 30min | 2006-05-16 14:30 A | 2006-05-16 15:00 A | 16 | 100% |  |  |  |  |  |  | Cognizant | 0.5h | 0.5h |
| 18 | 1.2.4.4 | Reporting through KR site |  | 15min | 2006-05-16 15:00 A | 2006-05-16 15:15 A | 17 | 100% |  |  |  |  |  |  | Cognizant | 0.25h | 0.25h |
| 19 | 1.2.4.5 | Check: Sign Off on Logs and Results |  | 30min | 2006-05-16 15:15 A | 2006-05-16 15:45 A | 18 | 100% |  |  |  |  |  |  | CBOE | 0.5h | 0.5h |
| 20 | 1.12 | **Multi-class Quote step-up test with BOTR [Scenario 3]** |  | 0.45d | 2006-05-16 15:45 A | 2006-05-17 10:20 A | 14 | 100% |  | 2006-05-05 08:10 | 2006-05-05 11:15 | 0.39d |  |  | Cognizant | 7.17h | 7.17h |
| 21 | 1.12.1 | BC Cleanup, Initial Driver Setup, |  | 20min | 2006-05-16 15:45 A | 2006-05-16 16:05 A |  | 100% |  | 2006-05-05 08:10 | 2006-05-05 08:30 | 20min |  |  | Cognizant | 0.33h | 0.33h |
| 22 | 1.12.2 | Test Execution for No BOTR |  | 1h | 2006-05-16 16:05 A | 2006-05-17 08:05 A | 21 | 100% |  | 2006-05-05 08:30 | 2006-05-05 09:30 | 1h |  |  | Cognizant | 1h | 1h |
| 23 | 1.12.3 | BOTR from 4000 to 16000 |  | 30min | 2006-05-17 08:05 A | 2006-05-17 08:35 A | 22 | 100% |  | 2006-05-05 09:30 | 2006-05-05 10:00 | 30min |  |  | Cognizant | 0.5h | 0.5h |
| 24 | 1.12.4 | endOfPerformance and Backup |  | 45min | 2006-05-17 08:35 A | 2006-05-17 09:20 A | 23 | 100% |  | 2006-05-05 10:00 | 2006-05-05 10:45 | 45min |  |  | Cognizant | 0.75h | 0.75h |
| 25 | 1.12.5 | Reporting through KR site |  | 30min | 2006-05-17 09:20 A | 2006-05-17 09:50 A | 24 | 100% |  | 2006-05-05 10:45 | 2006-05-05 11:15 | 30min |  |  | Cognizant | 0.5h | 0.5h |
| 26 | 1.2.6.6 | Check: Sign Off on Logs and Results |  | 30min | 2006-05-17 09:50 A | 2006-05-17 10:20 A | 25 | 100% |  | 2006-05-05 11:15 | 2006-05-05 11:15 | 0h |  |  | CBOE | 0.5h | 0.5h |

| ID | WBS | Task | Type | Duration | Start | Finish | Predecessors | Complete | Baseline start | Baseline finish | Baseline duration | Resources | Work | Actual work |
| --- | --- | --- | --- | --- | --- | --- | --- | --- | --- | --- | --- | --- | --- | --- |
| 27 | 1.13 | **Single-class Quote step-up test with BOTR [Scenario 1]** |  | 0.41d | 2006-05-17 10:20 A | 2006-05-17 14:35 A | 20 | 100% | 2006-05-05 11:15 | 2006-05-05 15:00 | 0.34d | Cognizant | 6.5h | 6.5h |
| 28 | 1.13.1 | BC Cleanup, Initial Driver Setup, |  | 20min | 2006-05-17 10:20 A | 2006-05-17 10:40 A | 26 | 100% | 2006-05-05 11:15 | 2006-05-05 11:35 | 20min | Cognizant | 0.33h | 0.33h |
| 29 | 1.13.2 | Test Execution for No BOTR |  | 1h | 2006-05-17 10:40 A | 2006-05-17 11:40 A | 28 | 100% | 2006-05-05 11:35 | 2006-05-05 13:35 | 1h | Cognizant | 1h | 1h |
| 30 | 1.13.3 | BOTR 16000 |  | 10min | 2006-05-17 11:40 A | 2006-05-17 11:50 A | 29 | 100% | 2006-05-05 13:35 | 2006-05-05 13:45 | 10min | Cognizant | 0.17h | 0.17h |
| 31 | 1.13.4 | endOfPerformance and Backup |  | 45min | 2006-05-17 11:50 A | 2006-05-17 13:35 A | 30 | 100% | 2006-05-05 13:45 | 2006-05-05 14:30 | 45min | Cognizant | 0.75h | 0.75h |
| 32 | 1.13.5 | Reporting through KR site |  | 30min | 2006-05-17 13:35 A | 2006-05-17 14:05 A | 31 | 100% | 2006-05-05 14:30 | 2006-05-05 15:00 | 30min | Cognizant | 0.5h | 0.5h |
| 33 | 1.2.7.6 | Check: Sign Off On Logs and Results |  | 30min | 2006-05-17 14:05 A | 2006-05-17 14:35 A | 32 | 100% | 2006-05-05 15:00 | 2006-05-05 15:00 | 0h | CBOE | 0.5h | 0.5h |
| 34 | 1.14 | **Multi-class Order step-up test [Scenario 4]** |  | 0.24d | 2006-05-17 14:35 A | 2006-05-17 16:30 A | 27 | 100% | 2006-05-05 15:00 | 2006-05-05 16:55 | 0.24d | Cognizant | 3.83h | 3.83h |
| 35 | 1.14.1 | BC Cleanup, Initial Driver Setup, |  | 20min | 2006-05-17 14:35 A | 2006-05-17 14:55 A | 33 | 100% | 2006-05-05 15:00 | 2006-05-05 15:20 | 20min | Cognizant | 0.33h | 0.33h |
| 36 | 1.14.2 | Test Execution for No BOTR |  | 1h | 2006-05-17 14:55 A | 2006-05-17 15:55 A | 35 | 100% | 2006-05-05 15:20 | 2006-05-05 16:20 | 1h | Cognizant | 1h | 1h |
| 37 | 1.14.3 | endOfPerformance and Backup |  | 20min | 2006-05-17 15:55 A | 2006-05-17 16:15 A | 36 | 100% | 2006-05-05 16:20 | 2006-05-05 16:40 | 20min | Cognizant | 0.33h | 0.33h |
| 38 | 1.14.4 | Reporting through KR site |  | 15min | 2006-05-17 16:15 A | 2006-05-17 16:30 A | 37 | 100% | 2006-05-05 16:40 | 2006-05-05 16:55 | 15min | Cognizant | 0.25h | 0.25h |
| 39 | 1.2.8.5 | Check: Sign Off on Logs and Results | milestone | 0h | 2006-05-17 16:30 A | 2006-05-17 16:30 A | 38 | 100% | 2006-05-05 16:55 | 2006-05-05 16:55 | 0h | CBOE |  |  |
| 40 | 1.15 | **Hybrid BC failover (new release to old release)** |  | 0.49d | 2006-05-17 16:30 A | 2006-05-18 11:25 A | 34 | 100% | 2006-05-08 16:55 | 2006-05-09 10:40 | 0.34d | Cognizant | 7.83h | 7.83h |
| 41 | 1.2.9.1 | BC Cleanup start A Side as Master |  | 20min | 2006-05-17 16:30 A | 2006-05-17 16:50 A | 39 | 100% | 2006-05-08 16:55 | 2006-05-09 08:15 | 20min | Cognizant | 0.33h | 0.33h |
| 42 | 1.2.9.2 | Manual Testing by Mark Sabor |  | 1h | 2006-05-17 16:50 A | 2006-05-18 08:50 A | 41 | 100% |  |  |  | CBOE | 1h | 1h |
| 43 | 1.15.1 | Initial setup for test Drivers (starting processes on BC Slave.) |  | 25min | 2006-05-18 08:50 A | 2006-05-18 09:15 A | 42 | 100% | 2006-05-09 08:15 | 2006-05-09 08:40 | 25min | Cognizant | 0.42h | 0.42h |
| 44 | 1.15.2 | Quote/Order BC20 Hybrid traffic going before/during/after failover. Test Execution |  | 40min | 2006-05-18 09:15 A | 2006-05-18 09:55 A | 43 | 100% | 2006-05-09 08:40 | 2006-05-09 09:10 | 30min | Cognizant | 0.67h | 0.67h |
| 45 | 1.15.3 | ITG Checkout script (for W_MAIN Session) |  | 20min | 2006-05-18 09:55 A | 2006-05-18 10:15 A | 44 | 100% | 2006-05-09 09:10 | 2006-05-09 09:50 | 40min | Cognizant | 0.33h | 0.33h |
| 46 | 1.15.4 | Backup for Failover and ITG Checkout |  | 20min | 2006-05-18 10:15 A | 2006-05-18 10:35 A | 45 | 100% | 2006-05-09 09:50 | 2006-05-09 10:10 | 20min | Cognizant | 0.33h | 0.33h |
| 47 | 1.15.5 | Generate Report for Failover Timings for all BC Processes (taking time from log files) |  | 20min | 2006-05-18 10:35 A | 2006-05-18 10:55 A | 46 | 100% | 2006-05-09 10:10 | 2006-05-09 10:40 | 30min | Cognizant | 0.33h | 0.33h |
| 48 | 1.2.9.8 | Check: Sign Off on Checkout Scripts, Logs and Results |  | 30min | 2006-05-18 10:55 A | 2006-05-18 11:25 A | 47 | 100% | 2006-05-09 10:40 | 2006-05-09 10:40 | 0h | CBOE | 0.5h | 0.5h |
| 49 | 1.5 | **Install and Perform Failover on Hybrid BC B Side** |  | 0.76d | 2006-05-18 11:25 A | 2006-05-19 09:30 A | 7 | 100% | 2006-05-09 10:40 | 2006-05-09 16:25 | 0.59d | Cognizant | 18.25h | 18.25h |
| 50 | 1.16 | **Install Hybrid BC "B" side** |  | 0.31d | 2006-05-18 11:25 A | 2006-05-18 14:55 A | 40 | 100% | 2006-05-09 10:40 | 2006-05-09 14:00 | 0.29d | Cognizant | 5h | 5h |
| 51 | 1.3.1.1 | Cleanup |  | 20min | 2006-05-18 11:25 A | 2006-05-18 11:45 A | 48 | 100% | 2006-05-09 10:40 | 2006-05-09 11:00 | 20min | Cognizant | 0.33h | 0.33h |
| 52 | 1.16.1 | Configuration and starting processes |  | 1h | 2006-05-18 11:45 A | 2006-05-18 13:45 A | 51 | 100% | 2006-05-09 11:00 | 2006-05-09 12:00 | 1h | Cognizant | 1h | 1h |
| 53 | 1.16.2 | ITG Checkout script (W_MAIN Session) |  | 20min | 2006-05-18 13:45 A | 2006-05-18 14:05 A | 52 | 100% | 2006-05-09 13:00 | 2006-05-09 13:40 | 40min | Cognizant | 0.33h | 0.33h |
| 54 | 1.16.3 | Backup and Reporting |  | 20min | 2006-05-18 14:05 A | 2006-05-18 14:25 A | 53 | 100% | 2006-05-09 13:40 | 2006-05-09 14:00 | 20min | Cognizant | 0.33h | 0.33h |
| 55 | 1.3.1.5 | Check: Sign Off on Checkout Scripts, Logs and Results |  | 30min | 2006-05-18 14:25 A | 2006-05-18 14:55 A | 54 | 100% | 2006-05-09 14:00 | 2006-05-09 14:00 | 0h | CBOE | 0.5h | 0.5h |

| ID | WBS | Task | Duration | Start | Finish | Predecessors | Complete | Baseline start | Baseline finish | Baseline duration | Resources | Work | Actual work |
| --- | --- | --- | --- | --- | --- | --- | --- | --- | --- | --- | --- | --- | --- |
| 56 | 1.17 | **Hybrid BC failover (new release to new release)** | 0.45d | 2006-05-18 14:55 A | 2006-05-19 09:30 A | 50 | 100% | 2006-05-09 14:00 | 2006-05-09 16:25 | 0.3d | Cognizant | 7.17h | 7.17h |
| 57 | 1.17.1 | Initial setup for test Drivers (starting processes on BC Slave.) | 25min | 2006-05-18 14:55 A | 2006-05-18 15:20 A | 55 | 100% | 2006-05-09 14:00 | 2006-05-09 14:25 | 25min | Cognizant | 0.42h | 0.42h |
| 58 | 1.3.2.2 | Manual Testing by Mark Sabor | 1h | 2006-05-18 15:20 A | 2006-05-18 16:20 A | 57 | 100% |  |  |  | CBOE | 1h | 1h |
| 59 | 1.17.2 | Quote/Order BC20 Hybrid traffic going before/during/after failover. Test Execution | 40min | 2006-05-18 16:20 A | 2006-05-18 17:00 A | 58 | 100% | 2006-05-09 14:25 | 2006-05-09 14:55 | 30min | Cognizant | 0.67h | 0.67h |
| 60 | 1.17.3 | ITG Checkout script (for W_MAIN Session) | 20min | 2006-05-19 08:00 A | 2006-05-19 08:20 A | 59 | 100% | 2006-05-09 14:55 | 2006-05-09 15:35 | 40min | Cognizant | 0.33h | 0.33h |
| 61 | 1.17.4 | Backup for Failover and ITG Checkout | 20min | 2006-05-19 08:20 A | 2006-05-19 08:40 A | 60 | 100% | 2006-05-09 15:35 | 2006-05-09 15:55 | 20min | Cognizant | 0.33h | 0.33h |
| 62 | 1.17.5 | Generate Report for Failover Timings for all BC Processes (taking time from log files) | 20min | 2006-05-19 08:40 A | 2006-05-19 09:00 A | 61 | 100% | 2006-05-09 15:55 | 2006-05-09 16:25 | 30min | Cognizant | 0.33h | 0.33h |
| 63 | 1.3.2.7 | Check: Sign Off on Checkout Scripts,Logs and Results | 30min | 2006-05-19 09:00 A | 2006-05-19 09:30 A | 62 | 100% | 2006-05-09 16:25 | 2006-05-09 16:25 | 0h | CBOE | 0.5h | 0.5h |
| 64 | 1.6 | **Install and Perform Tests on ONE_MAIN BC A Side** | 1.26d | 2006-05-19 13:50 A | 2006-05-22 15:55 A | 49 | 100% | 2006-05-09 16:25 | 2006-05-11 08:10 | 1.09d | Cognizant | 30.25h | 30.25h |
| 65 | 1.26 | **Install ONE_MAIN BC (A)** | 0.27d | 2006-05-19 13:50 A | 2006-05-19 16:00 A | 56 | 100% | 2006-05-09 16:25 | 2006-05-10 09:25 | 0.25d | Cognizant | 4.33h | 4.33h |
| 66 | 1.26.1 | Configuration and starting processes | 1h | 2006-05-19 13:50 A | 2006-05-19 14:50 A | 63 | 100% | 2006-05-09 16:25 | 2006-05-10 08:25 | 1h | Cognizant | 1h | 1h |
| 67 | 1.26.2 | ITG Checkout script (ONE_MAIN Session) | 20min | 2006-05-19 14:50 A | 2006-05-19 15:10 A | 66 | 100% | 2006-05-10 08:25 | 2006-05-10 09:05 | 40min | Cognizant | 0.33h | 0.33h |
| 68 | 1.26.3 | Backup and Reporting | 20min | 2006-05-19 15:10 A | 2006-05-19 15:30 A | 67 | 100% | 2006-05-10 09:05 | 2006-05-10 09:25 | 20min | Cognizant | 0.33h | 0.33h |
| 69 | 1.4.1.4 | Check: Sign Off on Checkout Scripts, Logs and Results | 30min | 2006-05-19 15:30 A | 2006-05-19 16:00 A | 68 | 100% | 2006-05-10 09:25 | 2006-05-10 09:25 | 0h | CBOE | 0.5h | 0.5h |
| 70 | 1.27 | **Multi-class Order step-up test for ONE_MAIN [Scenario 2]** | 0.29d | 2006-05-19 16:00 A | 2006-05-22 09:20 A | 65 | 100% | 2006-05-10 09:25 | 2006-05-10 11:15 | 0.23d | Cognizant | 4.67h | 4.67h |
| 71 | 1.27.1 | BC Cleanup, Initial Driver Setup, | 20min | 2006-05-19 16:00 A | 2006-05-19 16:20 A |  | 100% | 2006-05-10 09:25 | 2006-05-10 09:45 | 20min | Cognizant | 0.33h | 0.33h |
| 72 | 1.27.2 | Test Execution for No BOTR | 1h | 2006-05-19 16:20 A | 2006-05-22 08:20 A | 71 | 100% | 2006-05-10 09:45 | 2006-05-10 10:45 | 1h | Cognizant | 1h | 1h |
| 73 | 1.27.3 | endOfPerformance and Backup | 15min | 2006-05-22 08:20 A | 2006-05-22 08:35 A | 72 | 100% | 2006-05-10 10:45 | 2006-05-10 11:00 | 15min | Cognizant | 0.25h | 0.25h |
| 74 | 1.27.4 | Reporting through KR site | 15min | 2006-05-22 08:35 A | 2006-05-22 08:50 A | 73 | 100% | 2006-05-10 11:00 | 2006-05-10 11:15 | 15min | Cognizant | 0.25h | 0.25h |
| 75 | 1.4.2.5 | Check: Sign Off on Logs and Results | 30min | 2006-05-22 08:50 A | 2006-05-22 09:20 A | 74 | 100% | 2006-05-10 11:15 | 2006-05-10 11:15 | 0h | CBOE | 0.5h | 0.5h |
| 76 | 1.28 | **Multi-class Quote step-up test [Scenario 1]** | 0.33d | 2006-05-22 09:20 A | 2006-05-22 12:00 A | 70 | 100% | 2006-05-10 11:15 | 2006-05-10 14:25 | 0.27d | Cognizant | 5.33h | 5.33h |
| 77 | 1.28.1 | BC Cleanup, Initial Driver Setup, | 20min | 2006-05-22 09:20 A | 2006-05-22 09:40 A |  | 100% | 2006-05-10 11:15 | 2006-05-10 11:35 | 20min | Cognizant | 0.33h | 0.33h |
| 78 | 1.28.2 | Test Execution for No BOTR | 1h | 2006-05-22 09:40 A | 2006-05-22 10:40 A | 77 | 100% | 2006-05-10 11:35 | 2006-05-10 13:35 | 1h | Cognizant | 1h | 1h |
| 79 | 1.28.3 | endOfPerformance and Backup | 30min | 2006-05-22 10:40 A | 2006-05-22 11:10 A | 78 | 100% | 2006-05-10 13:35 | 2006-05-10 14:05 | 30min | Cognizant | 0.5h | 0.5h |
| 80 | 1.28.4 | Reporting through KR site | 20min | 2006-05-22 11:10 A | 2006-05-22 11:30 A | 79 | 100% | 2006-05-10 14:05 | 2006-05-10 14:25 | 20min | Cognizant | 0.33h | 0.33h |
| 81 | 1.4.3.5 | Check: Sign Off on Logs and Results | 30min | 2006-05-22 11:30 A | 2006-05-22 12:00 A | 80 | 100% | 2006-05-10 14:25 | 2006-05-10 14:25 | 0h | CBOE | 0.5h | 0.5h |

| ID | WBS | Task | Duration | Start | Finish | Predecessors | Complete | Baseline start | Baseline finish | Baseline duration | Total slack | Resources | Work | Actual work |
| --- | --- | --- | --- | --- | --- | --- | --- | --- | --- | --- | --- | --- | --- | --- |
| 82 | 1.30 | **Failover ONE_MAIN BC (Old to New)** | 0.36d | 2006-05-22 13:00 A | 2006-05-22 15:55 A | 76 | 100% | 2006-05-10 14:25 | 2006-05-11 08:10 | 0.34d |  | Cognizant | 5.83h | 5.83h |
| 83 | 1.4.4.1 | Cleanup | 20min | 2006-05-22 13:00 A | 2006-05-22 13:20 A | 81 | 100% | 2006-05-10 14:25 | 2006-05-10 14:45 | 20min |  | Cognizant | 0.33h | 0.33h |
| 84 | 1.30.1 | Initial setup for test Drivers (starting processes on BC Slave.) | 25min | 2006-05-22 13:20 A | 2006-05-22 13:45 A | 83 | 100% | 2006-05-10 14:45 | 2006-05-10 15:10 | 25min |  | Cognizant | 0.42h | 0.42h |
| 85 | 1.30.2 | Quote/Order ONE_MAIN traffic going before/during/after failover. Test Execution | 40min | 2006-05-22 13:45 A | 2006-05-22 14:25 A | 84 | 100% | 2006-05-10 15:10 | 2006-05-10 15:40 | 30min |  | Cognizant | 0.67h | 0.67h |
| 86 | 1.30.3 | ITG Checkout script (for ONE_MAIN Session) | 20min | 2006-05-22 14:25 A | 2006-05-22 14:45 A | 85 | 100% | 2006-05-10 15:40 | 2006-05-10 16:20 | 40min |  | Cognizant | 0.33h | 0.33h |
| 87 | 1.30.4 | Backup for Failover and ITG Checkout | 20min | 2006-05-22 14:45 A | 2006-05-22 15:05 A | 86 | 100% | 2006-05-10 16:20 | 2006-05-10 16:40 | 20min |  | Cognizant | 0.33h | 0.33h |
| 88 | 1.30.5 | Generate Report for Failover Timings for all BC Processes (taking time from log files) | 20min | 2006-05-22 15:05 A | 2006-05-22 15:25 A | 87 | 100% | 2006-05-10 16:40 | 2006-05-11 08:10 | 30min |  | Cognizant | 0.33h | 0.33h |
| 89 | 1.4.4.7 | Check: Sign Off on Checkout Scripts,Logs and Results | 30min | 2006-05-22 15:25 A | 2006-05-22 15:55 A | 88 | 100% | 2006-05-11 08:10 | 2006-05-11 08:10 | 0h |  | CBOE | 0.5h | 0.5h |
| 90 | 1.7 | **Install and Perform failover on ONE_MAIN BC B Side** | 0.59d | 2006-05-22 15:55 A | 2006-05-23 11:40 A | 64 | 100% | 2006-05-11 08:10 | 2006-05-11 13:55 | 0.59d |  | Cognizant | 14.25h | 14.25h |
| 91 | 1.31 | **Install ONE_MAIN BC (B)** | 0.27d | 2006-05-22 15:55 A | 2006-05-23 09:05 A | 82 | 100% | 2006-05-11 08:10 | 2006-05-11 10:10 | 0.25d |  | Cognizant | 4.33h | 4.33h |
| 92 | 1.31.1 | Configuration and starting processes | 1h | 2006-05-22 15:55 A | 2006-05-22 16:55 A | 89 | 100% | 2006-05-11 08:10 | 2006-05-11 09:10 | 1h |  | Cognizant | 1h | 1h |
| 93 | 1.31.2 | ITG Checkout script ( ONE_MAIN Session) | 20min | 2006-05-22 16:55 A | 2006-05-23 08:15 A | 92 | 100% | 2006-05-11 09:10 | 2006-05-11 09:50 | 40min |  | Cognizant | 0.33h | 0.33h |
| 94 | 1.31.3 | Backup and Reporting | 20min | 2006-05-23 08:15 A | 2006-05-23 08:35 A | 93 | 100% | 2006-05-11 09:50 | 2006-05-11 10:10 | 20min |  | Cognizant | 0.33h | 0.33h |
| 95 | 1.5.1.4 | Check: Sign Off on Checkout Scripts, Logs and Results | 30min | 2006-05-23 08:35 A | 2006-05-23 09:05 A | 94 | 100% | 2006-05-11 10:10 | 2006-05-11 10:10 | 0h |  | CBOE | 0.5h | 0.5h |
| 96 | 1.5.2 | **Failover ONE_MAIN BC (New to New)** | 0.32d | 2006-05-23 09:05 A | 2006-05-23 11:40 A | 91 | 100% | 2006-05-11 10:10 | 2006-05-11 13:55 | 0.34d |  | Cognizant | 5.17h | 5.17h |
| 97 | 1.5.2.1 | Initial setup for test Drivers (starting processes on BC Slave.) | 25min | 2006-05-23 09:05 A | 2006-05-23 09:30 A | 95 | 100% | 2006-05-11 10:30 | 2006-05-11 10:55 | 25min |  | Cognizant | 0.42h | 0.42h |
| 98 | 1.5.2.2 | Quote/Order ONE_MAIN traffic going before/during/after failover. Test Execution | 40min | 2006-05-23 09:30 A | 2006-05-23 10:10 A | 97 | 100% | 2006-05-11 10:55 | 2006-05-11 11:25 | 30min |  | Cognizant | 0.67h | 0.67h |
| 99 | 1.5.2.3 | ITG Checkout script (for ONE_MAIN Session) | 20min | 2006-05-23 10:10 A | 2006-05-23 10:30 A | 98 | 100% | 2006-05-11 11:25 | 2006-05-11 13:05 | 40min |  | Cognizant | 0.33h | 0.33h |
| 100 | 1.5.2.4 | Backup for Failover and ITG Checkout | 20min | 2006-05-23 10:30 A | 2006-05-23 10:50 A | 99 | 100% | 2006-05-11 13:05 | 2006-05-11 13:25 | 20min |  | Cognizant | 0.33h | 0.33h |
| 101 | 1.5.2.5 | Generate Report for Failover Timings for all BC Processes (taking time from log files) | 20min | 2006-05-23 10:50 A | 2006-05-23 11:10 A | 100 | 100% | 2006-05-11 13:25 | 2006-05-11 13:55 | 30min |  | Cognizant | 0.33h | 0.33h |
| 102 | 1.5.2.6 | Check: Sign Off on Checkout Scripts,Logs and Results | 30min | 2006-05-23 11:10 A | 2006-05-23 11:40 A | 101 | 100% | 2006-05-11 13:55 | 2006-05-11 13:55 | 0h |  | CBOE | 0.5h | 0.5h |
| 103 | 1.6 | **4 Hour Endurance Test** | 0.81d | 2006-05-23 11:40 | 2006-05-24 10:10 | 90 |  | 2006-05-11 13:55 | 2006-05-12 10:55 | 0.75d | 0d | Cognizant | 13h |  |
| 104 | 1.6.1 | Cleanup for W_MAIN and ONE_MAIN BC | 20min | 2006-05-23 11:40 | 2006-05-23 12:00 |  |  | 2006-05-11 13:55 | 2006-05-11 14:15 | 20min | 0d | Cognizant | 0.33h |  |
| 105 | 1.6.2 | Driver setup | 20min | 2006-05-23 13:00 | 2006-05-23 13:20 | 104 |  | 2006-05-11 14:15 | 2006-05-11 14:35 | 20min | 0d | Cognizant | 0.33h |  |
| 106 | 1.6.3 | CAS bounce | 20min | 2006-05-23 13:20 | 2006-05-23 13:40 | 105 |  | 2006-05-11 14:35 | 2006-05-11 14:55 | 20min | 0d | Cognizant | 0.33h |  |
| 107 | 1.6.4 | 4 hour Sanity Check | 4h | 2006-05-23 13:40 | 2006-05-24 08:40 | 106 |  | 2006-05-11 14:55 | 2006-05-12 09:55 | 4h | 0d | Cognizant | 4h |  |
| 108 | 1.6.5 | endOfPerformance and Backup and Reporting | 1h | 2006-05-24 08:40 | 2006-05-24 09:40 | 107 |  | 2006-05-12 09:55 | 2006-05-12 10:55 | 1h | 0d | Cognizant | 1h |  |
| 109 | 1.6.6 | Check: Sign Off on Logs and Results | 30min | 2006-05-24 09:40 | 2006-05-24 10:10 | 108 |  | 2006-05-12 10:55 | 2006-05-12 10:55 | 0h | 0d | CBOE | 0.5h |  |

| ID | WBS | Task | Type | Duration | Start | Finish | Predecessors | Baseline start | Baseline finish | Baseline duration | Total slack | Resources | Work |
| --- | --- | --- | --- | --- | --- | --- | --- | --- | --- | --- | --- | --- | --- |
| 110 | 1.42 | **Server Side Full Cleanup after All Server upgrades.** |  | 0.6d | 2006-05-24 10:10 | 2006-05-24 16:00 | 103 | 2006-05-15 08:55 | 2006-05-15 14:15 | 0.54d | 0d | Cognizant | 9.67h |
| 111 | 1.42.1 | Time server full startup after cleanup (See Server Startup Timing Page) |  | 4h | 2006-05-24 10:10 | 2006-05-24 15:10 | 109 | 2006-05-15 08:55 | 2006-05-15 13:55 | 4h | 0d | Cognizant | 4h |
| 112 | 1.42.2 | Backup for server Timings |  | 20min | 2006-05-24 15:10 | 2006-05-24 15:30 | 111 | 2006-05-15 13:55 | 2006-05-15 14:15 | 20min | 0d | Cognizant | 0.33h |
| 113 | 1.7.3 | Check: Sign Off on Logs and Results |  | 30min | 2006-05-24 15:30 | 2006-05-24 16:00 | 112 | 2006-05-15 14:15 | 2006-05-15 14:15 | 0h | 0d | CBOE | 0.5h |
| 114 | 1.8 | **Check: Overall Verification** |  | 0d | 2006-05-24 15:30 | 2006-05-24 15:30 |  | 2006-05-15 14:15 | 2006-05-15 14:15 | 0d | 0.06d | CBOE |  |
| 115 | 1.8.1 | All Results Signed Off | milestone | 0h | 2006-05-24 15:30 | 2006-05-24 15:30 | 112 | 2006-05-15 14:15 | 2006-05-15 14:15 | 0h | 0.06d | CBOE |  |
| 116 | 1.8.2 | All Tests Completed | milestone | 0h | 2006-05-24 15:30 | 2006-05-24 15:30 | 112 | 2006-05-15 14:15 | 2006-05-15 14:15 | 0h | 0.06d | CBOE |  |
| 117 | 1.8.3 | Results approved by Paul and Respective Groups | milestone | 0h | 2006-05-24 15:30 | 2006-05-24 15:30 | 112 | 2006-05-15 14:15 | 2006-05-15 14:15 | 0h | 0.06d | CBOE |  |
