Schedule from MS Project, 2006-05-15 to 2006-05-24.
Cognizant Technology Solutions

## Calendars

- Standard: Mon-Fri 08:00-12:00, 13:00-17:00; Sat-Sun off.

## Resources

| Resource |
| --- |
| Cognizant |
| 2 |
| CBOE |
| Piwnicki |
| Bobbie |

## Schedule

| ID | WBS | Task | Type | Duration | Start | Finish | Predecessors | Baseline start | Baseline finish | Baseline duration | Total slack | Free slack | Constraint | Resources | Work |
| --- | --- | --- | --- | --- | --- | --- | --- | --- | --- | --- | --- | --- | --- | --- | --- |
| 1 | 1 | **Rollout Task** |  | 7.88d | 2006-05-15 08:00 | 2006-05-24 16:00 |  | 2006-05-02 08:00 | 2006-05-15 14:15 | 9.66d | 0d |  |  |  | 151.67h |
| 2 | 1.1 | **Pre-Rollout Verification/Changes [If required]** |  | 0d | 2006-05-15 08:00 | 2006-05-15 08:00 |  | 2006-05-02 08:00 | 2006-05-02 08:00 | 0d | 1d |  |  |  |  |
| 3 | 1.1.1 | Database changes | milestone | 0h | 2006-05-15 08:00 | 2006-05-15 08:00 |  | 2006-05-02 08:00 | 2006-05-02 08:00 | 0h | 1d | 0d | start no earlier than 2006-05-15 08:00 | CBOE |  |
| 4 | 1.1.2 | Extent Map changes | milestone | 0h | 2006-05-15 08:00 | 2006-05-15 08:00 | 3 | 2006-05-02 08:00 | 2006-05-02 08:00 | 0h | 1d | 0d |  | CBOE |  |
| 5 | 1.1.3 | Version label verification on all boxes | milestone | 0h | 2006-05-15 08:00 | 2006-05-15 08:00 | 4 | 2006-05-02 08:00 | 2006-05-02 08:00 | 0h | 1d | 0d |  | CBOE |  |
| 6 | 1.1.4 | Check: Tier Lead has verified information and obtained a sign off | milestone | 0h | 2006-05-15 08:00 | 2006-05-15 08:00 | 3, 4, 5 | 2006-05-02 08:00 | 2006-05-02 08:00 | 0h | 1d |  |  | CBOE |  |
| 7 | 1.4 | **Install and Perform Tests on Hybrid BC A Side** |  | 2.84d | 2006-05-16 08:00 | 2006-05-18 15:45 | 2 | 2006-05-04 11:50 | 2006-05-09 10:40 | 2.85d | 0d |  |  | Cognizant | 66.25h |
| 8 | 1.10 | **Install Hybrid BC (A)** |  | 0.27d | 2006-05-16 08:00 | 2006-05-16 10:10 |  | 2006-05-04 11:50 | 2006-05-04 14:50 | 0.25d | 0d |  |  | Cognizant | 4.33h |
| 9 | 1.10.1 | Configuration and starting processes |  | 1h | 2006-05-16 08:00 | 2006-05-16 09:00 |  | 2006-05-04 11:50 | 2006-05-04 13:50 | 1h | 0d |  | start no earlier than 2006-05-16 08:00 | Cognizant | 1h |
| 10 | 1.10.2 | ITG Checkout script (W_MAIN Session) |  | 20min | 2006-05-16 09:00 | 2006-05-16 09:20 | 9 | 2006-05-04 13:50 | 2006-05-04 14:30 | 40min | 0d |  |  | Cognizant | 0.33h |
| 11 | 1.10.3 | Backup and Reporting |  | 20min | 2006-05-16 09:20 | 2006-05-16 09:40 | 10 | 2006-05-04 14:30 | 2006-05-04 14:50 | 20min | 0d |  |  | Cognizant | 0.33h |
| 12 | 1.2.1.4 | Check: Sign Off on Checkout Scripts, Logs and Results |  | 30min | 2006-05-16 09:40 | 2006-05-16 10:10 | 11 | 2006-05-04 14:50 | 2006-05-04 14:50 | 0h | 0d |  |  | CBOE | 0.5h |
| 13 | 1.2.2 | FIX Strategy Order Test |  | 2h | 2006-05-16 10:10 | 2006-05-16 13:10 | 8 |  |  |  | 0d |  |  | Cognizant | 2h |
| 14 | 1.2.3 | **Global Dependency Test** |  | 0.17d | 2006-05-16 13:10 | 2006-05-16 14:30 | 13 | 2006-05-04 14:50 | 2006-05-04 15:40 | 0.1d | 0d |  |  | Cognizant | 2.67h |
| 15 | 1.2.3.1 | Test Execution |  | 30min | 2006-05-16 13:10 | 2006-05-16 13:40 | 12 | 2006-05-04 14:50 | 2006-05-04 15:20 | 30min | 0d |  | start no earlier than 2006-05-05 08:00 | Cognizant | 0.5h |
| 16 | 1.2.3.2 | Log Backup and Reporting |  | 20min | 2006-05-16 13:40 | 2006-05-16 14:00 | 15 | 2006-05-04 15:20 | 2006-05-04 15:40 | 20min | 0d |  |  | Cognizant | 0.33h |
| 17 | 1.2.3.3 | Check:Log and Results verification |  | 30min | 2006-05-16 14:00 | 2006-05-16 14:30 | 16 | 2006-05-04 15:40 | 2006-05-04 15:40 | 0h | 0d |  |  | Cognizant | 0.5h |
| 18 | 1.2.4 | **Mult Class Quote Step-up with Quotes only (Scenario 0)** |  | 0.32d | 2006-05-16 14:30 | 2006-05-17 08:05 | 14 |  |  |  | 0d |  |  | Cognizant | 5.17h |
| 19 | 1.2.4.1 | BC Cleanup, Initial Driver Setup, |  | 20min | 2006-05-16 14:30 | 2006-05-16 14:50 | 17 |  |  |  | 0d |  | start no earlier than 2006-04-24 08:00 | Cognizant | 0.33h |
| 20 | 1.2.4.2 | Test Execution for No BOTR |  | 1h | 2006-05-16 14:50 | 2006-05-16 15:50 | 19 |  |  |  | 0d |  | start no earlier than 2006-04-24 08:00 | Cognizant | 1h |
| 21 | 1.2.4.3 | endOfPerformance and Backup |  | 30min | 2006-05-16 15:50 | 2006-05-16 16:20 | 20 |  |  |  | 0d |  |  | Cognizant | 0.5h |
| 22 | 1.2.4.4 | Reporting through KR site |  | 15min | 2006-05-16 16:20 | 2006-05-16 16:35 | 21 |  |  |  | 0d |  |  | Cognizant | 0.25h |
| 23 | 1.2.4.5 | Check: Sign Off on Logs and Results |  | 30min | 2006-05-16 16:35 | 2006-05-17 08:05 | 22 |  |  |  | 0d |  |  | CBOE | 0.5h |
| 24 | 1.2.5 | **Hybrid test scenario 5 (Product State Change Test)** |  | 0.25d | 2006-05-17 08:05 | 2006-05-17 10:05 | 18 | 2006-05-04 15:40 | 2006-05-05 08:10 | 0.19d | 0d |  |  | Cognizant | 4h |
| 25 | 1.2.5.1 | BC Cleanup, Initial Driver Setup, |  | 20min | 2006-05-17 08:05 | 2006-05-17 08:25 | 17 | 2006-05-04 15:40 | 2006-05-04 16:00 | 20min | 0d |  |  | Cognizant | 0.33h |
| 26 | 1.2.5.2 | Test Execution - Global Server Bounce |  | 40min | 2006-05-17 08:25 | 2006-05-17 09:05 | 25 | 2006-05-04 16:00 | 2006-05-04 16:40 | 40min | 0d |  |  | Cognizant | 0.67h |
| 27 | 1.2.5.3 | Monitor and Backup logs |  | 20min | 2006-05-17 09:05 | 2006-05-17 09:25 | 26 | 2006-05-04 16:40 | 2006-05-04 17:00 | 20min | 0d |  |  | Cognizant | 0.33h |
| 28 | 1.2.5.4 | Reporting through KR site |  | 10min | 2006-05-17 09:25 | 2006-05-17 09:35 | 27 | 2006-05-05 08:00 | 2006-05-05 08:10 | 10min | 0d |  |  | Cognizant | 0.17h |
| 29 | 1.2.5.5 | Check: Sign Off on Logs and Results |  | 30min | 2006-05-17 09:35 | 2006-05-17 10:05 | 28 | 2006-05-05 08:10 | 2006-05-05 08:10 | 0h | 0d |  |  | CBOE | 0.5h |

| ID | WBS | Task | Type | Duration | Start | Finish | Predecessors | Baseline start | Baseline finish | Baseline duration | Total slack | Resources | Work |
| --- | --- | --- | --- | --- | --- | --- | --- | --- | --- | --- | --- | --- | --- |
| 30 | 1.12 | **Multi-class Quote step-up test with BOTR [Scenario 3]** |  | 0.45d | 2006-05-17 10:05 | 2006-05-17 14:40 | 24 | 2006-05-05 08:10 | 2006-05-05 11:15 | 0.39d | 0d | Cognizant | 7.17h |
| 31 | 1.12.1 | BC Cleanup, Initial Driver Setup, |  | 20min | 2006-05-17 10:05 | 2006-05-17 10:25 | 29 | 2006-05-05 08:10 | 2006-05-05 08:30 | 20min | 0d | Cognizant | 0.33h |
| 32 | 1.12.2 | Test Execution for No BOTR |  | 1h | 2006-05-17 10:25 | 2006-05-17 11:25 | 31 | 2006-05-05 08:30 | 2006-05-05 09:30 | 1h | 0d | Cognizant | 1h |
| 33 | 1.12.3 | BOTR from 4000 to 16000 |  | 30min | 2006-05-17 11:25 | 2006-05-17 11:55 | 32 | 2006-05-05 09:30 | 2006-05-05 10:00 | 30min | 0d | Cognizant | 0.5h |
| 34 | 1.12.4 | endOfPerformance and Backup |  | 45min | 2006-05-17 11:55 | 2006-05-17 13:40 | 33 | 2006-05-05 10:00 | 2006-05-05 10:45 | 45min | 0d | Cognizant | 0.75h |
| 35 | 1.12.5 | Reporting through KR site |  | 30min | 2006-05-17 13:40 | 2006-05-17 14:10 | 34 | 2006-05-05 10:45 | 2006-05-05 11:15 | 30min | 0d | Cognizant | 0.5h |
| 36 | 1.2.6.6 | Check: Sign Off on Logs and Results |  | 30min | 2006-05-17 14:10 | 2006-05-17 14:40 | 35 | 2006-05-05 11:15 | 2006-05-05 11:15 | 0h | 0d | CBOE | 0.5h |
| 37 | 1.13 | **Single-class Quote step-up test with BOTR [Scenario 1]** |  | 0.41d | 2006-05-17 14:40 | 2006-05-18 08:55 | 30 | 2006-05-05 11:15 | 2006-05-05 15:00 | 0.34d | 0d | Cognizant | 6.5h |
| 38 | 1.13.1 | BC Cleanup, Initial Driver Setup, |  | 20min | 2006-05-17 14:40 | 2006-05-17 15:00 | 36 | 2006-05-05 11:15 | 2006-05-05 11:35 | 20min | 0d | Cognizant | 0.33h |
| 39 | 1.13.2 | Test Execution for No BOTR |  | 1h | 2006-05-17 15:00 | 2006-05-17 16:00 | 38 | 2006-05-05 11:35 | 2006-05-05 13:35 | 1h | 0d | Cognizant | 1h |
| 40 | 1.13.3 | BOTR 16000 |  | 10min | 2006-05-17 16:00 | 2006-05-17 16:10 | 39 | 2006-05-05 13:35 | 2006-05-05 13:45 | 10min | 0d | Cognizant | 0.17h |
| 41 | 1.13.4 | endOfPerformance and Backup |  | 45min | 2006-05-17 16:10 | 2006-05-17 16:55 | 40 | 2006-05-05 13:45 | 2006-05-05 14:30 | 45min | 0d | Cognizant | 0.75h |
| 42 | 1.13.5 | Reporting through KR site |  | 30min | 2006-05-17 16:55 | 2006-05-18 08:25 | 41 | 2006-05-05 14:30 | 2006-05-05 15:00 | 30min | 0d | Cognizant | 0.5h |
| 43 | 1.2.7.6 | Check: Sign Off On Logs and Results |  | 30min | 2006-05-18 08:25 | 2006-05-18 08:55 | 42 | 2006-05-05 15:00 | 2006-05-05 15:00 | 0h | 0d | CBOE | 0.5h |
| 44 | 1.14 | **Multi-class Order step-up test [Scenario 4]** |  | 0.24d | 2006-05-18 08:55 | 2006-05-18 10:50 | 37 | 2006-05-05 15:00 | 2006-05-05 16:55 | 0.24d | 0d | Cognizant | 3.83h |
| 45 | 1.14.1 | BC Cleanup, Initial Driver Setup, |  | 20min | 2006-05-18 08:55 | 2006-05-18 09:15 | 43 | 2006-05-05 15:00 | 2006-05-05 15:20 | 20min | 0d | Cognizant | 0.33h |
| 46 | 1.14.2 | Test Execution for No BOTR |  | 1h | 2006-05-18 09:15 | 2006-05-18 10:15 | 45 | 2006-05-05 15:20 | 2006-05-05 16:20 | 1h | 0d | Cognizant | 1h |
| 47 | 1.14.3 | endOfPerformance and Backup |  | 20min | 2006-05-18 10:15 | 2006-05-18 10:35 | 46 | 2006-05-05 16:20 | 2006-05-05 16:40 | 20min | 0d | Cognizant | 0.33h |
| 48 | 1.14.4 | Reporting through KR site |  | 15min | 2006-05-18 10:35 | 2006-05-18 10:50 | 47 | 2006-05-05 16:40 | 2006-05-05 16:55 | 15min | 0d | Cognizant | 0.25h |
| 49 | 1.2.8.5 | Check: Sign Off on Logs and Results | milestone | 0h | 2006-05-18 10:50 | 2006-05-18 10:50 | 48 | 2006-05-05 16:55 | 2006-05-05 16:55 | 0h | 0d | CBOE |  |
| 50 | 1.15 | **Hybrid BC failover (new release to old release)** |  | 0.49d | 2006-05-18 10:50 | 2006-05-18 15:45 | 44 | 2006-05-08 16:55 | 2006-05-09 10:40 | 0.34d | 0d | Cognizant | 7.83h |
| 51 | 1.2.9.1 | BC Cleanup start A Side as Master |  | 20min | 2006-05-18 10:50 | 2006-05-18 11:10 | 49 | 2006-05-08 16:55 | 2006-05-09 08:15 | 20min | 0d | Cognizant | 0.33h |
| 52 | 1.2.9.2 | Manual Testing by Mark Sabor |  | 1h | 2006-05-18 11:10 | 2006-05-18 13:10 | 51 |  |  |  | 0d | CBOE | 1h |
| 53 | 1.15.1 | Initial setup for test Drivers (starting processes on BC Slave.) |  | 25min | 2006-05-18 13:10 | 2006-05-18 13:35 | 52 | 2006-05-09 08:15 | 2006-05-09 08:40 | 25min | 0d | Cognizant | 0.42h |
| 54 | 1.15.2 | Quote/Order BC20 Hybrid traffic going before/during/after failover. Test Execution |  | 40min | 2006-05-18 13:35 | 2006-05-18 14:15 | 53 | 2006-05-09 08:40 | 2006-05-09 09:10 | 30min | 0d | Cognizant | 0.67h |
| 55 | 1.15.3 | ITG Checkout script (for W_MAIN Session) |  | 20min | 2006-05-18 14:15 | 2006-05-18 14:35 | 54 | 2006-05-09 09:10 | 2006-05-09 09:50 | 40min | 0d | Cognizant | 0.33h |
| 56 | 1.15.4 | Backup for Failover and ITG Checkout |  | 20min | 2006-05-18 14:35 | 2006-05-18 14:55 | 55 | 2006-05-09 09:50 | 2006-05-09 10:10 | 20min | 0d | Cognizant | 0.33h |
| 57 | 1.15.5 | Generate Report for Failover Timings for all BC Processes (taking time from log files) |  | 20min | 2006-05-18 14:55 | 2006-05-18 15:15 | 56 | 2006-05-09 10:10 | 2006-05-09 10:40 | 30min | 0d | Cognizant | 0.33h |
| 58 | 1.2.9.8 | Check: Sign Off on Checkout Scripts, Logs and Results |  | 30min | 2006-05-18 15:15 | 2006-05-18 15:45 | 57 | 2006-05-09 10:40 | 2006-05-09 10:40 | 0h | 0d | CBOE | 0.5h |

| ID | WBS | Task | Duration | Start | Finish | Predecessors | Baseline start | Baseline finish | Baseline duration | Total slack | Resources | Work |
| --- | --- | --- | --- | --- | --- | --- | --- | --- | --- | --- | --- | --- |
| 59 | 1.5 | **Install and Perform Failover on Hybrid BC B Side** | 0.76d | 2006-05-18 15:45 | 2006-05-19 13:50 | 7 | 2006-05-09 10:40 | 2006-05-09 16:25 | 0.59d | 0d | Cognizant | 18.25h |
| 60 | 1.16 | **Install Hybrid BC "B" side** | 0.31d | 2006-05-18 15:45 | 2006-05-19 09:15 | 50 | 2006-05-09 10:40 | 2006-05-09 14:00 | 0.29d | 0d | Cognizant | 5h |
| 61 | 1.3.1.1 | Cleanup | 20min | 2006-05-18 15:45 | 2006-05-18 16:05 | 58 | 2006-05-09 10:40 | 2006-05-09 11:00 | 20min | 0d | Cognizant | 0.33h |
| 62 | 1.16.1 | Configuration and starting processes | 1h | 2006-05-18 16:05 | 2006-05-19 08:05 | 61 | 2006-05-09 11:00 | 2006-05-09 12:00 | 1h | 0d | Cognizant | 1h |
| 63 | 1.16.2 | ITG Checkout script (W_MAIN Session) | 20min | 2006-05-19 08:05 | 2006-05-19 08:25 | 62 | 2006-05-09 13:00 | 2006-05-09 13:40 | 40min | 0d | Cognizant | 0.33h |
| 64 | 1.16.3 | Backup and Reporting | 20min | 2006-05-19 08:25 | 2006-05-19 08:45 | 63 | 2006-05-09 13:40 | 2006-05-09 14:00 | 20min | 0d | Cognizant | 0.33h |
| 65 | 1.3.1.5 | Check: Sign Off on Checkout Scripts, Logs and Results | 30min | 2006-05-19 08:45 | 2006-05-19 09:15 | 64 | 2006-05-09 14:00 | 2006-05-09 14:00 | 0h | 0d | CBOE | 0.5h |
| 66 | 1.17 | **Hybrid BC failover (new release to new release)** | 0.45d | 2006-05-19 09:15 | 2006-05-19 13:50 | 60 | 2006-05-09 14:00 | 2006-05-09 16:25 | 0.3d | 0d | Cognizant | 7.17h |
| 67 | 1.17.1 | Initial setup for test Drivers (starting processes on BC Slave.) | 25min | 2006-05-19 09:15 | 2006-05-19 09:40 | 65 | 2006-05-09 14:00 | 2006-05-09 14:25 | 25min | 0d | Cognizant | 0.42h |
| 68 | 1.3.2.2 | Manual Testing by Mark Sabor | 1h | 2006-05-19 09:40 | 2006-05-19 10:40 | 67 |  |  |  | 0d | CBOE | 1h |
| 69 | 1.17.2 | Quote/Order BC20 Hybrid traffic going before/during/after failover. Test Execution | 40min | 2006-05-19 10:40 | 2006-05-19 11:20 | 68 | 2006-05-09 14:25 | 2006-05-09 14:55 | 30min | 0d | Cognizant | 0.67h |
| 70 | 1.17.3 | ITG Checkout script (for W_MAIN Session) | 20min | 2006-05-19 11:20 | 2006-05-19 11:40 | 69 | 2006-05-09 14:55 | 2006-05-09 15:35 | 40min | 0d | Cognizant | 0.33h |
| 71 | 1.17.4 | Backup for Failover and ITG Checkout | 20min | 2006-05-19 11:40 | 2006-05-19 12:00 | 70 | 2006-05-09 15:35 | 2006-05-09 15:55 | 20min | 0d | Cognizant | 0.33h |
| 72 | 1.17.5 | Generate Report for Failover Timings for all BC Processes (taking time from log files) | 20min | 2006-05-19 13:00 | 2006-05-19 13:20 | 71 | 2006-05-09 15:55 | 2006-05-09 16:25 | 30min | 0d | Cognizant | 0.33h |
| 73 | 1.3.2.7 | Check: Sign Off on Checkout Scripts,Logs and Results | 30min | 2006-05-19 13:20 | 2006-05-19 13:50 | 72 | 2006-05-09 16:25 | 2006-05-09 16:25 | 0h | 0d | CBOE | 0.5h |
| 74 | 1.6 | **Install and Perform Tests on ONE_MAIN BC A Side** | 1.26d | 2006-05-19 13:50 | 2006-05-22 15:55 | 59 | 2006-05-09 16:25 | 2006-05-11 08:10 | 1.09d | 0d | Cognizant | 30.25h |
| 75 | 1.26 | **Install ONE_MAIN BC (A)** | 0.27d | 2006-05-19 13:50 | 2006-05-19 16:00 | 66 | 2006-05-09 16:25 | 2006-05-10 09:25 | 0.25d | 0d | Cognizant | 4.33h |
| 76 | 1.26.1 | Configuration and starting processes | 1h | 2006-05-19 13:50 | 2006-05-19 14:50 | 73 | 2006-05-09 16:25 | 2006-05-10 08:25 | 1h | 0d | Cognizant | 1h |
| 77 | 1.26.2 | ITG Checkout script (ONE_MAIN Session) | 20min | 2006-05-19 14:50 | 2006-05-19 15:10 | 76 | 2006-05-10 08:25 | 2006-05-10 09:05 | 40min | 0d | Cognizant | 0.33h |
| 78 | 1.26.3 | Backup and Reporting | 20min | 2006-05-19 15:10 | 2006-05-19 15:30 | 77 | 2006-05-10 09:05 | 2006-05-10 09:25 | 20min | 0d | Cognizant | 0.33h |
| 79 | 1.4.1.4 | Check: Sign Off on Checkout Scripts, Logs and Results | 30min | 2006-05-19 15:30 | 2006-05-19 16:00 | 78 | 2006-05-10 09:25 | 2006-05-10 09:25 | 0h | 0d | CBOE | 0.5h |
| 80 | 1.27 | **Multi-class Order step-up test for ONE_MAIN [Scenario 2]** | 0.29d | 2006-05-19 16:00 | 2006-05-22 09:20 | 75 | 2006-05-10 09:25 | 2006-05-10 11:15 | 0.23d | 0d | Cognizant | 4.67h |
| 81 | 1.27.1 | BC Cleanup, Initial Driver Setup, | 20min | 2006-05-19 16:00 | 2006-05-19 16:20 |  | 2006-05-10 09:25 | 2006-05-10 09:45 | 20min | 0d | Cognizant | 0.33h |
| 82 | 1.27.2 | Test Execution for No BOTR | 1h | 2006-05-19 16:20 | 2006-05-22 08:20 | 81 | 2006-05-10 09:45 | 2006-05-10 10:45 | 1h | 0d | Cognizant | 1h |
| 83 | 1.27.3 | endOfPerformance and Backup | 15min | 2006-05-22 08:20 | 2006-05-22 08:35 | 82 | 2006-05-10 10:45 | 2006-05-10 11:00 | 15min | 0d | Cognizant | 0.25h |
| 84 | 1.27.4 | Reporting through KR site | 15min | 2006-05-22 08:35 | 2006-05-22 08:50 | 83 | 2006-05-10 11:00 | 2006-05-10 11:15 | 15min | 0d | Cognizant | 0.25h |
| 85 | 1.4.2.5 | Check: Sign Off on Logs and Results | 30min | 2006-05-22 08:50 | 2006-05-22 09:20 | 84 | 2006-05-10 11:15 | 2006-05-10 11:15 | 0h | 0d | CBOE | 0.5h |

| ID | WBS | Task | Duration | Start | Finish | Predecessors | Baseline start | Baseline finish | Baseline duration | Total slack | Resources | Work |
| --- | --- | --- | --- | --- | --- | --- | --- | --- | --- | --- | --- | --- |
| 86 | 1.28 | **Multi-class Quote step-up test [Scenario 1]** | 0.33d | 2006-05-22 09:20 | 2006-05-22 12:00 | 80 | 2006-05-10 11:15 | 2006-05-10 14:25 | 0.27d | 0d | Cognizant | 5.33h |
| 87 | 1.28.1 | BC Cleanup, Initial Driver Setup, | 20min | 2006-05-22 09:20 | 2006-05-22 09:40 |  | 2006-05-10 11:15 | 2006-05-10 11:35 | 20min | 0d | Cognizant | 0.33h |
| 88 | 1.28.2 | Test Execution for No BOTR | 1h | 2006-05-22 09:40 | 2006-05-22 10:40 | 87 | 2006-05-10 11:35 | 2006-05-10 13:35 | 1h | 0d | Cognizant | 1h |
| 89 | 1.28.3 | endOfPerformance and Backup | 30min | 2006-05-22 10:40 | 2006-05-22 11:10 | 88 | 2006-05-10 13:35 | 2006-05-10 14:05 | 30min | 0d | Cognizant | 0.5h |
| 90 | 1.28.4 | Reporting through KR site | 20min | 2006-05-22 11:10 | 2006-05-22 11:30 | 89 | 2006-05-10 14:05 | 2006-05-10 14:25 | 20min | 0d | Cognizant | 0.33h |
| 91 | 1.4.3.5 | Check: Sign Off on Logs and Results | 30min | 2006-05-22 11:30 | 2006-05-22 12:00 | 90 | 2006-05-10 14:25 | 2006-05-10 14:25 | 0h | 0d | CBOE | 0.5h |
| 92 | 1.30 | **Failover ONE_MAIN BC (Old to New)** | 0.36d | 2006-05-22 13:00 | 2006-05-22 15:55 | 86 | 2006-05-10 14:25 | 2006-05-11 08:10 | 0.34d | 0d | Cognizant | 5.83h |
| 93 | 1.4.4.1 | Cleanup | 20min | 2006-05-22 13:00 | 2006-05-22 13:20 | 91 | 2006-05-10 14:25 | 2006-05-10 14:45 | 20min | 0d | Cognizant | 0.33h |
| 94 | 1.30.1 | Initial setup for test Drivers (starting processes on BC Slave.) | 25min | 2006-05-22 13:20 | 2006-05-22 13:45 | 93 | 2006-05-10 14:45 | 2006-05-10 15:10 | 25min | 0d | Cognizant | 0.42h |
| 95 | 1.30.2 | Quote/Order ONE_MAIN traffic going before/during/after failover. Test Execution | 40min | 2006-05-22 13:45 | 2006-05-22 14:25 | 94 | 2006-05-10 15:10 | 2006-05-10 15:40 | 30min | 0d | Cognizant | 0.67h |
| 96 | 1.30.3 | ITG Checkout script (for ONE_MAIN Session) | 20min | 2006-05-22 14:25 | 2006-05-22 14:45 | 95 | 2006-05-10 15:40 | 2006-05-10 16:20 | 40min | 0d | Cognizant | 0.33h |
| 97 | 1.30.4 | Backup for Failover and ITG Checkout | 20min | 2006-05-22 14:45 | 2006-05-22 15:05 | 96 | 2006-05-10 16:20 | 2006-05-10 16:40 | 20min | 0d | Cognizant | 0.33h |
| 98 | 1.30.5 | Generate Report for Failover Timings for all BC Processes (taking time from log files) | 20min | 2006-05-22 15:05 | 2006-05-22 15:25 | 97 | 2006-05-10 16:40 | 2006-05-11 08:10 | 30min | 0d | Cognizant | 0.33h |
| 99 | 1.4.4.7 | Check: Sign Off on Checkout Scripts,Logs and Results | 30min | 2006-05-22 15:25 | 2006-05-22 15:55 | 98 | 2006-05-11 08:10 | 2006-05-11 08:10 | 0h | 0d | CBOE | 0.5h |
| 100 | 1.7 | **Install and Perform failover on ONE_MAIN BC B Side** | 0.59d | 2006-05-22 15:55 | 2006-05-23 11:40 | 74 | 2006-05-11 08:10 | 2006-05-11 13:55 | 0.59d | 0d | Cognizant | 14.25h |
| 101 | 1.31 | **Install ONE_MAIN BC (B)** | 0.27d | 2006-05-22 15:55 | 2006-05-23 09:05 | 92 | 2006-05-11 08:10 | 2006-05-11 10:10 | 0.25d | 0d | Cognizant | 4.33h |
| 102 | 1.31.1 | Configuration and starting processes | 1h | 2006-05-22 15:55 | 2006-05-22 16:55 | 99 | 2006-05-11 08:10 | 2006-05-11 09:10 | 1h | 0d | Cognizant | 1h |
| 103 | 1.31.2 | ITG Checkout script ( ONE_MAIN Session) | 20min | 2006-05-22 16:55 | 2006-05-23 08:15 | 102 | 2006-05-11 09:10 | 2006-05-11 09:50 | 40min | 0d | Cognizant | 0.33h |
| 104 | 1.31.3 | Backup and Reporting | 20min | 2006-05-23 08:15 | 2006-05-23 08:35 | 103 | 2006-05-11 09:50 | 2006-05-11 10:10 | 20min | 0d | Cognizant | 0.33h |
| 105 | 1.5.1.4 | Check: Sign Off on Checkout Scripts, Logs and Results | 30min | 2006-05-23 08:35 | 2006-05-23 09:05 | 104 | 2006-05-11 10:10 | 2006-05-11 10:10 | 0h | 0d | CBOE | 0.5h |
| 106 | 1.5.2 | **Failover ONE_MAIN BC (New to New)** | 0.32d | 2006-05-23 09:05 | 2006-05-23 11:40 | 101 | 2006-05-11 10:10 | 2006-05-11 13:55 | 0.34d | 0d | Cognizant | 5.17h |
| 107 | 1.5.2.1 | Initial setup for test Drivers (starting processes on BC Slave.) | 25min | 2006-05-23 09:05 | 2006-05-23 09:30 | 105 | 2006-05-11 10:30 | 2006-05-11 10:55 | 25min | 0d | Cognizant | 0.42h |
| 108 | 1.5.2.2 | Quote/Order ONE_MAIN traffic going before/during/after failover. Test Execution | 40min | 2006-05-23 09:30 | 2006-05-23 10:10 | 107 | 2006-05-11 10:55 | 2006-05-11 11:25 | 30min | 0d | Cognizant | 0.67h |
| 109 | 1.5.2.3 | ITG Checkout script (for ONE_MAIN Session) | 20min | 2006-05-23 10:10 | 2006-05-23 10:30 | 108 | 2006-05-11 11:25 | 2006-05-11 13:05 | 40min | 0d | Cognizant | 0.33h |
| 110 | 1.5.2.4 | Backup for Failover and ITG Checkout | 20min | 2006-05-23 10:30 | 2006-05-23 10:50 | 109 | 2006-05-11 13:05 | 2006-05-11 13:25 | 20min | 0d | Cognizant | 0.33h |
| 111 | 1.5.2.5 | Generate Report for Failover Timings for all BC Processes (taking time from log files) | 20min | 2006-05-23 10:50 | 2006-05-23 11:10 | 110 | 2006-05-11 13:25 | 2006-05-11 13:55 | 30min | 0d | Cognizant | 0.33h |
| 112 | 1.5.2.6 | Check: Sign Off on Checkout Scripts,Logs and Results | 30min | 2006-05-23 11:10 | 2006-05-23 11:40 | 111 | 2006-05-11 13:55 | 2006-05-11 13:55 | 0h | 0d | CBOE | 0.5h |

| ID | WBS | Task | Type | Duration | Start | Finish | Predecessors | Baseline start | Baseline finish | Baseline duration | Total slack | Resources | Work |
| --- | --- | --- | --- | --- | --- | --- | --- | --- | --- | --- | --- | --- | --- |
| 113 | 1.6 | **4 Hour Endurance Test** |  | 0.81d | 2006-05-23 11:40 | 2006-05-24 10:10 | 100 | 2006-05-11 13:55 | 2006-05-12 10:55 | 0.75d | 0d | Cognizant | 13h |
| 114 | 1.6.1 | Cleanup for W_MAIN and ONE_MAIN BC |  | 20min | 2006-05-23 11:40 | 2006-05-23 12:00 |  | 2006-05-11 13:55 | 2006-05-11 14:15 | 20min | 0d | Cognizant | 0.33h |
| 115 | 1.6.2 | Driver setup |  | 20min | 2006-05-23 13:00 | 2006-05-23 13:20 | 114 | 2006-05-11 14:15 | 2006-05-11 14:35 | 20min | 0d | Cognizant | 0.33h |
| 116 | 1.6.3 | CAS bounce |  | 20min | 2006-05-23 13:20 | 2006-05-23 13:40 | 115 | 2006-05-11 14:35 | 2006-05-11 14:55 | 20min | 0d | Cognizant | 0.33h |
| 117 | 1.6.4 | 4 hour Sanity Check |  | 4h | 2006-05-23 13:40 | 2006-05-24 08:40 | 116 | 2006-05-11 14:55 | 2006-05-12 09:55 | 4h | 0d | Cognizant | 4h |
| 118 | 1.6.5 | endOfPerformance and Backup and Reporting |  | 1h | 2006-05-24 08:40 | 2006-05-24 09:40 | 117 | 2006-05-12 09:55 | 2006-05-12 10:55 | 1h | 0d | Cognizant | 1h |
| 119 | 1.6.6 | Check: Sign Off on Logs and Results |  | 30min | 2006-05-24 09:40 | 2006-05-24 10:10 | 118 | 2006-05-12 10:55 | 2006-05-12 10:55 | 0h | 0d | CBOE | 0.5h |
| 120 | 1.42 | **Server Side Full Cleanup after All Server upgrades.** |  | 0.6d | 2006-05-24 10:10 | 2006-05-24 16:00 | 113 | 2006-05-15 08:55 | 2006-05-15 14:15 | 0.54d | 0d | Cognizant | 9.67h |
| 121 | 1.42.1 | Time server full startup after cleanup (See Server Startup Timing Page) |  | 4h | 2006-05-24 10:10 | 2006-05-24 15:10 | 119 | 2006-05-15 08:55 | 2006-05-15 13:55 | 4h | 0d | Cognizant | 4h |
| 122 | 1.42.2 | Backup for server Timings |  | 20min | 2006-05-24 15:10 | 2006-05-24 15:30 | 121 | 2006-05-15 13:55 | 2006-05-15 14:15 | 20min | 0d | Cognizant | 0.33h |
| 123 | 1.7.3 | Check: Sign Off on Logs and Results |  | 30min | 2006-05-24 15:30 | 2006-05-24 16:00 | 122 | 2006-05-15 14:15 | 2006-05-15 14:15 | 0h | 0d | CBOE | 0.5h |
| 124 | 1.8 | **Check: Overall Verification** |  | 0d | 2006-05-24 15:30 | 2006-05-24 15:30 |  | 2006-05-15 14:15 | 2006-05-15 14:15 | 0d | 0.06d | CBOE |  |
| 125 | 1.8.1 | All Results Signed Off | milestone | 0h | 2006-05-24 15:30 | 2006-05-24 15:30 | 122 | 2006-05-15 14:15 | 2006-05-15 14:15 | 0h | 0.06d | CBOE |  |
| 126 | 1.8.2 | All Tests Completed | milestone | 0h | 2006-05-24 15:30 | 2006-05-24 15:30 | 122 | 2006-05-15 14:15 | 2006-05-15 14:15 | 0h | 0.06d | CBOE |  |
| 127 | 1.8.3 | Results approved by Paul and Respective Groups | milestone | 0h | 2006-05-24 15:30 | 2006-05-24 15:30 | 122 | 2006-05-15 14:15 | 2006-05-15 14:15 | 0h | 0.06d | CBOE |  |
