Schedule from MS Project, 2006-03-17 to 2006-03-31, A marks actual dates.
Cognizant Technology Solutions

## Calendars

- Standard: Mon-Fri 08:00-12:00, 13:00-17:00; Sat-Sun off.

## Resources

| Resource |
| --- |
| Cognizant |
| 2 |
| CBOE |
| Piwnicki |
| Bobbie |

## Schedule

| ID | WBS | Task | Type | Duration | Start | Finish | Predecessors | Complete | Remaining | Baseline start | Baseline finish | Baseline duration | Total slack | Resources | Work | Actual work |
| --- | --- | --- | --- | --- | --- | --- | --- | --- | --- | --- | --- | --- | --- | --- | --- | --- |
| 1 | 1 | **Rollout Task** |  | 10.05d | 2006-03-17 08:00 A | 2006-03-31 08:25 |  | 99% | 0.15d | 2006-03-17 08:00 | 2006-03-31 09:25 | 10.18d | 0d |  | 200h | 197.33h |
| 2 | 1.1 | **Pre-Rollout Verification/Changes [If required]** |  | 1.5d | 2006-03-17 08:00 A | 2006-03-20 12:00 A |  | 100% |  | 2006-03-17 08:00 | 2006-03-17 08:00 | 0d |  |  | 12h | 12h |
| 3 | 1.1.1 | Database changes | milestone | 0h | 2006-03-17 08:00 A | 2006-03-17 08:00 A |  | 100% |  | 2006-03-17 08:00 | 2006-03-17 08:00 | 0h |  | CBOE |  |  |
| 4 | 1.1.2 | Extent Map changes | milestone | 0h | 2006-03-17 08:00 A | 2006-03-17 08:00 A | 3 | 100% |  | 2006-03-17 08:00 | 2006-03-17 08:00 | 0h |  | CBOE |  |  |
| 5 | 1.1.3 | Version label verification on all boxes |  | 12h | 2006-03-17 08:00 A | 2006-03-20 12:00 A | 4 | 100% |  | 2006-03-17 08:00 | 2006-03-17 08:00 | 0h |  | CBOE | 12h | 12h |
| 6 | 1.1.4 | Check: Tier Lead has verified information and obtained a sign off | milestone | 0h | 2006-03-20 12:00 A | 2006-03-20 12:00 A | 3, 4, 5 | 100% |  | 2006-03-17 08:00 | 2006-03-17 08:00 | 0h |  | CBOE |  |  |
| 7 | 1.2 | **Install GC A Side** |  | 1.5d | 2006-03-20 08:00 A | 2006-03-21 12:00 A | 2 | 100% |  | 2006-03-17 08:00 | 2006-03-20 10:40 | 1.33d |  | Cognizant | 33.08h | 33.08h |
| 8 | 1.2.1 | **Install GC "A" side with new release – load idl, create EC** |  | 0.5d | 2006-03-20 08:00 A | 2006-03-20 12:00 A |  | 100% |  | 2006-03-17 08:00 | 2006-03-17 14:20 | 0.67d |  | Cognizant | 8.83h | 8.83h |
| 9 | 1.2.1.1 | Generate XML, build Localrep, load All IFR and other Installation steps. |  | 1h | 2006-03-20 08:00 A | 2006-03-20 09:00 A |  | 100% |  | 2006-03-17 08:00 | 2006-03-17 09:00 | 1h |  | Cognizant | 1h | 1h |
| 10 | 1.2.1.2 | Server Side Full Cleanup |  | 2.5h | 2006-03-20 08:00 A | 2006-03-20 10:30 A | 9 | 100% |  | 2006-03-17 09:00 | 2006-03-17 12:00 | 3h |  | Cognizant | 2.5h | 2.5h |
| 11 | 1.2.1.3 | Time server full startup after cleanup (See Server Startup Timing Page) |  | 1h | 2006-03-20 08:00 A | 2006-03-20 09:00 A | 10 | 100% |  | 2006-03-17 13:00 | 2006-03-17 14:00 | 1h |  | Cognizant | 1h | 1h |
| 12 | 1.2.1.4 | Backup for server Timings |  | 20min | 2006-03-20 08:00 A | 2006-03-20 08:20 A | 11 | 100% |  | 2006-03-17 14:00 | 2006-03-17 14:20 | 20min |  | Cognizant | 0.33h | 0.33h |
| 13 | 1.2.1.5 | Check: Sign off on Server Timings | milestone | 0h | 2006-03-20 12:00 A | 2006-03-20 12:00 A | 12 | 100% |  | 2006-03-17 14:20 | 2006-03-17 14:20 | 0h |  | CBOE |  |  |
| 14 | 1.2.2 | **ITG Checkout Script** |  | 0.46d | 2006-03-20 13:40 A | 2006-03-21 08:20 A | 8 | 100% |  | 2006-03-17 14:20 | 2006-03-17 16:00 | 0.21d |  | Cognizant | 4.67h | 4.67h |
| 15 | 1.2.1 | W_MAIN session |  | 20min | 2006-03-21 08:00 A | 2006-03-21 08:20 A |  | 100% |  | 2006-03-17 14:20 | 2006-03-17 14:40 | 20min |  | Cognizant | 0.33h | 0.33h |
| 16 | 1.2.2 | ONE_MAIN Session |  | 20min | 2006-03-21 08:00 A | 2006-03-21 08:20 A | 15 | 100% |  | 2006-03-17 14:40 | 2006-03-17 15:00 | 20min |  | Cognizant | 0.33h | 0.33h |
| 17 | 1.2.3 | COF_MAIN Session | milestone | 0min | 2006-03-21 08:00 A | 2006-03-21 08:00 A | 16 | 100% |  | 2006-03-17 15:00 | 2006-03-17 15:20 | 20min |  | Cognizant |  |  |
| 18 | 1.2.4 | CFE_MAIN Session | milestone | 0min | 2006-03-21 08:00 A | 2006-03-21 08:00 A | 17 | 100% |  | 2006-03-17 15:20 | 2006-03-17 15:40 | 20min |  | Cognizant |  |  |
| 19 | 1.2.5 | Backup for ITG Checkout (endOfPerformanceReport) |  | 20min | 2006-03-21 08:00 A | 2006-03-21 08:20 A | 18 | 100% |  | 2006-03-17 15:40 | 2006-03-17 16:00 | 20min |  | Cognizant | 0.33h | 0.33h |
| 20 | 1.2.2.6 | Check: Sign off on Checkout Scripts | milestone | 0h | 2006-03-20 13:40 A | 2006-03-20 13:40 A | 19 | 100% |  | 2006-03-17 16:00 | 2006-03-17 16:00 | 0h |  | CBOE |  |  |
| 21 | 1.2.3 | **User Login test1** |  | 0.14d | 2006-03-21 08:20 A | 2006-03-21 09:25 A | 14 | 100% |  | 2006-03-17 16:00 | 2006-03-20 08:05 | 0.14d |  | Cognizant | 2.25h | 2.25h |
| 22 | 1.2.3.1 | Initial setup like bouncing Global Server and SACAS. |  | 20min | 2006-03-21 08:20 A | 2006-03-21 08:40 A |  | 100% |  | 2006-03-17 16:00 | 2006-03-17 16:15 | 15min |  | Cognizant | 0.33h | 0.33h |
| 23 | 1.2.3.2 | Login Test for 1 and 2 Users |  | 15min | 2006-03-21 08:35 A | 2006-03-21 08:50 A | 22 | 100% |  | 2006-03-17 16:15 | 2006-03-17 16:30 | 15min |  | Cognizant | 0.25h | 0.25h |
| 24 | 1.2.3.3 | Product State Update to CLOSE on VLO (visually timing Single class CLOSED with SAGUI) |  | 15min | 2006-03-21 08:50 A | 2006-03-21 09:05 A | 23 | 100% |  | 2006-03-17 16:30 | 2006-03-17 16:45 | 15min |  | Cognizant | 0.25h | 0.25h |
| 25 | 1.2.3.4 | Backup for Login User Test and Product state Update through SAGUI |  | 20min | 2006-03-21 09:05 A | 2006-03-21 09:25 A | 24 | 100% |  | 2006-03-17 16:45 | 2006-03-20 08:05 | 20min |  | Cognizant | 0.33h | 0.33h |
| 26 | 1.2.3.5 | Check: Sign Off on Logs and Results | milestone | 0h | 2006-03-21 09:25 A | 2006-03-21 09:25 A | 25 | 100% |  | 2006-03-20 08:05 | 2006-03-20 08:05 | 0h |  | CBOE |  |  |

| ID | WBS | Task | Type | Duration | Start | Finish | Predecessors | Complete | Baseline start | Baseline finish | Baseline duration | Resources | Work | Actual work |
| --- | --- | --- | --- | --- | --- | --- | --- | --- | --- | --- | --- | --- | --- | --- |
| 27 | 1.2.4 | **GC failover to "B" side** |  | 0.32d | 2006-03-21 09:25 A | 2006-03-21 12:00 A | 21 | 100% | 2006-03-20 08:05 | 2006-03-20 10:40 | 0.32d | Cognizant | 5.33h | 5.33h |
| 28 | 1.2.4.1 | Initial setup for test Drivers (starting processes on GC Slave.) |  | 30min | 2006-03-21 09:25 A | 2006-03-21 09:55 A |  | 100% | 2006-03-20 08:05 | 2006-03-20 08:35 | 30min | Cognizant | 0.5h | 0.5h |
| 29 | 1.2.4.2 | Quote/Order BC20 Hybrid and ONE_MAIN traffic going before/during/after failover. Should not hang to verify no Global Dependency introduced. Test Execution |  | 45min | 2006-03-21 09:55 A | 2006-03-21 10:40 A | 28 | 100% | 2006-03-20 08:35 | 2006-03-20 09:20 | 45min | Cognizant | 0.75h | 0.75h |
| 30 | 1.2.4.3 | ITG Checkout script (for W_MAIN and ONE_MAIN Session) |  | 40min | 2006-03-21 10:40 A | 2006-03-21 11:20 A | 29 | 100% | 2006-03-20 09:20 | 2006-03-20 09:50 | 30min | Cognizant | 0.67h | 0.67h |
| 31 | 1.2.4.4 | Backup for Failover and ITG Checkout |  | 20min | 2006-03-21 11:10 A | 2006-03-21 11:30 A | 30 | 100% | 2006-03-20 09:50 | 2006-03-20 10:10 | 20min | Cognizant | 0.33h | 0.33h |
| 32 | 1.2.4.5 | Generate Report for Failover Timings for all GC Processes (taking time from log files) |  | 30min | 2006-03-21 11:30 A | 2006-03-21 12:00 A | 31 | 100% | 2006-03-20 10:10 | 2006-03-20 10:40 | 30min | Cognizant | 0.5h | 0.5h |
| 33 | 1.2.4.6 | Check: Sign Off on Checkout Scripts, Logs and Results | milestone | 0h | 2006-03-21 12:00 A | 2006-03-21 12:00 A | 32 | 100% | 2006-03-20 10:40 | 2006-03-20 10:40 | 0h | CBOE |  |  |
| 34 | 1.2.5 | 60 User Login Test with Old GC |  | 3h | 2006-03-21 08:00 A | 2006-03-21 11:00 A | 27 | 100% |  |  |  |  |  |  |
| 35 | 1.3 | **Install GC B Side** |  | 0.73d | 2006-03-22 08:00 A | 2006-03-22 14:50 A | 34 | 100% | 2006-03-20 10:40 | 2006-03-21 11:00 | 1.04d | Cognizant | 23h | 23h |
| 36 | 1.3.1 | **Install GC "B" side** |  | 0.25d | 2006-03-22 08:00 A | 2006-03-22 10:00 A |  | 100% | 2006-03-20 10:40 | 2006-03-20 15:40 | 0.5d | Cognizant | 5h | 5h |
| 37 | 1.3.1.1 | Cleanup, createCurrentBusinessDay,starting all GC Processes on B side |  | 2h | 2006-03-22 08:00 A | 2006-03-22 10:00 A |  | 100% | 2006-03-20 10:40 | 2006-03-20 14:40 | 3h | Cognizant | 2h | 2h |
| 38 | 1.3.1.2 | ITG Checkout script (for W_MAIN and ONE_MAIN Session) |  | 40min | 2006-03-22 08:00 A | 2006-03-22 08:40 A | 37 | 100% | 2006-03-20 14:40 | 2006-03-20 15:20 | 40min | Cognizant | 0.67h | 0.67h |
| 39 | 1.3.1.3 | Backup for GC Upgrade and ITG Checkout |  | 20min | 2006-03-22 08:00 A | 2006-03-22 08:20 A | 38 | 100% | 2006-03-20 15:20 | 2006-03-20 15:40 | 20min | Cognizant | 0.33h | 0.33h |
| 40 | 1.3.1.4 | Check: Sign Off on Checkout Scripts, Logs and Results | milestone | 0h | 2006-03-22 08:00 A | 2006-03-22 08:00 A | 39 | 100% | 2006-03-20 15:40 | 2006-03-20 15:40 | 0h | CBOE |  |  |
| 41 | 1.3.2 | **GC fail over to "A" side** |  | 0.31d | 2006-03-22 08:00 A | 2006-03-22 10:30 A | 36 | 100% | 2006-03-20 15:40 | 2006-03-21 09:10 | 0.31d | Cognizant | 5h | 5h |
| 42 | 1.3.2.1 | Initial setup for test Drivers (starting processes on GC Slave.) |  | 30min | 2006-03-22 08:00 A | 2006-03-22 08:30 A |  | 100% | 2006-03-20 15:40 | 2006-03-20 16:10 | 30min | Cognizant | 0.5h | 0.5h |
| 43 | 1.3.2.2 | Quote/Order BC20 Hybrid and ONE_MAIN traffic going before/during/after failover. Should not hang to verify no Global Dependency introduced. Test Execution |  | 30min | 2006-03-22 08:30 A | 2006-03-22 09:00 A | 42 | 100% | 2006-03-20 16:10 | 2006-03-20 16:40 | 30min | Cognizant | 0.5h | 0.5h |
| 44 | 1.3.2.3 | ITG Checkout script (for W_MAIN and ONE_MAIN Session) |  | 40min | 2006-03-22 09:00 A | 2006-03-22 09:40 A | 43 | 100% | 2006-03-20 16:40 | 2006-03-21 08:20 | 40min | Cognizant | 0.67h | 0.67h |
| 45 | 1.3.2.4 | Backup for Failover and ITG Checkout |  | 20min | 2006-03-22 09:40 A | 2006-03-22 10:00 A | 44 | 100% | 2006-03-21 08:20 | 2006-03-21 08:40 | 20min | Cognizant | 0.33h | 0.33h |
| 46 | 1.3.2.5 | Generate Report for Failover Timings for all GC Processes (taking time from log files) |  | 30min | 2006-03-22 10:00 A | 2006-03-22 10:30 A | 45 | 100% | 2006-03-21 08:40 | 2006-03-21 09:10 | 30min | Cognizant | 0.5h | 0.5h |
| 47 | 1.3.2.6 | Check: Sign Off on Checkout Scripts, Logs and Results | milestone | 0h | 2006-03-22 10:30 A | 2006-03-22 10:30 A | 46 | 100% | 2006-03-21 09:10 | 2006-03-21 09:10 | 0h | CBOE |  |  |
| 48 | 1.3.3 | **Login User and 60 User Login** |  | 0.42d | 2006-03-22 10:30 A | 2006-03-22 14:50 A | 41 | 100% | 2006-03-21 09:10 | 2006-03-21 11:00 | 0.23d | Cognizant | 7.17h | 7.17h |
| 49 | 1.3.3.1 | bouncing Global Server process, SACAS and all other CASes for 60 User login Test and SAGUI login test |  | 35min | 2006-03-22 10:30 A | 2006-03-22 11:05 A |  | 100% | 2006-03-21 09:10 | 2006-03-21 09:45 | 35min | Cognizant | 0.58h | 0.58h |
| 50 | 1.3.3.2 | Driver Setup |  | 15min | 2006-03-22 11:05 A | 2006-03-22 11:20 A | 49 | 100% | 2006-03-21 09:45 | 2006-03-21 10:00 | 15min | Cognizant | 0.25h | 0.25h |
| 51 | 1.3.3.2 | User login test and 60 user login test, test execution |  | 2.5h | 2006-03-22 11:20 A | 2006-03-22 14:50 A | 50 | 100% | 2006-03-21 10:00 | 2006-03-21 10:30 | 30min | Cognizant | 2.5h | 2.5h |
| 52 | 1.3.3.3 | Backup and Reporting |  | 30min | 2006-03-22 11:50 A | 2006-03-22 13:20 A | 51 | 100% | 2006-03-21 10:30 | 2006-03-21 11:00 | 30min | Cognizant | 0.5h | 0.5h |
| 53 | 1.3.3.5 | Check: Sign Off on Logs and Results | milestone | 0h | 2006-03-22 13:20 A | 2006-03-22 13:20 A | 52 | 100% | 2006-03-21 11:00 | 2006-03-21 11:00 | 0h | CBOE |  |  |

| ID | WBS | Task | Type | Duration | Start | Finish | Predecessors | Complete | Baseline start | Baseline finish | Baseline duration | Resources | Work | Actual work |
| --- | --- | --- | --- | --- | --- | --- | --- | --- | --- | --- | --- | --- | --- | --- |
| 54 | 1.4 | **Install Hybrid BC A Side** |  | 2.27d | 2006-03-22 14:50 A | 2006-03-24 17:00 A | 35 | 100% | 2006-03-21 11:00 | 2006-03-27 09:50 | 3.85d | Cognizant | 65.83h | 65.83h |
| 55 | 1.10 | **Install Hybrid BC (A)** |  | 0.25d | 2006-03-22 14:50 A | 2006-03-22 16:50 A |  | 100% | 2006-03-21 11:00 | 2006-03-21 14:00 | 0.25d | Cognizant | 4h | 4h |
| 56 | 1.10.1 | Configuration and starting processes |  | 1h | 2006-03-22 14:50 A | 2006-03-22 15:50 A |  | 100% | 2006-03-21 11:00 | 2006-03-21 12:00 | 1h | Cognizant | 1h | 1h |
| 57 | 1.10.2 | ITG Checkout script (W_MAIN and ONE_MAIN Session) |  | 40min | 2006-03-22 15:50 A | 2006-03-22 16:30 A | 56 | 100% | 2006-03-21 13:00 | 2006-03-21 13:40 | 40min | Cognizant | 0.67h | 0.67h |
| 58 | 1.10.3 | Backup and Reporting |  | 20min | 2006-03-22 16:30 A | 2006-03-22 16:50 A | 57 | 100% | 2006-03-21 13:40 | 2006-03-21 14:00 | 20min | Cognizant | 0.33h | 0.33h |
| 59 | 1.4.1.4 | Check: Sign Off on Checkout Scripts, Logs and Results | milestone | 0h | 2006-03-22 16:50 A | 2006-03-22 16:50 A | 58 | 100% | 2006-03-21 14:00 | 2006-03-21 14:00 | 0h | CBOE |  |  |
| 60 | 1.4.2 | **Global Dependency Test** |  | 0.1d | 2006-03-22 16:50 A | 2006-03-23 08:40 A | 55 | 100% | 2006-03-21 14:00 | 2006-03-21 14:50 | 0.1d | Cognizant | 1.67h | 1.67h |
| 61 | 1.4.2.1 | Test Execution |  | 30min | 2006-03-22 16:50 A | 2006-03-23 08:20 A | 59 | 100% | 2006-03-21 14:00 | 2006-03-21 14:30 | 30min | Cognizant | 0.5h | 0.5h |
| 62 | 1.4.2.2 | Log Backup and Reporting |  | 20min | 2006-03-23 08:20 A | 2006-03-23 08:40 A | 61 | 100% | 2006-03-21 14:30 | 2006-03-21 14:50 | 20min | Cognizant | 0.33h | 0.33h |
| 63 | 1.4.2.3 | Check:Log and Results verification | milestone | 0h | 2006-03-23 08:40 A | 2006-03-23 08:40 A | 62 | 100% | 2006-03-21 14:50 | 2006-03-21 14:50 | 0h | Cognizant |  |  |
| 64 | 1.4.3 | **Hybrid test scenario 5 (Product State Change Test)** |  | 0.19d | 2006-03-23 08:40 A | 2006-03-23 10:10 A | 60 | 100% | 2006-03-21 14:50 | 2006-03-21 16:20 | 0.19d | Cognizant | 3h | 3h |
| 65 | 1.4.3.1 | BC Cleanup, Initial Driver Setup, |  | 20min | 2006-03-23 08:40 A | 2006-03-23 09:00 A |  | 100% | 2006-03-21 14:50 | 2006-03-21 15:10 | 20min | Cognizant | 0.33h | 0.33h |
| 66 | 1.4.3.2 | Test Execution - Global Server Bounce |  | 40min | 2006-03-23 09:00 A | 2006-03-23 09:40 A | 65 | 100% | 2006-03-21 15:10 | 2006-03-21 15:50 | 40min | Cognizant | 0.67h | 0.67h |
| 67 | 1.4.3.3 | Monitor and Backup logs |  | 20min | 2006-03-23 09:40 A | 2006-03-23 10:00 A | 66 | 100% | 2006-03-21 15:50 | 2006-03-21 16:10 | 20min | Cognizant | 0.33h | 0.33h |
| 68 | 1.4.3.4 | Reporting through KR site |  | 10min | 2006-03-23 10:00 A | 2006-03-23 10:10 A | 67 | 100% | 2006-03-21 16:10 | 2006-03-21 16:20 | 10min | Cognizant | 0.17h | 0.17h |
| 69 | 1.4.3.5 | Check: Sign Off on Logs and Results | milestone | 0h | 2006-03-23 10:10 A | 2006-03-23 10:10 A | 68 | 100% | 2006-03-21 16:20 | 2006-03-21 16:20 | 0h | CBOE |  |  |
| 70 | 1.12 | **Multi-class Quote step-up test with BOTR [Scenario 3]** |  | 0.39d | 2006-03-23 10:10 A | 2006-03-23 14:15 A | 64 | 100% | 2006-03-21 16:20 | 2006-03-22 10:25 | 0.39d | Cognizant | 6.17h | 6.17h |
| 71 | 1.12.1 | BC Cleanup, Initial Driver Setup, |  | 20min | 2006-03-23 10:10 A | 2006-03-23 10:30 A |  | 100% | 2006-03-21 16:20 | 2006-03-21 16:40 | 20min | Cognizant | 0.33h | 0.33h |
| 72 | 1.12.2 | Test Execution for No BOTR |  | 1h | 2006-03-23 10:30 A | 2006-03-23 11:30 A | 71 | 100% | 2006-03-21 16:40 | 2006-03-22 08:40 | 1h | Cognizant | 1h | 1h |
| 73 | 1.12.3 | BOTR from 4000 to 16000 |  | 30min | 2006-03-23 11:30 A | 2006-03-23 12:00 A | 72 | 100% | 2006-03-22 08:40 | 2006-03-22 09:10 | 30min | Cognizant | 0.5h | 0.5h |
| 74 | 1.12.4 | endOfPerformance and Backup |  | 45min | 2006-03-23 13:00 A | 2006-03-23 13:45 A | 73 | 100% | 2006-03-22 09:10 | 2006-03-22 09:55 | 45min | Cognizant | 0.75h | 0.75h |
| 75 | 1.12.5 | Reporting through KR site |  | 30min | 2006-03-23 13:45 A | 2006-03-23 14:15 A | 74 | 100% | 2006-03-22 09:55 | 2006-03-22 10:25 | 30min | Cognizant | 0.5h | 0.5h |
| 76 | 1.4.4.6 | Check: Sign Off on Logs and Results | milestone | 0h | 2006-03-23 14:15 A | 2006-03-23 14:15 A | 75 | 100% | 2006-03-22 10:25 | 2006-03-22 10:25 | 0h | CBOE |  |  |
| 77 | 1.13 | **Single-class Quote step-up test with BOTR [Scenario 1]** |  | 0.34d | 2006-03-23 14:15 A | 2006-03-23 17:00 A | 70 | 100% | 2006-03-22 10:25 | 2006-03-22 14:10 | 0.34d | Cognizant | 5.5h | 5.5h |
| 78 | 1.13.1 | BC Cleanup, Initial Driver Setup, |  | 20min | 2006-03-23 14:15 A | 2006-03-23 14:35 A |  | 100% | 2006-03-22 10:25 | 2006-03-22 10:45 | 20min | Cognizant | 0.33h | 0.33h |
| 79 | 1.13.2 | Test Execution for No BOTR |  | 1h | 2006-03-23 14:35 A | 2006-03-23 15:35 A | 78 | 100% | 2006-03-22 10:45 | 2006-03-22 11:45 | 1h | Cognizant | 1h | 1h |
| 80 | 1.13.3 | BOTR 16000 |  | 10min | 2006-03-23 15:35 A | 2006-03-23 15:45 A | 79 | 100% | 2006-03-22 11:45 | 2006-03-22 11:55 | 10min | Cognizant | 0.17h | 0.17h |
| 81 | 1.13.4 | endOfPerformance and Backup |  | 45min | 2006-03-23 15:45 A | 2006-03-23 16:30 A | 80 | 100% | 2006-03-22 11:55 | 2006-03-22 13:40 | 45min | Cognizant | 0.75h | 0.75h |
| 82 | 1.13.5 | Reporting through KR site |  | 30min | 2006-03-23 16:30 A | 2006-03-23 17:00 A | 81 | 100% | 2006-03-22 13:40 | 2006-03-22 14:10 | 30min | Cognizant | 0.5h | 0.5h |
| 83 | 1.4.5.6 | Check: Sign Off On Logs and Results | milestone | 0h | 2006-03-23 17:00 A | 2006-03-23 17:00 A | 82 | 100% | 2006-03-22 14:10 | 2006-03-22 14:10 | 0h | CBOE |  |  |

| ID | WBS | Task | Type | Duration | Start | Finish | Predecessors | Complete | Baseline start | Baseline finish | Baseline duration | Resources | Work | Actual work |
| --- | --- | --- | --- | --- | --- | --- | --- | --- | --- | --- | --- | --- | --- | --- |
| 84 | 1.14 | **Multi-class Order step-up test [Scenario 4]** |  | 1d | 2006-03-23 08:00 A | 2006-03-23 17:00 A | 77 | 100% | 2006-03-22 14:10 | 2006-03-23 16:05 | 1.24d | Cognizant | 8.33h | 8.33h |
| 85 | 1.14.1 | BC Cleanup, Initial Driver Setup, |  | 20min | 2006-03-23 08:00 A | 2006-03-23 08:20 A |  | 100% | 2006-03-22 14:10 | 2006-03-22 14:30 | 20min | Cognizant | 0.33h | 0.33h |
| 86 | 1.14.2 | Test Execution for No BOTR | milestone | 0h | 2006-03-23 17:00 A | 2006-03-23 17:00 A | 85 | 100% | 2006-03-22 14:30 | 2006-03-22 15:30 | 1h | Cognizant |  |  |
| 87 | 1.14.3 | endOfPerformance and Backup | milestone | 0min | 2006-03-23 17:00 A | 2006-03-23 17:00 A | 86 | 100% | 2006-03-22 15:30 | 2006-03-22 15:50 | 20min | Cognizant |  |  |
| 88 | 1.14.4 | Reporting through KR site | milestone | 0min | 2006-03-23 17:00 A | 2006-03-23 17:00 A | 87 | 100% | 2006-03-22 15:50 | 2006-03-22 16:05 | 15min | Cognizant |  |  |
| 89 | 1.4.6.5 | Check: Sign Off on Logs and Results | milestone | 0h | 2006-03-23 17:00 A | 2006-03-23 17:00 A | 88 | 100% | 2006-03-22 16:05 | 2006-03-23 16:05 | 8h | CBOE |  |  |
| 90 | 1.4.7 | **HAL Scenarios** |  | 1d | 2006-03-24 08:00 A | 2006-03-24 17:00 A | 84 | 100% | 2006-03-23 16:05 | 2006-03-24 16:05 | 1d | Cognizant | 16h | 16h |
| 91 | 1.4.7.1 | Scenario 1: All Orders Trade - Baseline |  | 2h | 2006-03-24 08:00 A | 2006-03-24 10:00 A |  | 100% | 2006-03-23 16:05 | 2006-03-24 09:05 | 2h | Cognizant | 2h | 2h |
| 92 | 1.4.7.2 | Scenario 2: All Orders Book No Trade - Baseline |  | 2h | 2006-03-24 10:00 A | 2006-03-24 12:00 A | 91 | 100% | 2006-03-24 09:05 | 2006-03-24 11:05 | 2h | Cognizant | 2h | 2h |
| 93 | 1.4.7.3 | Scenario 3: All Orders Auction But No Trades |  | 2h | 2006-03-24 13:00 A | 2006-03-24 15:00 A | 92 | 100% | 2006-03-24 11:05 | 2006-03-24 14:05 | 2h | Cognizant | 2h | 2h |
| 94 | 1.4.7.4 | Scenario 4: All Orders Auction and Trade |  | 2h | 2006-03-24 15:00 A | 2006-03-24 17:00 A | 93 | 100% | 2006-03-24 14:05 | 2006-03-24 16:05 | 2h | Cognizant | 2h | 2h |
| 95 | 1.4.7.5 | Check: Sign Off on Logs and Results | milestone | 0h | 2006-03-24 17:00 A | 2006-03-24 17:00 A | 94 | 100% | 2006-03-24 16:05 | 2006-03-24 16:05 | 0h | CBOE |  |  |
| 96 | 1.15 | **Hybrid BC failover (new release to old release)** |  | 0.07d | 2006-03-23 08:00 A | 2006-03-23 08:35 A | 84 | 100% | 2006-03-24 16:05 | 2006-03-27 09:50 | 0.34d | Cognizant | 3h | 3h |
| 97 | 1.4.8.1 | BC Cleanup start A Side as Master |  | 20min | 2006-03-23 08:00 A | 2006-03-23 08:20 A |  | 100% | 2006-03-24 16:05 | 2006-03-24 16:25 | 20min | Cognizant | 0.33h | 0.33h |
| 98 | 1.15.1 | Initial setup for test Drivers (starting processes on BC Slave.) |  | 35min | 2006-03-23 08:00 A | 2006-03-23 08:35 A | 97 | 100% | 2006-03-24 16:25 | 2006-03-24 16:50 | 25min | Cognizant | 0.58h | 0.58h |
| 99 | 1.15.2 | Quote/Order BC20 Hybrid traffic going before/during/after failover. Test Execution |  | 30min | 2006-03-23 08:00 A | 2006-03-23 08:30 A | 98 | 100% | 2006-03-24 16:50 | 2006-03-27 08:20 | 30min | Cognizant | 0.5h | 0.5h |
| 100 | 1.15.3 | ITG Checkout script (for W_MAIN and ONE_MAIN Session) |  | 20min | 2006-03-23 08:00 A | 2006-03-23 08:20 A | 99 | 100% | 2006-03-27 08:20 | 2006-03-27 09:00 | 40min | Cognizant | 0.33h | 0.33h |
| 101 | 1.15.4 | Backup for Failover and ITG Checkout |  | 20min | 2006-03-23 08:00 A | 2006-03-23 08:20 A | 100 | 100% | 2006-03-27 09:00 | 2006-03-27 09:20 | 20min | Cognizant | 0.33h | 0.33h |
| 102 | 1.15.5 | Generate Report for Failover Timings for all BC Processes (taking time from log files) |  | 20min | 2006-03-23 08:00 A | 2006-03-23 08:20 A | 101 | 100% | 2006-03-27 09:20 | 2006-03-27 09:50 | 30min | Cognizant | 0.33h | 0.33h |
| 103 | 1.4.8.7 | Check: Sign Off on Checkout Scripts, Logs and Results | milestone | 0h | 2006-03-23 08:00 A | 2006-03-23 08:00 A | 102 | 100% | 2006-03-27 09:50 | 2006-03-27 09:50 | 0h | CBOE |  |  |
| 104 | 1.5 | **MDGC Rollout** |  | 0.1d | 2006-03-27 08:00 A | 2006-03-27 08:50 A | 54 | 100% |  |  |  |  |  |  |
| 105 | 1.5.1 | MDGC A Upgrade |  | 50min | 2006-03-27 08:00 A | 2006-03-27 08:50 A |  | 100% |  |  |  |  |  |  |
| 106 | 1.5.2 | ITG Checkout for W_MAIN. ONE_MAIN and Log backup |  | 50min | 2006-03-27 08:00 A | 2006-03-27 08:50 A |  | 100% |  |  |  |  |  |  |
| 107 | 1.5.3 | Product State Change Test |  | 50min | 2006-03-27 08:00 A | 2006-03-27 08:50 A |  | 100% |  |  |  |  |  |  |

| ID | WBS | Task | Type | Duration | Start | Finish | Predecessors | Complete | Baseline start | Baseline finish | Baseline duration | Resources | Work | Actual work |
| --- | --- | --- | --- | --- | --- | --- | --- | --- | --- | --- | --- | --- | --- | --- |
| 108 | 1.5 | **Install Hybrid BC B Side** |  | 0.12d | 2006-03-29 08:00 A | 2006-03-29 09:00 A | 104 | 100% | 2006-03-27 09:50 | 2006-03-27 15:35 | 0.59d | Cognizant | 7.42h | 7.42h |
| 109 | 1.16 | **Install Hybrid BC "B" side** |  | 0.12d | 2006-03-29 08:00 A | 2006-03-29 09:00 A |  | 100% | 2006-03-27 09:50 | 2006-03-27 13:10 | 0.29d | Cognizant | 3.33h | 3.33h |
| 110 | 1.6.1.1 | Cleanup |  | 20min | 2006-03-29 08:00 A | 2006-03-29 08:20 A |  | 100% | 2006-03-27 09:50 | 2006-03-27 10:10 | 20min | Cognizant | 0.33h | 0.33h |
| 111 | 1.16.1 | Configuration and starting processes |  | 1h | 2006-03-29 08:00 A | 2006-03-29 09:00 A | 110 | 100% | 2006-03-27 10:10 | 2006-03-27 11:10 | 1h | Cognizant | 1h | 1h |
| 112 | 1.16.2 | ITG Checkout script (W_MAIN and ONE_MAIN Session) |  | 40min | 2006-03-29 08:00 A | 2006-03-29 08:40 A | 111 | 100% | 2006-03-27 11:10 | 2006-03-27 11:50 | 40min | Cognizant | 0.67h | 0.67h |
| 113 | 1.16.3 | Backup and Reporting |  | 20min | 2006-03-29 08:00 A | 2006-03-29 08:20 A | 112 | 100% | 2006-03-27 11:50 | 2006-03-27 13:10 | 20min | Cognizant | 0.33h | 0.33h |
| 114 | 1.6.1.5 | Check: Sign Off on Checkout Scripts, Logs and Results | milestone | 0h | 2006-03-29 08:00 A | 2006-03-29 08:00 A | 113 | 100% | 2006-03-27 13:10 | 2006-03-27 13:10 | 0h | CBOE |  |  |
| 115 | 1.17 | **Hybrid BC failover (new release to new release)** |  | 0.08d | 2006-03-29 08:00 A | 2006-03-29 08:40 A | 109 | 100% | 2006-03-27 13:10 | 2006-03-27 15:35 | 0.3d | Cognizant | 3.08h | 3.08h |
| 116 | 1.17.1 | Initial setup for test Drivers (starting processes on BC Slave.) |  | 25min | 2006-03-29 08:00 A | 2006-03-29 08:25 A |  | 100% | 2006-03-27 13:10 | 2006-03-27 13:35 | 25min | Cognizant | 0.42h | 0.42h |
| 117 | 1.17.2 | Quote/Order BC20 Hybrid traffic going before/during/after failover. Test Execution |  | 30min | 2006-03-29 08:00 A | 2006-03-29 08:30 A | 116 | 100% | 2006-03-27 13:35 | 2006-03-27 14:05 | 30min | Cognizant | 0.5h | 0.5h |
| 118 | 1.17.3 | ITG Checkout script (for W_MAIN and ONE_MAIN Session) |  | 40min | 2006-03-29 08:00 A | 2006-03-29 08:40 A | 117 | 100% | 2006-03-27 14:05 | 2006-03-27 14:45 | 40min | Cognizant | 0.67h | 0.67h |
| 119 | 1.17.4 | Backup for Failover and ITG Checkout |  | 20min | 2006-03-29 08:00 A | 2006-03-29 08:20 A | 118 | 100% | 2006-03-27 14:45 | 2006-03-27 15:05 | 20min | Cognizant | 0.33h | 0.33h |
| 120 | 1.17.5 | Generate Report for Failover Timings for all BC Processes (taking time from log files) |  | 30min | 2006-03-29 08:00 A | 2006-03-29 08:30 A | 119 | 100% | 2006-03-27 15:05 | 2006-03-27 15:35 | 30min | Cognizant | 0.5h | 0.5h |
| 121 | 1.6.2.6 | Check: Sign Off on Checkout Scripts,Logs and Results | milestone | 0h | 2006-03-29 08:00 A | 2006-03-29 08:00 A | 120 | 100% | 2006-03-27 15:35 | 2006-03-27 15:35 | 0h | CBOE |  |  |
| 122 | 1.6 | **Install ONE_MAIN BC A Side** |  | 0.79d | 2006-03-28 08:00 A | 2006-03-28 15:20 A | 108 | 100% | 2006-03-27 15:35 | 2006-03-28 16:20 | 1.09d | Cognizant | 22.42h | 22.42h |
| 123 | 1.26 | **Install ONE_MAIN BC (A)** |  | 0.12d | 2006-03-28 08:00 A | 2006-03-28 09:00 A |  | 100% | 2006-03-27 15:35 | 2006-03-28 08:35 | 0.25d | Cognizant | 3h | 3h |
| 124 | 1.26.1 | Configuration and starting processes |  | 1h | 2006-03-28 08:00 A | 2006-03-28 09:00 A |  | 100% | 2006-03-27 15:35 | 2006-03-27 16:35 | 1h | Cognizant | 1h | 1h |
| 125 | 1.26.2 | ITG Checkout script (W_MAIN and ONE_MAIN Session) |  | 40min | 2006-03-28 08:00 A | 2006-03-28 08:40 A | 124 | 100% | 2006-03-27 16:35 | 2006-03-28 08:15 | 40min | Cognizant | 0.67h | 0.67h |
| 126 | 1.26.3 | Backup and Reporting |  | 20min | 2006-03-28 08:00 A | 2006-03-28 08:20 A | 125 | 100% | 2006-03-28 08:15 | 2006-03-28 08:35 | 20min | Cognizant | 0.33h | 0.33h |
| 127 | 1.7.1.4 | Check: Sign Off on Checkout Scripts, Logs and Results | milestone | 0h | 2006-03-28 08:00 A | 2006-03-28 08:00 A | 126 | 100% | 2006-03-28 08:35 | 2006-03-28 08:35 | 0h | CBOE |  |  |
| 128 | 1.27 | **Multi-class Order step-up test for ONE_MAIN [Scenario 2]** |  | 0.18d | 2006-03-28 08:00 A | 2006-03-28 09:25 A | 123 | 100% | 2006-03-28 08:35 | 2006-03-28 10:25 | 0.23d | Cognizant | 3.25h | 3.25h |
| 129 | 1.27.1 | BC Cleanup, Initial Driver Setup, |  | 20min | 2006-03-28 08:00 A | 2006-03-28 08:20 A |  | 100% | 2006-03-28 08:35 | 2006-03-28 08:55 | 20min | Cognizant | 0.33h | 0.33h |
| 130 | 1.27.2 | Test Execution for No BOTR |  | 1h | 2006-03-28 08:00 A | 2006-03-28 09:00 A | 129 | 100% | 2006-03-28 08:55 | 2006-03-28 09:55 | 1h | Cognizant | 1h | 1h |
| 131 | 1.27.3 | endOfPerformance and Backup |  | 15min | 2006-03-28 08:00 A | 2006-03-28 08:15 A | 130 | 100% | 2006-03-28 09:55 | 2006-03-28 10:10 | 15min | Cognizant | 0.25h | 0.25h |
| 132 | 1.27.4 | Reporting through KR site |  | 15min | 2006-03-28 08:00 A | 2006-03-28 08:15 A | 131 | 100% | 2006-03-28 10:10 | 2006-03-28 10:25 | 15min | Cognizant | 0.25h | 0.25h |
| 133 | 1.7.2.5 | Check: Sign Off on Logs and Results | milestone | 0h | 2006-03-28 09:25 A | 2006-03-28 09:25 A | 132 | 100% | 2006-03-28 10:25 | 2006-03-28 10:25 | 0h | CBOE |  |  |

| ID | WBS | Task | Type | Duration | Start | Finish | Predecessors | Complete | Baseline start | Baseline finish | Baseline duration | Resources | Work | Actual work |
| --- | --- | --- | --- | --- | --- | --- | --- | --- | --- | --- | --- | --- | --- | --- |
| 134 | 1.28 | **Multi-class Quote step-up test [Scenario 1]** |  | 0.27d | 2006-03-28 09:25 A | 2006-03-28 11:35 A | 128 | 100% | 2006-03-28 10:25 | 2006-03-28 13:35 | 0.27d | Cognizant | 4.33h | 4.33h |
| 135 | 1.28.1 | BC Cleanup, Initial Driver Setup, |  | 20min | 2006-03-28 09:25 A | 2006-03-28 09:45 A |  | 100% | 2006-03-28 10:25 | 2006-03-28 10:45 | 20min | Cognizant | 0.33h | 0.33h |
| 136 | 1.28.2 | Test Execution for No BOTR |  | 1h | 2006-03-28 09:45 A | 2006-03-28 10:45 A | 135 | 100% | 2006-03-28 10:45 | 2006-03-28 11:45 | 1h | Cognizant | 1h | 1h |
| 137 | 1.28.3 | endOfPerformance and Backup |  | 30min | 2006-03-28 10:45 A | 2006-03-28 11:15 A | 136 | 100% | 2006-03-28 11:45 | 2006-03-28 13:15 | 30min | Cognizant | 0.5h | 0.5h |
| 138 | 1.28.4 | Reporting through KR site |  | 20min | 2006-03-28 11:15 A | 2006-03-28 11:35 A | 137 | 100% | 2006-03-28 13:15 | 2006-03-28 13:35 | 20min | Cognizant | 0.33h | 0.33h |
| 139 | 1.7.3.5 | Check: Sign Off on Logs and Results | milestone | 0h | 2006-03-28 11:35 A | 2006-03-28 11:35 A | 138 | 100% | 2006-03-28 13:35 | 2006-03-28 13:35 | 0h | CBOE |  |  |
| 140 | 1.30 | **Failover ONE_MAIN BC (Old to New)** |  | 0.34d | 2006-03-28 11:35 A | 2006-03-28 15:20 A | 134 | 100% | 2006-03-28 13:35 | 2006-03-28 16:20 | 0.34d | Cognizant | 5.5h | 5.5h |
| 141 | 1.7.4.1 | Cleanup |  | 20min | 2006-03-28 11:35 A | 2006-03-28 11:55 A |  | 100% | 2006-03-28 13:35 | 2006-03-28 13:55 | 20min | Cognizant | 0.33h | 0.33h |
| 142 | 1.30.1 | Initial setup for test Drivers (starting processes on BC Slave.) |  | 25min | 2006-03-28 11:55 A | 2006-03-28 13:20 A | 141 | 100% | 2006-03-28 13:55 | 2006-03-28 14:20 | 25min | Cognizant | 0.42h | 0.42h |
| 143 | 1.30.2 | Quote/Order ONE_MAIN traffic going before/during/after failover. Test Execution |  | 30min | 2006-03-28 13:20 A | 2006-03-28 13:50 A | 142 | 100% | 2006-03-28 14:20 | 2006-03-28 14:50 | 30min | Cognizant | 0.5h | 0.5h |
| 144 | 1.30.3 | ITG Checkout script (for W_MAIN and ONE_MAIN Session) |  | 40min | 2006-03-28 13:50 A | 2006-03-28 14:30 A | 143 | 100% | 2006-03-28 14:50 | 2006-03-28 15:30 | 40min | Cognizant | 0.67h | 0.67h |
| 145 | 1.30.4 | Backup for Failover and ITG Checkout |  | 20min | 2006-03-28 14:30 A | 2006-03-28 14:50 A | 144 | 100% | 2006-03-28 15:30 | 2006-03-28 15:50 | 20min | Cognizant | 0.33h | 0.33h |
| 146 | 1.30.5 | Generate Report for Failover Timings for all BC Processes (taking time from log files) |  | 30min | 2006-03-28 14:50 A | 2006-03-28 15:20 A | 145 | 100% | 2006-03-28 15:50 | 2006-03-28 16:20 | 30min | Cognizant | 0.5h | 0.5h |
| 147 | 1.7.4.7 | Check: Sign Off on Checkout Scripts,Logs and Results | milestone | 0h | 2006-03-28 15:20 A | 2006-03-28 15:20 A | 146 | 100% | 2006-03-28 16:20 | 2006-03-28 16:20 | 0h | CBOE |  |  |
| 148 | 1.7 | **Install ONE_MAIN BC B Side** |  | 0.39d | 2006-03-29 08:00 A | 2006-03-29 11:05 A | 122 | 100% | 2006-03-28 16:20 | 2006-03-29 13:05 | 0.59d | Cognizant | 11.58h | 11.58h |
| 149 | 1.31 | **Install ONE_MAIN BC (B)** |  | 0.12d | 2006-03-29 08:00 A | 2006-03-29 09:00 A |  | 100% | 2006-03-28 16:20 | 2006-03-29 09:20 | 0.25d | Cognizant | 3h | 3h |
| 150 | 1.31.1 | Configuration and starting processes |  | 1h | 2006-03-29 08:00 A | 2006-03-29 09:00 A |  | 100% | 2006-03-28 16:20 | 2006-03-29 08:20 | 1h | Cognizant | 1h | 1h |
| 151 | 1.31.2 | ITG Checkout script (W_MAIN and ONE_MAIN Session) |  | 40min | 2006-03-29 08:00 A | 2006-03-29 08:40 A | 150 | 100% | 2006-03-29 08:20 | 2006-03-29 09:00 | 40min | Cognizant | 0.67h | 0.67h |
| 152 | 1.31.3 | Backup and Reporting |  | 20min | 2006-03-29 08:00 A | 2006-03-29 08:20 A | 151 | 100% | 2006-03-29 09:00 | 2006-03-29 09:20 | 20min | Cognizant | 0.33h | 0.33h |
| 153 | 1.8.1.4 | Check: Sign Off on Checkout Scripts, Logs and Results | milestone | 0h | 2006-03-29 08:20 A | 2006-03-29 08:20 A | 152 | 100% | 2006-03-29 09:20 | 2006-03-29 09:20 | 0h | CBOE |  |  |
| 154 | 1.8.2 | **Failover ONE_MAIN BC (New to New)** |  | 0.34d | 2006-03-29 08:20 A | 2006-03-29 11:05 A | 149 | 100% | 2006-03-29 09:20 | 2006-03-29 13:05 | 0.34d | Cognizant | 5.5h | 5.5h |
| 155 | 1.8.2.1 | Cleanup |  | 20min | 2006-03-29 08:20 A | 2006-03-29 08:40 A | 153 | 100% | 2006-03-29 09:20 | 2006-03-29 09:40 | 20min | Cognizant | 0.33h | 0.33h |
| 156 | 1.8.2.2 | Initial setup for test Drivers (starting processes on BC Slave.) |  | 25min | 2006-03-29 08:40 A | 2006-03-29 09:05 A | 155 | 100% | 2006-03-29 09:40 | 2006-03-29 10:05 | 25min | Cognizant | 0.42h | 0.42h |
| 157 | 1.8.2.3 | Quote/Order ONE_MAIN traffic going before/during/after failover. Test Execution |  | 30min | 2006-03-29 09:05 A | 2006-03-29 09:35 A | 156 | 100% | 2006-03-29 10:05 | 2006-03-29 10:35 | 30min | Cognizant | 0.5h | 0.5h |
| 158 | 1.8.2.4 | ITG Checkout script (for W_MAIN and ONE_MAIN Session) |  | 40min | 2006-03-29 09:35 A | 2006-03-29 10:15 A | 157 | 100% | 2006-03-29 10:35 | 2006-03-29 11:15 | 40min | Cognizant | 0.67h | 0.67h |
| 159 | 1.8.2.5 | Backup for Failover and ITG Checkout |  | 20min | 2006-03-29 10:15 A | 2006-03-29 10:35 A | 158 | 100% | 2006-03-29 11:15 | 2006-03-29 11:35 | 20min | Cognizant | 0.33h | 0.33h |
| 160 | 1.8.2.6 | Generate Report for Failover Timings for all BC Processes (taking time from log files) |  | 30min | 2006-03-29 10:35 A | 2006-03-29 11:05 A | 159 | 100% | 2006-03-29 11:35 | 2006-03-29 13:05 | 30min | Cognizant | 0.5h | 0.5h |
| 161 | 1.8.2.7 | Check: Sign Off on Checkout Scripts,Logs and Results | milestone | 0h | 2006-03-29 11:05 A | 2006-03-29 11:05 A | 160 | 100% | 2006-03-29 13:05 | 2006-03-29 13:05 | 0h | CBOE |  |  |

| ID | WBS | Task | Type | Duration | Start | Finish | Predecessors | Complete | Baseline start | Baseline finish | Baseline duration | Total slack | Resources | Work | Actual work |
| --- | --- | --- | --- | --- | --- | --- | --- | --- | --- | --- | --- | --- | --- | --- | --- |
| 162 | 1.9 | **4 Hour Endurance Test** |  | 0.5d | 2006-03-30 08:00 A | 2006-03-30 12:00 A | 154 | 100% | 2006-03-29 13:05 | 2006-03-30 10:05 | 0.75d |  | Cognizant | 10h | 10h |
| 163 | 1.9.1 | Cleanup for W_MAIN and ONE_MAIN BC |  | 20min | 2006-03-30 08:00 A | 2006-03-30 08:20 A |  | 100% | 2006-03-29 13:05 | 2006-03-29 13:25 | 20min |  | Cognizant | 0.33h | 0.33h |
| 164 | 1.9.2 | Driver setup |  | 20min | 2006-03-30 08:00 A | 2006-03-30 08:20 A | 163 | 100% | 2006-03-29 13:25 | 2006-03-29 13:45 | 20min |  | Cognizant | 0.33h | 0.33h |
| 165 | 1.9.3 | CAS bounce |  | 20min | 2006-03-30 08:00 A | 2006-03-30 08:20 A | 164 | 100% | 2006-03-29 13:45 | 2006-03-29 14:05 | 20min |  | Cognizant | 0.33h | 0.33h |
| 166 | 1.9.4 | 4 hour Sanity Check |  | 4h | 2006-03-30 08:00 A | 2006-03-30 12:00 A | 165 | 100% | 2006-03-29 14:05 | 2006-03-30 09:05 | 4h |  | Cognizant | 4h | 4h |
| 167 | 1.9.5 | endOfPerformance and Backup and Reporting |  | 1h | 2006-03-30 08:05 A | 2006-03-30 09:05 A | 166 | 100% | 2006-03-30 09:05 | 2006-03-30 10:05 | 1h |  | Cognizant | 1h | 1h |
| 168 | 1.9.6 | Check: Sign Off on Logs and Results | milestone | 0h | 2006-03-30 09:05 A | 2006-03-30 09:05 A | 167 | 100% | 2006-03-30 10:05 | 2006-03-30 10:05 | 0h |  | CBOE |  |  |
| 169 | 1.10 | **4 Hour Endurance Test with Auctions** |  | 0.75d | 2006-03-30 09:05 A | 2006-03-30 16:05 A | 162 | 100% | 2006-03-30 10:05 | 2006-03-31 08:05 | 0.75d |  | Cognizant | 12h | 12h |
| 170 | 1.10.1 | Cleanup for W_MAIN and ONE_MAIN BC |  | 20min | 2006-03-30 09:05 A | 2006-03-30 09:25 A |  | 100% | 2006-03-30 10:05 | 2006-03-30 10:25 | 20min |  | Cognizant | 0.33h | 0.33h |
| 171 | 1.10.2 | Driver setup |  | 20min | 2006-03-30 09:25 A | 2006-03-30 09:45 A | 170 | 100% | 2006-03-30 10:25 | 2006-03-30 10:45 | 20min |  | Cognizant | 0.33h | 0.33h |
| 172 | 1.10.3 | CAS bounce |  | 20min | 2006-03-30 09:45 A | 2006-03-30 10:05 A | 171 | 100% | 2006-03-30 10:45 | 2006-03-30 11:05 | 20min |  | Cognizant | 0.33h | 0.33h |
| 173 | 1.10.4 | 4 hour Sanity Check |  | 4h | 2006-03-30 10:05 A | 2006-03-30 15:05 A | 172 | 100% | 2006-03-30 11:05 | 2006-03-30 16:05 | 4h |  | Cognizant | 4h | 4h |
| 174 | 1.10.5 | endOfPerformance and Backup and Reporting |  | 1h | 2006-03-30 15:05 A | 2006-03-30 16:05 A | 173 | 100% | 2006-03-30 16:05 | 2006-03-31 08:05 | 1h |  | Cognizant | 1h | 1h |
| 175 | 1.10.6 | Check: Sign Off on Logs and Results | milestone | 0h | 2006-03-30 16:05 A | 2006-03-30 16:05 A | 174 | 100% | 2006-03-31 08:05 | 2006-03-31 08:05 | 0h |  | CBOE |  |  |
| 176 | 1.42 | **Server Side Full Cleanup after All Server upgrades.** |  | 0.17d | 2006-03-30 16:05 | 2006-03-31 08:25 | 175 |  | 2006-03-31 08:05 | 2006-03-31 09:25 | 0.17d | 0d | Cognizant | 2.67h |  |
| 177 | 1.42.1 | Time server full startup after cleanup (See Server Startup Timing Page) |  | 1h | 2006-03-30 16:05 | 2006-03-31 08:05 |  |  | 2006-03-31 08:05 | 2006-03-31 09:05 | 1h | 0d | Cognizant | 1h |  |
| 178 | 1.42.2 | Backup for server Timings |  | 20min | 2006-03-31 08:05 | 2006-03-31 08:25 | 177 |  | 2006-03-31 09:05 | 2006-03-31 09:25 | 20min | 0d | Cognizant | 0.33h |  |
| 179 | 1.11.3 | Check: Sign Off on Logs and Results | milestone | 0h | 2006-03-31 08:25 | 2006-03-31 08:25 | 178 |  | 2006-03-31 09:25 | 2006-03-31 09:25 | 0h | 0d | CBOE |  |  |
| 180 | 1.12 | **Check: Overall Verification** |  | 0d | 2006-03-31 08:25 | 2006-03-31 08:25 | 176 |  | 2006-03-31 09:25 | 2006-03-31 09:25 | 0d | 0d | CBOE |  |  |
| 181 | 1.12.1 | All Results Signed Off | milestone | 0h | 2006-03-31 08:25 | 2006-03-31 08:25 | 178 |  | 2006-03-31 09:25 | 2006-03-31 09:25 | 0h | 0d | CBOE |  |  |
| 182 | 1.12.2 | All Tests Completed | milestone | 0h | 2006-03-31 08:25 | 2006-03-31 08:25 | 178 |  | 2006-03-31 09:25 | 2006-03-31 09:25 | 0h | 0d | CBOE |  |  |
| 183 | 1.12.3 | Results Blessed by Paul and Respective Groups | milestone | 0h | 2006-03-31 08:25 | 2006-03-31 08:25 | 178 |  | 2006-03-31 09:25 | 2006-03-31 09:25 | 0h | 0d | CBOE |  |  |
