Schedule from MS Project, 2006-03-17 to 2006-03-30.
Cognizant Technology Solutions

## Calendars

- Standard: Mon-Fri 08:00-12:00, 13:00-17:00; Sat-Sun off.

## Resources

| Resource |
| --- |
| Cognizant |
| 2 |
| CBOE |
| Piwnicki |
| Bobbie |

## Schedule

| ID | WBS | Task | Type | Duration | Start | Finish | Predecessors | Total slack | Free slack | Resources | Work |
| --- | --- | --- | --- | --- | --- | --- | --- | --- | --- | --- | --- |
| 1 | 1 | **Rollout Task** |  | 9.55d | 2006-03-17 08:00 | 2006-03-30 13:25 |  | 0d |  |  | 212.92h |
| 2 | 1.1 | **Pre-Rollout Verification/Changes [If required]** |  | 0d | 2006-03-17 08:00 | 2006-03-17 08:00 |  | 10.18d |  |  |  |
| 3 | 1.1.1 | Database changes | milestone | 0h | 2006-03-17 08:00 | 2006-03-17 08:00 |  | 10.18d | 0d | CBOE |  |
| 4 | 1.1.2 | Extent Map changes | milestone | 0h | 2006-03-17 08:00 | 2006-03-17 08:00 | 3 | 10.18d | 0d | CBOE |  |
| 5 | 1.1.3 | Version label verification on all boxes | milestone | 0h | 2006-03-17 08:00 | 2006-03-17 08:00 | 4 | 10.18d | 0d | CBOE |  |
| 6 | 1.1.4 | Check: Tier Lead has verified information and obtained a sign off | milestone | 0h | 2006-03-17 08:00 | 2006-03-17 08:00 | 3, 4, 5 | 10.18d |  | CBOE |  |
| 7 | 1.2 | **Install GC A Side** |  | 1.33d | 2006-03-17 08:00 | 2006-03-20 10:40 |  | 0d |  | Cognizant | 32h |
| 8 | 1.2.1 | **Install GC "A" side with new release – load idl, create EC** |  | 0.67d | 2006-03-17 08:00 | 2006-03-17 14:20 |  | 0d |  | Cognizant | 10.67h |
| 9 | 1.2.1.1 | Generate XML, build Localrep, load All IFR and other Installation steps. |  | 1h | 2006-03-17 08:00 | 2006-03-17 09:00 |  | 0d |  | Cognizant | 1h |
| 10 | 1.2.1.2 | Server Side Full Cleanup |  | 3h | 2006-03-17 09:00 | 2006-03-17 12:00 | 9 | 0d |  | Cognizant | 3h |
| 11 | 1.2.1.3 | Time server full startup after cleanup (See Server Startup Timing Page) |  | 1h | 2006-03-17 13:00 | 2006-03-17 14:00 | 10 | 0d |  | Cognizant | 1h |
| 12 | 1.2.1.4 | Backup for server Timings |  | 20min | 2006-03-17 14:00 | 2006-03-17 14:20 | 11 | 0d |  | Cognizant | 0.33h |
| 13 | 1.2.1.5 | Check: Sign off on Server Timings | milestone | 0h | 2006-03-17 14:20 | 2006-03-17 14:20 | 12 | 0d |  | CBOE |  |
| 14 | 1.2.2 | **ITG Checkout Script** |  | 0.21d | 2006-03-17 14:20 | 2006-03-17 16:00 | 8 | 0d |  | Cognizant | 3.33h |
| 15 | 1.2.1 | W_MAIN session |  | 20min | 2006-03-17 14:20 | 2006-03-17 14:40 |  | 0d |  | Cognizant | 0.33h |
| 16 | 1.2.2 | ONE_MAIN Session |  | 20min | 2006-03-17 14:40 | 2006-03-17 15:00 | 15 | 0d |  | Cognizant | 0.33h |
| 17 | 1.2.3 | COF_MAIN Session |  | 20min | 2006-03-17 15:00 | 2006-03-17 15:20 | 16 | 0d |  | Cognizant | 0.33h |
| 18 | 1.2.4 | CFE_MAIN Session |  | 20min | 2006-03-17 15:20 | 2006-03-17 15:40 | 17 | 0d |  | Cognizant | 0.33h |
| 19 | 1.2.5 | Backup for ITG Checkout (endOfPerformanceReport) |  | 20min | 2006-03-17 15:40 | 2006-03-17 16:00 | 18 | 0d |  | Cognizant | 0.33h |
| 20 | 1.2.2.6 | Check: Sign off on Checkout Scripts | milestone | 0h | 2006-03-17 16:00 | 2006-03-17 16:00 | 19 | 0d |  | CBOE |  |
| 21 | 1.2.3 | **User Login test1** |  | 0.14d | 2006-03-17 16:00 | 2006-03-20 08:05 | 14 | 0d |  | Cognizant | 2.17h |
| 22 | 1.2.3.1 | Initial setup like bouncing Global Server and SACAS. |  | 15min | 2006-03-17 16:00 | 2006-03-17 16:15 |  | 0d |  | Cognizant | 0.25h |
| 23 | 1.2.3.2 | Login Test for 1 and 2 Users |  | 15min | 2006-03-17 16:15 | 2006-03-17 16:30 | 22 | 0d |  | Cognizant | 0.25h |
| 24 | 1.2.3.3 | Product State Update to CLOSE on VLO (visually timing Single class CLOSED with SAGUI) |  | 15min | 2006-03-17 16:30 | 2006-03-17 16:45 | 23 | 0d |  | Cognizant | 0.25h |
| 25 | 1.2.3.4 | Backup for Login User Test and Product state Update through SAGUI |  | 20min | 2006-03-17 16:45 | 2006-03-20 08:05 | 24 | 0d |  | Cognizant | 0.33h |
| 26 | 1.2.3.5 | Check: Sign Off on Logs and Results | milestone | 0h | 2006-03-20 08:05 | 2006-03-20 08:05 | 25 | 0d |  | CBOE |  |

| ID | WBS | Task | Type | Duration | Start | Finish | Predecessors | Total slack | Resources | Work |
| --- | --- | --- | --- | --- | --- | --- | --- | --- | --- | --- |
| 27 | 1.2.4 | **GC failover to "B" side** |  | 0.32d | 2006-03-20 08:05 | 2006-03-20 10:40 | 21 | 0d | Cognizant | 5.17h |
| 28 | 1.2.4.1 | Initial setup for test Drivers (starting processes on GC Slave.) |  | 30min | 2006-03-20 08:05 | 2006-03-20 08:35 |  | 0d | Cognizant | 0.5h |
| 29 | 1.2.4.2 | Quote/Order BC20 Hybrid and ONE_MAIN traffic going before/during/after failover. Should not hang to verify no Global Dependency introduced. Test Execution |  | 45min | 2006-03-20 08:35 | 2006-03-20 09:20 | 28 | 0d | Cognizant | 0.75h |
| 30 | 1.2.4.3 | ITG Checkout script (for W_MAIN and ONE_MAIN Session) |  | 30min | 2006-03-20 09:20 | 2006-03-20 09:50 | 29 | 0d | Cognizant | 0.5h |
| 31 | 1.2.4.4 | Backup for Failover and ITG Checkout |  | 20min | 2006-03-20 09:50 | 2006-03-20 10:10 | 30 | 0d | Cognizant | 0.33h |
| 32 | 1.2.4.5 | Generate Report for Failover Timings for all GC Processes (taking time from log files) |  | 30min | 2006-03-20 10:10 | 2006-03-20 10:40 | 31 | 0d | Cognizant | 0.5h |
| 33 | 1.2.4.6 | Check: Sign Off on Checkout Scripts, Logs and Results | milestone | 0h | 2006-03-20 10:40 | 2006-03-20 10:40 | 32 | 0d | CBOE |  |
| 34 | 1.3 | **Install GC B Side** |  | 1.04d | 2006-03-20 10:40 | 2006-03-21 11:00 | 7 | 0d | Cognizant | 25h |
| 35 | 1.3.1 | **Install GC "B" side** |  | 0.5d | 2006-03-20 10:40 | 2006-03-20 15:40 |  | 0d | Cognizant | 8h |
| 36 | 1.3.1.1 | Cleanup, createCurrentBusinessDay,starting all GC Processes on B side |  | 3h | 2006-03-20 10:40 | 2006-03-20 14:40 |  | 0d | Cognizant | 3h |
| 37 | 1.3.1.2 | ITG Checkout script (for W_MAIN and ONE_MAIN Session) |  | 40min | 2006-03-20 14:40 | 2006-03-20 15:20 | 36 | 0d | Cognizant | 0.67h |
| 38 | 1.3.1.3 | Backup for GC Upgrade and ITG Checkout |  | 20min | 2006-03-20 15:20 | 2006-03-20 15:40 | 37 | 0d | Cognizant | 0.33h |
| 39 | 1.3.1.4 | Check: Sign Off on Checkout Scripts, Logs and Results | milestone | 0h | 2006-03-20 15:40 | 2006-03-20 15:40 | 38 | 0d | CBOE |  |
| 40 | 1.3.2 | **GC fail over to "A" side** |  | 0.31d | 2006-03-20 15:40 | 2006-03-21 09:10 | 35 | 0d | Cognizant | 5h |
| 41 | 1.3.2.1 | Initial setup for test Drivers (starting processes on GC Slave.) |  | 30min | 2006-03-20 15:40 | 2006-03-20 16:10 |  | 0d | Cognizant | 0.5h |
| 42 | 1.3.2.2 | Quote/Order BC20 Hybrid and ONE_MAIN traffic going before/during/after failover. Should not hang to verify no Global Dependency introduced. Test Execution |  | 30min | 2006-03-20 16:10 | 2006-03-20 16:40 | 41 | 0d | Cognizant | 0.5h |
| 43 | 1.3.2.3 | ITG Checkout script (for W_MAIN and ONE_MAIN Session) |  | 40min | 2006-03-20 16:40 | 2006-03-21 08:20 | 42 | 0d | Cognizant | 0.67h |
| 44 | 1.3.2.4 | Backup for Failover and ITG Checkout |  | 20min | 2006-03-21 08:20 | 2006-03-21 08:40 | 43 | 0d | Cognizant | 0.33h |
| 45 | 1.3.2.5 | Generate Report for Failover Timings for all GC Processes (taking time from log files) |  | 30min | 2006-03-21 08:40 | 2006-03-21 09:10 | 44 | 0d | Cognizant | 0.5h |
| 46 | 1.3.2.6 | Check: Sign Off on Checkout Scripts, Logs and Results | milestone | 0h | 2006-03-21 09:10 | 2006-03-21 09:10 | 45 | 0d | CBOE |  |
| 47 | 1.3.3 | **Login User and 60 User Login** |  | 0.23d | 2006-03-21 09:10 | 2006-03-21 11:00 | 40 | 0d | Cognizant | 3.67h |
| 48 | 1.3.3.1 | bouncing Global Server process, SACAS and all other CASes for 60 User login Test and SAGUI login test |  | 35min | 2006-03-21 09:10 | 2006-03-21 09:45 |  | 0d | Cognizant | 0.58h |
| 49 | 1.3.3.2 | Driver Setup |  | 15min | 2006-03-21 09:45 | 2006-03-21 10:00 | 48 | 0d | Cognizant | 0.25h |
| 50 | 1.3.3.2 | User login test and 60 user login test, test execution |  | 30min | 2006-03-21 10:00 | 2006-03-21 10:30 | 49 | 0d | Cognizant | 0.5h |
| 51 | 1.3.3.3 | Backup and Reporting |  | 30min | 2006-03-21 10:30 | 2006-03-21 11:00 | 50 | 0d | Cognizant | 0.5h |
| 52 | 1.3.3.5 | Check: Sign Off on Logs and Results | milestone | 0h | 2006-03-21 11:00 | 2006-03-21 11:00 | 51 | 0d | CBOE |  |

| ID | WBS | Task | Type | Duration | Start | Finish | Predecessors | Total slack | Resources | Work |
| --- | --- | --- | --- | --- | --- | --- | --- | --- | --- | --- |
| 53 | 1.4 | **Install Hybrid BC A Side** |  | 2.85d | 2006-03-21 11:00 | 2006-03-24 09:50 | 34 | 0d | Cognizant | 68.5h |
| 54 | 1.10 | **Install Hybrid BC (A)** |  | 0.25d | 2006-03-21 11:00 | 2006-03-21 14:00 |  | 0d | Cognizant | 4h |
| 55 | 1.10.1 | Configuration and starting processes |  | 1h | 2006-03-21 11:00 | 2006-03-21 12:00 |  | 0d | Cognizant | 1h |
| 56 | 1.10.2 | ITG Checkout script (W_MAIN and ONE_MAIN Session) |  | 40min | 2006-03-21 13:00 | 2006-03-21 13:40 | 55 | 0d | Cognizant | 0.67h |
| 57 | 1.10.3 | Backup and Reporting |  | 20min | 2006-03-21 13:40 | 2006-03-21 14:00 | 56 | 0d | Cognizant | 0.33h |
| 58 | 1.4.1.4 | Check: Sign Off on Checkout Scripts, Logs and Results | milestone | 0h | 2006-03-21 14:00 | 2006-03-21 14:00 | 57 | 0d | CBOE |  |
| 59 | 1.4.2 | **Global Dependency Test** |  | 0.1d | 2006-03-21 14:00 | 2006-03-21 14:50 | 54 | 0d | Cognizant | 1.67h |
| 60 | 1.4.2.1 | Test Execution |  | 30min | 2006-03-21 14:00 | 2006-03-21 14:30 | 58 | 0d | Cognizant | 0.5h |
| 61 | 1.4.2.2 | Log Backup and Reporting |  | 20min | 2006-03-21 14:30 | 2006-03-21 14:50 | 60 | 0d | Cognizant | 0.33h |
| 62 | 1.4.2.3 | Check:Log and Results verification | milestone | 0h | 2006-03-21 14:50 | 2006-03-21 14:50 | 61 | 0d | Cognizant |  |
| 63 | 1.4.3 | **Hybrid test scenario 5 (Product State Change Test)** |  | 0.19d | 2006-03-21 14:50 | 2006-03-21 16:20 | 59 | 0d | Cognizant | 3h |
| 64 | 1.4.3.1 | BC Cleanup, Initial Driver Setup, |  | 20min | 2006-03-21 14:50 | 2006-03-21 15:10 |  | 0d | Cognizant | 0.33h |
| 65 | 1.4.3.2 | Test Execution - Global Server Bounce |  | 40min | 2006-03-21 15:10 | 2006-03-21 15:50 | 64 | 0d | Cognizant | 0.67h |
| 66 | 1.4.3.3 | Monitor and Backup logs |  | 20min | 2006-03-21 15:50 | 2006-03-21 16:10 | 65 | 0d | Cognizant | 0.33h |
| 67 | 1.4.3.4 | Reporting through KR site |  | 10min | 2006-03-21 16:10 | 2006-03-21 16:20 | 66 | 0d | Cognizant | 0.17h |
| 68 | 1.4.3.5 | Check: Sign Off on Logs and Results | milestone | 0h | 2006-03-21 16:20 | 2006-03-21 16:20 | 67 | 0d | CBOE |  |
| 69 | 1.12 | **Multi-class Quote step-up test with BOTR [Scenario 3]** |  | 0.39d | 2006-03-21 16:20 | 2006-03-22 10:25 | 63 | 0d | Cognizant | 6.17h |
| 70 | 1.12.1 | BC Cleanup, Initial Driver Setup, |  | 20min | 2006-03-21 16:20 | 2006-03-21 16:40 |  | 0d | Cognizant | 0.33h |
| 71 | 1.12.2 | Test Execution for No BOTR |  | 1h | 2006-03-21 16:40 | 2006-03-22 08:40 | 70 | 0d | Cognizant | 1h |
| 72 | 1.12.3 | BOTR from 4000 to 16000 |  | 30min | 2006-03-22 08:40 | 2006-03-22 09:10 | 71 | 0d | Cognizant | 0.5h |
| 73 | 1.12.4 | endOfPerformance and Backup |  | 45min | 2006-03-22 09:10 | 2006-03-22 09:55 | 72 | 0d | Cognizant | 0.75h |
| 74 | 1.12.5 | Reporting through KR site |  | 30min | 2006-03-22 09:55 | 2006-03-22 10:25 | 73 | 0d | Cognizant | 0.5h |
| 75 | 1.4.4.6 | Check: Sign Off on Logs and Results | milestone | 0h | 2006-03-22 10:25 | 2006-03-22 10:25 | 74 | 0d | CBOE |  |
| 76 | 1.13 | **Single-class Quote step-up test with BOTR [Scenario 1]** |  | 0.34d | 2006-03-22 10:25 | 2006-03-22 14:10 | 69 | 0d | Cognizant | 5.5h |
| 77 | 1.13.1 | BC Cleanup, Initial Driver Setup, |  | 20min | 2006-03-22 10:25 | 2006-03-22 10:45 |  | 0d | Cognizant | 0.33h |
| 78 | 1.13.2 | Test Execution for No BOTR |  | 1h | 2006-03-22 10:45 | 2006-03-22 11:45 | 77 | 0d | Cognizant | 1h |
| 79 | 1.13.3 | BOTR 16000 |  | 10min | 2006-03-22 11:45 | 2006-03-22 11:55 | 78 | 0d | Cognizant | 0.17h |
| 80 | 1.13.4 | endOfPerformance and Backup |  | 45min | 2006-03-22 11:55 | 2006-03-22 13:40 | 79 | 0d | Cognizant | 0.75h |
| 81 | 1.13.5 | Reporting through KR site |  | 30min | 2006-03-22 13:40 | 2006-03-22 14:10 | 80 | 0d | Cognizant | 0.5h |
| 82 | 1.4.5.6 | Check: Sign Off On Logs and Results | milestone | 0h | 2006-03-22 14:10 | 2006-03-22 14:10 | 81 | 0d | CBOE |  |

| ID | WBS | Task | Type | Duration | Start | Finish | Predecessors | Total slack | Resources | Work |
| --- | --- | --- | --- | --- | --- | --- | --- | --- | --- | --- |
| 83 | 1.14 | **Multi-class Order step-up test [Scenario 4]** |  | 0.24d | 2006-03-22 14:10 | 2006-03-22 16:05 | 76 | 0d | Cognizant | 3.83h |
| 84 | 1.14.1 | BC Cleanup, Initial Driver Setup, |  | 20min | 2006-03-22 14:10 | 2006-03-22 14:30 |  | 0d | Cognizant | 0.33h |
| 85 | 1.14.2 | Test Execution for No BOTR |  | 1h | 2006-03-22 14:30 | 2006-03-22 15:30 | 84 | 0d | Cognizant | 1h |
| 86 | 1.14.3 | endOfPerformance and Backup |  | 20min | 2006-03-22 15:30 | 2006-03-22 15:50 | 85 | 0d | Cognizant | 0.33h |
| 87 | 1.14.4 | Reporting through KR site |  | 15min | 2006-03-22 15:50 | 2006-03-22 16:05 | 86 | 0d | Cognizant | 0.25h |
| 88 | 1.4.6.5 | Check: Sign Off on Logs and Results | milestone | 0h | 2006-03-22 16:05 | 2006-03-22 16:05 | 87 | 0d | CBOE |  |
| 89 | 1.4.7 | **HAL Scenarios** |  | 1d | 2006-03-22 16:05 | 2006-03-23 16:05 | 83 | 0d | Cognizant | 16h |
| 90 | 1.4.7.1 | Scenario 1: All Orders Trade - Baseline |  | 2h | 2006-03-22 16:05 | 2006-03-23 09:05 |  | 0d | Cognizant | 2h |
| 91 | 1.4.7.2 | Scenario 2: All Orders Book No Trade - Baseline |  | 2h | 2006-03-23 09:05 | 2006-03-23 11:05 | 90 | 0d | Cognizant | 2h |
| 92 | 1.4.7.3 | Scenario 3: All Orders Auction But No Trades |  | 2h | 2006-03-23 11:05 | 2006-03-23 14:05 | 91 | 0d | Cognizant | 2h |
| 93 | 1.4.7.4 | Scenario 4: All Orders Auction and Trade |  | 2h | 2006-03-23 14:05 | 2006-03-23 16:05 | 92 | 0d | Cognizant | 2h |
| 94 | 1.4.7.5 | Check: Sign Off on Logs and Results | milestone | 0h | 2006-03-23 16:05 | 2006-03-23 16:05 | 93 | 0d | CBOE |  |
| 95 | 1.15 | **Hybrid BC failover (new release to old release)** |  | 0.34d | 2006-03-23 16:05 | 2006-03-24 09:50 | 89 | 0d | Cognizant | 5.5h |
| 96 | 1.4.8.1 | BC Cleanup start A Side as Master |  | 20min | 2006-03-23 16:05 | 2006-03-23 16:25 |  | 0d | Cognizant | 0.33h |
| 97 | 1.15.1 | Initial setup for test Drivers (starting processes on BC Slave.) |  | 25min | 2006-03-23 16:25 | 2006-03-23 16:50 | 96 | 0d | Cognizant | 0.42h |
| 98 | 1.15.2 | Quote/Order BC20 Hybrid traffic going before/during/after failover. Test Execution |  | 30min | 2006-03-23 16:50 | 2006-03-24 08:20 | 97 | 0d | Cognizant | 0.5h |
| 99 | 1.15.3 | ITG Checkout script (for W_MAIN and ONE_MAIN Session) |  | 40min | 2006-03-24 08:20 | 2006-03-24 09:00 | 98 | 0d | Cognizant | 0.67h |
| 100 | 1.15.4 | Backup for Failover and ITG Checkout |  | 20min | 2006-03-24 09:00 | 2006-03-24 09:20 | 99 | 0d | Cognizant | 0.33h |
| 101 | 1.15.5 | Generate Report for Failover Timings for all BC Processes (taking time from log files) |  | 30min | 2006-03-24 09:20 | 2006-03-24 09:50 | 100 | 0d | Cognizant | 0.5h |
| 102 | 1.4.8.7 | Check: Sign Off on Checkout Scripts, Logs and Results | milestone | 0h | 2006-03-24 09:50 | 2006-03-24 09:50 | 101 | 0d | CBOE |  |
| 103 | 1.5 | **Install Hybrid BC B Side** |  | 0.59d | 2006-03-24 09:50 | 2006-03-24 15:35 | 53 | 0d | Cognizant | 14.25h |
| 104 | 1.16 | **Install Hybrid BC "B" side** |  | 0.29d | 2006-03-24 09:50 | 2006-03-24 13:10 |  | 0d | Cognizant | 4.67h |
| 105 | 1.5.1.1 | Cleanup |  | 20min | 2006-03-24 09:50 | 2006-03-24 10:10 |  | 0d | Cognizant | 0.33h |
| 106 | 1.16.1 | Configuration and starting processes |  | 1h | 2006-03-24 10:10 | 2006-03-24 11:10 | 105 | 0d | Cognizant | 1h |
| 107 | 1.16.2 | ITG Checkout script (W_MAIN and ONE_MAIN Session) |  | 40min | 2006-03-24 11:10 | 2006-03-24 11:50 | 106 | 0d | Cognizant | 0.67h |
| 108 | 1.16.3 | Backup and Reporting |  | 20min | 2006-03-24 11:50 | 2006-03-24 13:10 | 107 | 0d | Cognizant | 0.33h |
| 109 | 1.5.1.5 | Check: Sign Off on Checkout Scripts, Logs and Results | milestone | 0h | 2006-03-24 13:10 | 2006-03-24 13:10 | 108 | 0d | CBOE |  |

| ID | WBS | Task | Type | Duration | Start | Finish | Predecessors | Total slack | Resources | Work |
| --- | --- | --- | --- | --- | --- | --- | --- | --- | --- | --- |
| 110 | 1.17 | **Hybrid BC failover (new release to new release)** |  | 0.3d | 2006-03-24 13:10 | 2006-03-24 15:35 | 104 | 0d | Cognizant | 4.83h |
| 111 | 1.17.1 | Initial setup for test Drivers (starting processes on BC Slave.) |  | 25min | 2006-03-24 13:10 | 2006-03-24 13:35 |  | 0d | Cognizant | 0.42h |
| 112 | 1.17.2 | Quote/Order BC20 Hybrid traffic going before/during/after failover. Test Execution |  | 30min | 2006-03-24 13:35 | 2006-03-24 14:05 | 111 | 0d | Cognizant | 0.5h |
| 113 | 1.17.3 | ITG Checkout script (for W_MAIN and ONE_MAIN Session) |  | 40min | 2006-03-24 14:05 | 2006-03-24 14:45 | 112 | 0d | Cognizant | 0.67h |
| 114 | 1.17.4 | Backup for Failover and ITG Checkout |  | 20min | 2006-03-24 14:45 | 2006-03-24 15:05 | 113 | 0d | Cognizant | 0.33h |
| 115 | 1.17.5 | Generate Report for Failover Timings for all BC Processes (taking time from log files) |  | 30min | 2006-03-24 15:05 | 2006-03-24 15:35 | 114 | 0d | Cognizant | 0.5h |
| 116 | 1.5.2.6 | Check: Sign Off on Checkout Scripts,Logs and Results | milestone | 0h | 2006-03-24 15:35 | 2006-03-24 15:35 | 115 | 0d | CBOE |  |
| 117 | 1.6 | **Install ONE_MAIN BC A Side** |  | 1.09d | 2006-03-24 15:35 | 2006-03-27 16:20 | 103 | 0d | Cognizant | 26.25h |
| 118 | 1.26 | **Install ONE_MAIN BC (A)** |  | 0.25d | 2006-03-24 15:35 | 2006-03-27 08:35 |  | 0d | Cognizant | 4h |
| 119 | 1.26.1 | Configuration and starting processes |  | 1h | 2006-03-24 15:35 | 2006-03-24 16:35 |  | 0d | Cognizant | 1h |
| 120 | 1.26.2 | ITG Checkout script (W_MAIN and ONE_MAIN Session) |  | 40min | 2006-03-24 16:35 | 2006-03-27 08:15 | 119 | 0d | Cognizant | 0.67h |
| 121 | 1.26.3 | Backup and Reporting |  | 20min | 2006-03-27 08:15 | 2006-03-27 08:35 | 120 | 0d | Cognizant | 0.33h |
| 122 | 1.6.1.4 | Check: Sign Off on Checkout Scripts, Logs and Results | milestone | 0h | 2006-03-27 08:35 | 2006-03-27 08:35 | 121 | 0d | CBOE |  |
| 123 | 1.27 | **Multi-class Order step-up test for ONE_MAIN [Scenario 2]** |  | 0.23d | 2006-03-27 08:35 | 2006-03-27 10:25 | 118 | 0d | Cognizant | 3.67h |
| 124 | 1.27.1 | BC Cleanup, Initial Driver Setup, |  | 20min | 2006-03-27 08:35 | 2006-03-27 08:55 |  | 0d | Cognizant | 0.33h |
| 125 | 1.27.2 | Test Execution for No BOTR |  | 1h | 2006-03-27 08:55 | 2006-03-27 09:55 | 124 | 0d | Cognizant | 1h |
| 126 | 1.27.3 | endOfPerformance and Backup |  | 15min | 2006-03-27 09:55 | 2006-03-27 10:10 | 125 | 0d | Cognizant | 0.25h |
| 127 | 1.27.4 | Reporting through KR site |  | 15min | 2006-03-27 10:10 | 2006-03-27 10:25 | 126 | 0d | Cognizant | 0.25h |
| 128 | 1.6.2.5 | Check: Sign Off on Logs and Results | milestone | 0h | 2006-03-27 10:25 | 2006-03-27 10:25 | 127 | 0d | CBOE |  |
| 129 | 1.28 | **Multi-class Quote step-up test [Scenario 1]** |  | 0.27d | 2006-03-27 10:25 | 2006-03-27 13:35 | 123 | 0d | Cognizant | 4.33h |
| 130 | 1.28.1 | BC Cleanup, Initial Driver Setup, |  | 20min | 2006-03-27 10:25 | 2006-03-27 10:45 |  | 0d | Cognizant | 0.33h |
| 131 | 1.28.2 | Test Execution for No BOTR |  | 1h | 2006-03-27 10:45 | 2006-03-27 11:45 | 130 | 0d | Cognizant | 1h |
| 132 | 1.28.3 | endOfPerformance and Backup |  | 30min | 2006-03-27 11:45 | 2006-03-27 13:15 | 131 | 0d | Cognizant | 0.5h |
| 133 | 1.28.4 | Reporting through KR site |  | 20min | 2006-03-27 13:15 | 2006-03-27 13:35 | 132 | 0d | Cognizant | 0.33h |
| 134 | 1.6.3.5 | Check: Sign Off on Logs and Results | milestone | 0h | 2006-03-27 13:35 | 2006-03-27 13:35 | 133 | 0d | CBOE |  |

| ID | WBS | Task | Type | Duration | Start | Finish | Predecessors | Total slack | Resources | Work |
| --- | --- | --- | --- | --- | --- | --- | --- | --- | --- | --- |
| 135 | 1.30 | **Failover ONE_MAIN BC (Old to New)** |  | 0.34d | 2006-03-27 13:35 | 2006-03-27 16:20 | 129 | 0d | Cognizant | 5.5h |
| 136 | 1.6.4.1 | Cleanup |  | 20min | 2006-03-27 13:35 | 2006-03-27 13:55 |  | 0d | Cognizant | 0.33h |
| 137 | 1.30.1 | Initial setup for test Drivers (starting processes on BC Slave.) |  | 25min | 2006-03-27 13:55 | 2006-03-27 14:20 | 136 | 0d | Cognizant | 0.42h |
| 138 | 1.30.2 | Quote/Order ONE_MAIN traffic going before/during/after failover. Test Execution |  | 30min | 2006-03-27 14:20 | 2006-03-27 14:50 | 137 | 0d | Cognizant | 0.5h |
| 139 | 1.30.3 | ITG Checkout script (for W_MAIN and ONE_MAIN Session) |  | 40min | 2006-03-27 14:50 | 2006-03-27 15:30 | 138 | 0d | Cognizant | 0.67h |
| 140 | 1.30.4 | Backup for Failover and ITG Checkout |  | 20min | 2006-03-27 15:30 | 2006-03-27 15:50 | 139 | 0d | Cognizant | 0.33h |
| 141 | 1.30.5 | Generate Report for Failover Timings for all BC Processes (taking time from log files) |  | 30min | 2006-03-27 15:50 | 2006-03-27 16:20 | 140 | 0d | Cognizant | 0.5h |
| 142 | 1.6.4.7 | Check: Sign Off on Checkout Scripts,Logs and Results | milestone | 0h | 2006-03-27 16:20 | 2006-03-27 16:20 | 141 | 0d | CBOE |  |
| 143 | 1.7 | **Install ONE_MAIN BC B Side** |  | 0.59d | 2006-03-27 16:20 | 2006-03-28 13:05 | 117 | 0d | Cognizant | 14.25h |
| 144 | 1.31 | **Install ONE_MAIN BC (B)** |  | 0.25d | 2006-03-27 16:20 | 2006-03-28 09:20 |  | 0d | Cognizant | 4h |
| 145 | 1.31.1 | Configuration and starting processes |  | 1h | 2006-03-27 16:20 | 2006-03-28 08:20 |  | 0d | Cognizant | 1h |
| 146 | 1.31.2 | ITG Checkout script (W_MAIN and ONE_MAIN Session) |  | 40min | 2006-03-28 08:20 | 2006-03-28 09:00 | 145 | 0d | Cognizant | 0.67h |
| 147 | 1.31.3 | Backup and Reporting |  | 20min | 2006-03-28 09:00 | 2006-03-28 09:20 | 146 | 0d | Cognizant | 0.33h |
| 148 | 1.7.1.4 | Check: Sign Off on Checkout Scripts, Logs and Results | milestone | 0h | 2006-03-28 09:20 | 2006-03-28 09:20 | 147 | 0d | CBOE |  |
| 149 | 1.7.2 | **Failover ONE_MAIN BC (New to New)** |  | 0.34d | 2006-03-28 09:20 | 2006-03-28 13:05 | 144 | 0d | Cognizant | 5.5h |
| 150 | 1.7.2.1 | Cleanup |  | 20min | 2006-03-28 09:20 | 2006-03-28 09:40 | 148 | 0d | Cognizant | 0.33h |
| 151 | 1.7.2.2 | Initial setup for test Drivers (starting processes on BC Slave.) |  | 25min | 2006-03-28 09:40 | 2006-03-28 10:05 | 150 | 0d | Cognizant | 0.42h |
| 152 | 1.7.2.3 | Quote/Order ONE_MAIN traffic going before/during/after failover. Test Execution |  | 30min | 2006-03-28 10:05 | 2006-03-28 10:35 | 151 | 0d | Cognizant | 0.5h |
| 153 | 1.7.2.4 | ITG Checkout script (for W_MAIN and ONE_MAIN Session) |  | 40min | 2006-03-28 10:35 | 2006-03-28 11:15 | 152 | 0d | Cognizant | 0.67h |
| 154 | 1.7.2.5 | Backup for Failover and ITG Checkout |  | 20min | 2006-03-28 11:15 | 2006-03-28 11:35 | 153 | 0d | Cognizant | 0.33h |
| 155 | 1.7.2.6 | Generate Report for Failover Timings for all BC Processes (taking time from log files) |  | 30min | 2006-03-28 11:35 | 2006-03-28 13:05 | 154 | 0d | Cognizant | 0.5h |
| 156 | 1.7.2.7 | Check: Sign Off on Checkout Scripts,Logs and Results | milestone | 0h | 2006-03-28 13:05 | 2006-03-28 13:05 | 155 | 0d | CBOE |  |
| 157 | 1.8 | **4 Hour Endurance Test** |  | 0.75d | 2006-03-28 13:05 | 2006-03-29 10:05 | 149 | 0d | Cognizant | 12h |
| 158 | 1.8.1 | Cleanup for W_MAIN and ONE_MAIN BC |  | 20min | 2006-03-28 13:05 | 2006-03-28 13:25 |  | 0d | Cognizant | 0.33h |
| 159 | 1.8.2 | Driver setup |  | 20min | 2006-03-28 13:25 | 2006-03-28 13:45 | 158 | 0d | Cognizant | 0.33h |
| 160 | 1.8.3 | CAS bounce |  | 20min | 2006-03-28 13:45 | 2006-03-28 14:05 | 159 | 0d | Cognizant | 0.33h |
| 161 | 1.8.4 | 4 hour Sanity Check |  | 4h | 2006-03-28 14:05 | 2006-03-29 09:05 | 160 | 0d | Cognizant | 4h |
| 162 | 1.8.5 | endOfPerformance and Backup and Reporting |  | 1h | 2006-03-29 09:05 | 2006-03-29 10:05 | 161 | 0d | Cognizant | 1h |
| 163 | 1.8.6 | Check: Sign Off on Logs and Results | milestone | 0h | 2006-03-29 10:05 | 2006-03-29 10:05 | 162 | 0d | CBOE |  |

| ID | WBS | Task | Type | Duration | Start | Finish | Predecessors | Total slack | Resources | Work |
| --- | --- | --- | --- | --- | --- | --- | --- | --- | --- | --- |
| 164 | 1.9 | **4 Hour Endurance Test with Auctions** |  | 0.75d | 2006-03-29 10:05 | 2006-03-30 08:05 | 157 | 0d | Cognizant | 12h |
| 165 | 1.9.1 | Cleanup for W_MAIN and ONE_MAIN BC |  | 20min | 2006-03-29 10:05 | 2006-03-29 10:25 |  | 0d | Cognizant | 0.33h |
| 166 | 1.9.2 | Driver setup |  | 20min | 2006-03-29 10:25 | 2006-03-29 10:45 | 165 | 0d | Cognizant | 0.33h |
| 167 | 1.9.3 | CAS bounce |  | 20min | 2006-03-29 10:45 | 2006-03-29 11:05 | 166 | 0d | Cognizant | 0.33h |
| 168 | 1.9.4 | 4 hour Sanity Check |  | 4h | 2006-03-29 11:05 | 2006-03-29 16:05 | 167 | 0d | Cognizant | 4h |
| 169 | 1.9.5 | endOfPerformance and Backup and Reporting |  | 1h | 2006-03-29 16:05 | 2006-03-30 08:05 | 168 | 0d | Cognizant | 1h |
| 170 | 1.9.6 | Check: Sign Off on Logs and Results | milestone | 0h | 2006-03-30 08:05 | 2006-03-30 08:05 | 169 | 0d | CBOE |  |
| 171 | 1.42 | **Server Side Full Cleanup after All Server upgrades.** |  | 0.54d | 2006-03-30 08:05 | 2006-03-30 13:25 | 170 | 0d | Cognizant | 8.67h |
| 172 | 1.42.1 | Time server full startup after cleanup (See Server Startup Timing Page) |  | 4h | 2006-03-30 08:05 | 2006-03-30 13:05 |  | 0d | Cognizant | 4h |
| 173 | 1.42.2 | Backup for server Timings |  | 20min | 2006-03-30 13:05 | 2006-03-30 13:25 | 172 | 0d | Cognizant | 0.33h |
| 174 | 1.10.3 | Check: Sign Off on Logs and Results | milestone | 0h | 2006-03-30 13:25 | 2006-03-30 13:25 | 173 | 0d | CBOE |  |
| 175 | 1.11 | **Check: Overall Verification** |  | 0d | 2006-03-30 13:25 | 2006-03-30 13:25 | 171 | 0d | CBOE |  |
| 176 | 1.11.1 | All Results Signed Off | milestone | 0h | 2006-03-30 13:25 | 2006-03-30 13:25 | 173 | 0d | CBOE |  |
| 177 | 1.11.2 | All Tests Completed | milestone | 0h | 2006-03-30 13:25 | 2006-03-30 13:25 | 173 | 0d | CBOE |  |
| 178 | 1.11.3 | Results Blessed by Paul and Respective Groups | milestone | 0h | 2006-03-30 13:25 | 2006-03-30 13:25 | 173 | 0d | CBOE |  |
