Schedule from MS Project, 2006-05-10 to 2006-06-13.
Cognizant Technology Solutions

## Calendars

- Standard: Mon-Fri 08:00-12:00, 13:00-17:00; Sat-Sun off.

## Resources

| Resource |
| --- |
| Cognizant |
| 2 |
| CBOE |

## Schedule

| ID | WBS | Task | Duration | Start | Finish | Predecessors | Baseline start | Baseline finish | Baseline duration | Total slack | Constraint | Resources | Work |
| --- | --- | --- | --- | --- | --- | --- | --- | --- | --- | --- | --- | --- | --- |
| 1 | 1 | **Rollout Task** | 24.15d? | 2006-05-10 08:00 | 2006-06-13 09:10 |  | 2006-03-14 08:00 | 2006-05-17 13:55 | 46.61d? | 0d |  |  | 594.75h |
| 2 | 1.1 | **Pre-Rollout Verification/Changes** | 1.03d? | 2006-05-10 08:00 | 2006-05-11 08:15 |  | 2006-03-14 08:00 | 2006-05-17 13:55 | 46.61d? | 0d |  |  | 10.5h |
| 3 | 1.1.1 | **Make Database Changes** | 0.75d? | 2006-05-10 08:00 | 2006-05-10 15:00 |  | 2006-05-10 08:00 | 2006-05-10 10:00 | 0.25d? | 0d |  |  | 6h |
| 4 | 1.1.1.1 | DBA's to configure perf databases like prod | 6h? | 2006-05-10 08:00 | 2006-05-10 15:00 |  | 2006-05-10 08:00 | 2006-05-10 10:00 | 2h? | 0d | start no earlier than 2006-05-10 08:00 | CBOE | 6h |
| 5 | 1.1.2 | **User Login test** | 0.11d | 2006-05-10 15:00 | 2006-05-10 15:55 | 3 |  |  |  | 0d |  | Cognizant | 1.83h |
| 6 | 1.1.2.1 | Initial setup like bouncing Global Server and SACAS. | 40min | 2006-05-10 15:00 | 2006-05-10 15:40 | 4 |  |  |  | 0d |  | Cognizant | 0.67h |
| 7 | 1.1.2.2 | Login Test for 1 and 2 Users | 15min | 2006-05-10 15:40 | 2006-05-10 15:55 | 6 |  |  |  | 0d |  | Cognizant | 0.25h |
| 8 | 1.1.3 | **ITG Checkout Script** | 0.17d | 2006-05-10 15:55 | 2006-05-11 08:15 | 5 | 2006-03-14 08:00 | 2006-05-10 09:20 | 41.17d | 0d |  | Cognizant | 2.67h |
| 9 | 1.2.1 | ITG Checkout script (W_MAIN, ONE_MAIN, CFE_MAIN) | 60min | 2006-05-10 15:55 | 2006-05-10 16:55 | 7 | 2006-05-10 08:00 | 2006-05-10 09:00 | 60min | 0d | start no earlier than 2006-05-10 08:00 | Cognizant | 1h |
| 10 | 1.2.5 | Backup and Reporting | 20min | 2006-05-10 16:55 | 2006-05-11 08:15 | 9 | 2006-05-10 09:00 | 2006-05-10 09:20 | 20min | 0d |  | Cognizant | 0.33h |
| 11 | 1.2 | **Install GC A Side** | 1.59d | 2006-05-11 08:15 | 2006-05-12 14:00 | 2 |  |  |  | 0d |  | Cognizant | 38.25h |
| 12 | 1.2.1 | **Install GC "A" side with new release** | 0.73d | 2006-05-11 08:15 | 2006-05-11 15:05 | 8 |  |  |  | 0d |  | Cognizant | 11.67h |
| 13 | 1.2.1.1 | QT4 GC Installation steps | 1h | 2006-05-11 08:15 | 2006-05-11 09:15 | 10 |  |  |  | 0d | start no earlier than 2006-05-11 08:00 | Cognizant | 1h |
| 14 | 1.2.1.2 | Server Side Full Cleanup | 3h | 2006-05-11 09:15 | 2006-05-11 13:15 | 13 |  |  |  | 0d |  | Cognizant | 3h |
| 15 | 1.2.1.3 | Time server full startup after cleanup (See Server Startup Timing Page) | 1h | 2006-05-11 13:15 | 2006-05-11 14:15 | 14 |  |  |  | 0d |  | Cognizant | 1h |
| 16 | 1.2.1.4 | Backup for server Timings | 20min | 2006-05-11 14:15 | 2006-05-11 14:35 | 15 |  |  |  | 0d |  | Cognizant | 0.33h |
| 17 | 1.2.1.5 | Check: Sign off on Server Timings | 30min | 2006-05-11 14:35 | 2006-05-11 15:05 | 16 |  |  |  | 0d |  | CBOE | 0.5h |
| 18 | 1.2.2 | **ITG Checkout Script** | 0.23d | 2006-05-11 15:05 | 2006-05-11 16:55 | 12 |  |  |  | 0d |  | Cognizant | 3.67h |
| 19 | 1.2.1 | ITG Checkout script (W_MAIN, ONE_MAIN, CFE_MAIN) | 60min | 2006-05-11 15:05 | 2006-05-11 16:05 | 17 |  |  |  | 0d |  | Cognizant | 1h |
| 20 | 1.2.5 | Backup and Reporting | 20min | 2006-05-11 16:05 | 2006-05-11 16:25 | 19 |  |  |  | 0d |  | Cognizant | 0.33h |
| 21 | 1.2.2.3 | Check: Sign off on Checkout Scripts | 30min | 2006-05-11 16:25 | 2006-05-11 16:55 | 20 |  |  |  | 0d |  | CBOE | 0.5h |
| 22 | 1.2.3 | **User Login test** | 0.25d | 2006-05-11 16:55 | 2006-05-12 09:55 | 18 |  |  |  | 0d |  | Cognizant | 4h |
| 23 | 1.2.3.1 | Initial setup like bouncing Global Server and SACAS. | 40min | 2006-05-11 16:55 | 2006-05-12 08:35 | 21 |  |  |  | 0d |  | Cognizant | 0.67h |
| 24 | 1.2.3.2 | Login Test for 1 and 2 Users | 15min | 2006-05-12 08:35 | 2006-05-12 08:50 | 23 |  |  |  | 0d |  | Cognizant | 0.25h |
| 25 | 1.2.3.3 | Product State Update to CLOSE on VLO (visually timing Single class CLOSED with SAGUI) | 15min | 2006-05-12 08:50 | 2006-05-12 09:05 | 24 |  |  |  | 0d |  | Cognizant | 0.25h |
| 26 | 1.2.3.4 | Backup for Login User Test and Product state Update through SAGUI | 20min | 2006-05-12 09:05 | 2006-05-12 09:25 | 25 |  |  |  | 0d |  | Cognizant | 0.33h |
| 27 | 1.2.3.5 | Check: Sign Off on Logs and Results | 30min | 2006-05-12 09:25 | 2006-05-12 09:55 | 26 |  |  |  | 0d |  | CBOE | 0.5h |

| ID | WBS | Task | Duration | Start | Finish | Predecessors | Baseline start | Baseline finish | Baseline duration | Total slack | Resources | Work |
| --- | --- | --- | --- | --- | --- | --- | --- | --- | --- | --- | --- | --- |
| 28 | 1.2.4 | **GC failover to "B" side** | 0.39d | 2006-05-12 09:55 | 2006-05-12 14:00 | 22 |  |  |  | 0d | Cognizant | 6.17h |
| 29 | 1.2.4.1 | Initial setup for test Drivers (starting processes on GC Slave.) | 30min | 2006-05-12 09:55 | 2006-05-12 10:25 | 27 |  |  |  | 0d | Cognizant | 0.5h |
| 30 | 1.2.4.2 | Quote/Order BC20 Hybrid and ONE_MAIN traffic going before/during/after failover. Should not hang to verify no Global Dependency introduced. Test Execution | 45min | 2006-05-12 10:25 | 2006-05-12 11:10 | 29 |  |  |  | 0d | Cognizant | 0.75h |
| 31 | 1.2.4.3 | ITG Checkout script (for W_MAIN and ONE_MAIN Session) | 30min | 2006-05-12 11:10 | 2006-05-12 11:40 | 30 |  |  |  | 0d | Cognizant | 0.5h |
| 32 | 1.2.4.4 | Backup for Failover and ITG Checkout | 20min | 2006-05-12 11:40 | 2006-05-12 12:00 | 31 |  |  |  | 0d | Cognizant | 0.33h |
| 33 | 1.2.4.5 | Generate Report for Failover Timings for all GC Processes (taking time from log files) | 30min | 2006-05-12 13:00 | 2006-05-12 13:30 | 32 |  |  |  | 0d | Cognizant | 0.5h |
| 34 | 1.2.4.6 | Check: Sign Off on Checkout Scripts, Logs and Results | 30min | 2006-05-12 13:30 | 2006-05-12 14:00 | 33 |  |  |  | 0d | CBOE | 0.5h |
| 35 | 1.3 | **Install GC B Side** | 2.93d? | 2006-05-12 14:00 | 2006-05-17 13:25 | 11 | 2006-03-27 14:00 | 2006-03-31 10:15 | 3.66d? | 0d | Cognizant | 67.25h |
| 36 | 1.3.1 | **Install GC "B" side** | 0.6d | 2006-05-12 14:00 | 2006-05-15 09:50 | 28 | 2006-03-27 14:00 | 2006-03-27 17:00 | 0.38d | 0d | Cognizant | 9.67h |
| 37 | 1.3.1.1 | Cleanup, createCurrentBusinessDay,starting all GC Processes on B side | 3h | 2006-05-12 14:00 | 2006-05-12 17:00 | 34 | 2006-03-27 14:00 | 2006-03-27 16:00 | 2h | 0d | Cognizant | 3h |
| 38 | 1.3.1.2 | ITG Checkout script (for W_MAIN, ONE_MAIN and CFE_MAIN Session) | 60min | 2006-05-15 08:00 | 2006-05-15 09:00 | 37 | 2006-03-27 16:00 | 2006-03-27 16:40 | 40min | 0d | Cognizant | 1h |
| 39 | 1.3.1.3 | Backup for GC Upgrade and ITG Checkout | 20min | 2006-05-15 09:00 | 2006-05-15 09:20 | 38 | 2006-03-27 16:40 | 2006-03-27 17:00 | 20min | 0d | Cognizant | 0.33h |
| 40 | 1.3.1.4 | Check: Sign Off on Checkout Scripts, Logs and Results | 30min | 2006-05-15 09:20 | 2006-05-15 09:50 | 39 |  |  |  | 0d | CBOE | 0.5h |
| 41 | 1.3.2 | **Install SACAS and SAGUI** | 0.6d? | 2006-05-15 09:50 | 2006-05-15 15:40 | 36 | 2006-03-28 09:40 | 2006-03-29 11:20 | 1.21d? | 0d |  | 6.67h |
| 42 | 1.3.2.1 | SAGUI tests with old and new SAGUI-s | 3h? | 2006-05-15 09:50 | 2006-05-15 13:50 | 40 | 2006-03-28 09:40 | 2006-03-29 09:40 | 8h? | 0d | Cognizant | 3h |
| 43 | 1.3.2.2 | **ITG Checkout Script** | 0.23d | 2006-05-15 13:50 | 2006-05-15 15:40 | 42 |  |  |  | 0d | Cognizant | 3.67h |
| 44 | 1.2.1 | ITG Checkout script (W_MAIN, ONE_MAIN, CFE_MAIN) | 60min | 2006-05-15 13:50 | 2006-05-15 14:50 | 42 |  |  |  | 0d | Cognizant | 1h |
| 45 | 1.2.5 | Backup and Reporting | 20min | 2006-05-15 14:50 | 2006-05-15 15:10 | 44 |  |  |  | 0d | Cognizant | 0.33h |
| 46 | 1.3.2.2.3 | Check: Sign off on Checkout Scripts | 30min | 2006-05-15 15:10 | 2006-05-15 15:40 | 45 |  |  |  | 0d | CBOE | 0.5h |
| 47 | 1.3.3 | **GC fail over to "A" side** | 0.73d? | 2006-05-15 15:40 | 2006-05-16 13:30 | 41 | 2006-03-29 11:20 | 2006-03-30 11:20 | 1d? | 0d | Cognizant | 11.67h |
| 48 | 1.3.3.1 | Initial setup for test Drivers (starting processes on GC Slave.) | 30min | 2006-05-15 15:40 | 2006-05-15 16:10 | 46 | 2006-03-29 11:20 | 2006-03-29 11:50 | 30min | 0d | Cognizant | 0.5h |
| 49 | 1.3.3.2 | Quote/Order BC20 Hybrid and ONE_MAIN traffic going before/during/after failover. Should not hang to verify no Global Dependency introduced. Test Execution | 30min | 2006-05-15 16:10 | 2006-05-15 16:40 | 48 | 2006-03-29 11:50 | 2006-03-29 13:20 | 30min | 0d | Cognizant | 0.5h |
| 50 | 1.3.3.3 | ITG Checkout script (for W_MAIN and ONE_MAIN Session) | 40min | 2006-05-15 16:40 | 2006-05-16 08:20 | 49 | 2006-03-29 13:20 | 2006-03-29 14:00 | 40min | 0d | Cognizant | 0.67h |
| 51 | 1.3.3.4 | Backup for Failover and ITG Checkout | 20min | 2006-05-16 08:20 | 2006-05-16 08:40 | 50 | 2006-03-29 14:00 | 2006-03-29 14:20 | 20min | 0d | Cognizant | 0.33h |
| 52 | 1.3.3.5 | Generate Report for Failover Timings for all GC Processes (taking time from log files) | 20min | 2006-05-16 08:40 | 2006-05-16 09:00 | 51 | 2006-03-29 14:20 | 2006-03-29 14:40 | 20min | 0d | Cognizant | 0.33h |
| 53 | 1.3.3.6 | SAGUI tests with old and new SAGUI-s | 3h? | 2006-05-16 09:00 | 2006-05-16 12:00 | 52 | 2006-03-29 11:20 | 2006-03-30 11:20 | 8h? | 0d | Cognizant | 3h |
| 54 | 1.3.3.7 | Check: Sign off on Checkout Scripts | 30min | 2006-05-16 13:00 | 2006-05-16 13:30 | 53 |  |  |  | 0d | CBOE | 0.5h |

| ID | WBS | Task | Duration | Start | Finish | Predecessors | Baseline start | Baseline finish | Baseline duration | Total slack | Resources | Work |
| --- | --- | --- | --- | --- | --- | --- | --- | --- | --- | --- | --- | --- |
| 55 | 1.3.4 | **Login User and 60 User Login** | 0.18d | 2006-05-16 13:30 | 2006-05-16 14:55 | 47 | 2006-03-30 11:20 | 2006-03-30 13:45 | 0.18d | 0d | Cognizant | 2.83h |
| 56 | 1.3.4.1 | bouncing Global Server process, SACAS and all other CASes for 60 User login Test and SAGUI login test | 25min | 2006-05-16 13:30 | 2006-05-16 13:55 | 54 | 2006-03-30 11:20 | 2006-03-30 11:45 | 25min | 0d | Cognizant | 0.42h |
| 57 | 1.3.4.2 | User login test and 60 user login test, test execution | 30min | 2006-05-16 13:55 | 2006-05-16 14:25 | 56 | 2006-03-30 11:45 | 2006-03-30 13:15 | 30min | 0d | Cognizant | 0.5h |
| 58 | 1.3.4.3 | Backup and Reporting | 30min | 2006-05-16 14:25 | 2006-05-16 14:55 | 57 | 2006-03-30 13:15 | 2006-03-30 13:45 | 30min | 0d | Cognizant | 0.5h |
| 59 | 1.3.5 | **Hybrid Performance test Scenario_3 Multi-class Step-up with BOTR/EI/OT/LS/MDHQ/QQ session: W_MAIN** | 0.46d | 2006-05-16 14:55 | 2006-05-17 09:35 | 55 | 2006-03-30 13:45 | 2006-03-30 16:55 | 0.4d | 0d | Cognizant | 7.33h |
| 60 | 1.3.5.1 | BC Cleanup, Initial Driver Setup, | 20min | 2006-05-16 14:55 | 2006-05-16 15:15 | 58 | 2006-03-30 13:45 | 2006-03-30 14:05 | 20min | 0d | Cognizant | 0.33h |
| 61 | 1.3.5.2 | Test Execution for No BOTR | 1h | 2006-05-16 15:15 | 2006-05-16 16:15 | 60 | 2006-03-30 14:05 | 2006-03-30 15:05 | 1h | 0d | Cognizant | 1h |
| 62 | 1.3.5.3 | BOTR from 1000 to 16000 | 50min | 2006-05-16 16:15 | 2006-05-17 08:05 | 61 | 2006-03-30 15:05 | 2006-03-30 15:55 | 50min | 0d | Cognizant | 0.83h |
| 63 | 1.3.5.4 | endOfPerformance and Backup | 30min | 2006-05-17 08:05 | 2006-05-17 08:35 | 62 | 2006-03-30 15:55 | 2006-03-30 16:25 | 30min | 0d | Cognizant | 0.5h |
| 64 | 1.3.5.5 | Reporting through KR site | 30min | 2006-05-17 08:35 | 2006-05-17 09:05 | 63 | 2006-03-30 16:25 | 2006-03-30 16:55 | 30min | 0d | Cognizant | 0.5h |
| 65 | 1.3.5.6 | Check: Sign off on Checkout Scripts | 30min | 2006-05-17 09:05 | 2006-05-17 09:35 | 64 |  |  |  | 0d | CBOE | 0.5h |
| 66 | 1.3.6 | **Hybrid Performance test Scenario_3 Multi-class Step-up with NO BOTR session: W_MAIN** | 0.35d | 2006-05-17 09:35 | 2006-05-17 13:25 | 59 | 2006-03-30 16:55 | 2006-03-31 10:15 | 0.29d | 0d | Cognizant | 5.67h |
| 67 | 1.3.6.1 | BC Cleanup, Initial Driver Setup, | 20min | 2006-05-17 09:35 | 2006-05-17 09:55 | 65 | 2006-03-30 16:55 | 2006-03-31 08:15 | 20min | 0d | Cognizant | 0.33h |
| 68 | 1.9.2 | Test Execution for No BOTR | 1h | 2006-05-17 09:55 | 2006-05-17 10:55 | 67 | 2006-03-31 08:15 | 2006-03-31 09:15 | 1h | 0d | Cognizant | 1h |
| 69 | 1.9.3 | endOfPerformance and Backup | 30min | 2006-05-17 10:55 | 2006-05-17 11:25 | 68 | 2006-03-31 09:15 | 2006-03-31 09:45 | 30min | 0d | Cognizant | 0.5h |
| 70 | 1.9.4 | Reporting through KR site | 30min | 2006-05-17 11:25 | 2006-05-17 11:55 | 69 | 2006-03-31 09:45 | 2006-03-31 10:15 | 30min | 0d | Cognizant | 0.5h |
| 71 | 1.3.6.5 | Check: Sign off on Checkout Scripts | 30min | 2006-05-17 11:55 | 2006-05-17 13:25 | 70 |  |  |  | 0d | CBOE | 0.5h |
| 72 | 1.4 | **Install Hybrid BC A Side** | 3.89d? | 2006-05-17 13:25 | 2006-05-23 11:30 | 35 | 2006-03-31 10:15 | 2006-04-04 13:20 | 2.26d? | 0d | Cognizant | 86.25h |
| 73 | 1.10 | **Install Hybrid BC (A)** | 0.27d | 2006-05-17 13:25 | 2006-05-17 15:35 | 66 | 2006-03-31 10:15 | 2006-03-31 13:15 | 0.25d | 0d | Cognizant | 3.33h |
| 74 | 1.10.1 | Configuration and starting processes | 1h | 2006-05-17 13:25 | 2006-05-17 14:25 | 71 | 2006-03-31 10:15 | 2006-03-31 11:15 | 1h | 0d |  |  |
| 75 | 1.10.2 | ITG Checkout script (W_MAIN Session) | 20min | 2006-05-17 14:25 | 2006-05-17 14:45 | 74 | 2006-03-31 11:15 | 2006-03-31 11:55 | 40min | 0d | Cognizant | 0.33h |
| 76 | 1.10.3 | Backup and Reporting | 20min | 2006-05-17 14:45 | 2006-05-17 15:05 | 75 | 2006-03-31 11:55 | 2006-03-31 13:15 | 20min | 0d | Cognizant | 0.33h |
| 77 | 1.4.1.4 | Check: Sign off on Checkout Scripts | 30min | 2006-05-17 15:05 | 2006-05-17 15:35 | 76 |  |  |  | 0d | CBOE | 0.5h |
| 78 | 1.11 | **4 Hour Endurance Test** | 0.81d | 2006-05-17 15:35 | 2006-05-18 14:05 | 73 | 2006-03-31 13:15 | 2006-04-03 10:15 | 0.75d | 0d | Cognizant | 13h |
| 79 | 1.11.1 | Cleanup for W_MAIN and ONE_MAIN BC and Driver setup and CAS Bounce | 1h | 2006-05-17 15:35 | 2006-05-17 16:35 | 77 | 2006-03-31 13:15 | 2006-03-31 14:15 | 1h | 0d | Cognizant | 1h |
| 80 | 1.11.2 | 4 hour Sanity Check | 4h | 2006-05-17 16:35 | 2006-05-18 11:35 | 79 | 2006-03-31 14:15 | 2006-04-03 09:15 | 4h | 0d | Cognizant | 4h |
| 81 | 1.11.3 | endOfPerformance and Backup and Reporting | 1h | 2006-05-18 11:35 | 2006-05-18 13:35 | 80 | 2006-04-03 09:15 | 2006-04-03 10:15 | 1h | 0d | Cognizant | 1h |
| 82 | 1.4.2.4 | Check: Sign off on Checkout Scripts | 30min | 2006-05-18 13:35 | 2006-05-18 14:05 | 81 |  |  |  | 0d | CBOE | 0.5h |
| 83 | 1.4.3 | FIX Strategy Order Test | 2h? | 2006-05-18 14:05 | 2006-05-18 16:05 | 78 |  |  |  | 0d | Cognizant | 2h |

| ID | WBS | Task | Duration | Start | Finish | Predecessors | Baseline start | Baseline finish | Baseline duration | Total slack | Resources | Work |
| --- | --- | --- | --- | --- | --- | --- | --- | --- | --- | --- | --- | --- |
| 84 | 1.12 | **Multi-class Quote step-up test with NO BOTR** | 0.35d | 2006-05-18 16:05 | 2006-05-19 09:55 | 83 | 2006-04-03 10:15 | 2006-04-03 14:25 | 0.4d | 0d | Cognizant | 5.67h |
| 85 | 1.12.1 | BC Cleanup, Initial Driver Setup, | 20min | 2006-05-18 16:05 | 2006-05-18 16:25 | 82 | 2006-04-03 10:15 | 2006-04-03 10:35 | 20min | 0d | Cognizant | 0.33h |
| 86 | 1.12.2 | Test Execution for No BOTR | 1h | 2006-05-18 16:25 | 2006-05-19 08:25 | 85 | 2006-04-03 10:35 | 2006-04-03 11:35 | 1h | 0d | Cognizant | 1h |
| 87 | 1.12.4 | endOfPerformance and Backup | 30min | 2006-05-19 08:25 | 2006-05-19 08:55 | 86 | 2006-04-03 13:25 | 2006-04-03 13:55 | 30min | 0d | Cognizant | 0.5h |
| 88 | 1.12.5 | Reporting through KR site | 30min | 2006-05-19 08:55 | 2006-05-19 09:25 | 87 | 2006-04-03 13:55 | 2006-04-03 14:25 | 30min | 0d | Cognizant | 0.5h |
| 89 | 1.4.4.5 | Check: Sign off on Checkout Scripts | 30min | 2006-05-19 09:25 | 2006-05-19 09:55 | 88 |  |  |  | 0d | CBOE | 0.5h |
| 90 | 1.12 | **Multi-class Quote step-up test with BOTR** | 0.46d | 2006-05-19 09:55 | 2006-05-19 14:35 | 84 | 2006-04-03 10:15 | 2006-04-03 14:25 | 0.4d | 0d | Cognizant | 7.33h |
| 91 | 1.12.1 | BC Cleanup, Initial Driver Setup, | 20min | 2006-05-19 09:55 | 2006-05-19 10:15 |  | 2006-04-03 10:15 | 2006-04-03 10:35 | 20min | 0d | Cognizant | 0.33h |
| 92 | 1.12.2 | Test Execution for No BOTR | 1h | 2006-05-19 10:15 | 2006-05-19 11:15 | 91 | 2006-04-03 10:35 | 2006-04-03 11:35 | 1h | 0d | Cognizant | 1h |
| 93 | 1.12.3 | BOTR from 1000 to 16000 | 50min | 2006-05-19 11:15 | 2006-05-19 13:05 | 92 | 2006-04-03 11:35 | 2006-04-03 13:25 | 50min | 0d | Cognizant | 0.83h |
| 94 | 1.12.4 | endOfPerformance and Backup | 30min | 2006-05-19 13:05 | 2006-05-19 13:35 | 93 | 2006-04-03 13:25 | 2006-04-03 13:55 | 30min | 0d | Cognizant | 0.5h |
| 95 | 1.12.5 | Reporting through KR site | 30min | 2006-05-19 13:35 | 2006-05-19 14:05 | 94 | 2006-04-03 13:55 | 2006-04-03 14:25 | 30min | 0d | Cognizant | 0.5h |
| 96 | 1.4.5.6 | Check: Sign off on Checkout Scripts | 30min | 2006-05-19 14:05 | 2006-05-19 14:35 | 95 |  |  |  | 0d | CBOE | 0.5h |
| 97 | 1.13 | **Single-class Quote step-up test with BOTR** | 0.46d | 2006-05-19 14:35 | 2006-05-22 09:15 | 90 | 2006-04-03 14:25 | 2006-04-04 08:35 | 0.4d | 0d | Cognizant | 7.33h |
| 98 | 1.13.1 | BC Cleanup, Initial Driver Setup, | 20min | 2006-05-19 14:35 | 2006-05-19 14:55 | 89 | 2006-04-03 14:25 | 2006-04-03 14:45 | 20min | 0d | Cognizant | 0.33h |
| 99 | 1.13.2 | Test Execution for No BOTR | 1h | 2006-05-19 14:55 | 2006-05-19 15:55 | 98 | 2006-04-03 14:45 | 2006-04-03 15:45 | 1h | 0d | Cognizant | 1h |
| 100 | 1.13.3 | BOTR from 1000 to 16000 | 50min | 2006-05-19 15:55 | 2006-05-19 16:45 | 99 | 2006-04-03 15:45 | 2006-04-03 16:35 | 50min | 0d | Cognizant | 0.83h |
| 101 | 1.13.4 | endOfPerformance and Backup | 30min | 2006-05-19 16:45 | 2006-05-22 08:15 | 100 | 2006-04-03 16:35 | 2006-04-04 08:05 | 30min | 0d | Cognizant | 0.5h |
| 102 | 1.13.5 | Reporting through KR site | 30min | 2006-05-22 08:15 | 2006-05-22 08:45 | 101 | 2006-04-04 08:05 | 2006-04-04 08:35 | 30min | 0d | Cognizant | 0.5h |
| 103 | 1.4.6.6 | Check: Sign off on Checkout Scripts | 30min | 2006-05-22 08:45 | 2006-05-22 09:15 | 102 |  |  |  | 0d | CBOE | 0.5h |
| 104 | 1.14 | **Multi-class Order step-up test** | 0.25d | 2006-05-22 09:15 | 2006-05-22 11:15 | 97 | 2006-04-04 08:35 | 2006-04-04 10:05 | 0.19d | 0d | Cognizant | 4h |
| 105 | 1.14.1 | BC Cleanup, Initial Driver Setup, | 20min | 2006-05-22 09:15 | 2006-05-22 09:35 | 103 | 2006-04-04 08:35 | 2006-04-04 08:55 | 20min | 0d | Cognizant | 0.33h |
| 106 | 1.14.2 | Test Execution for No BOTR | 40min | 2006-05-22 09:35 | 2006-05-22 10:15 | 105 | 2006-04-04 08:55 | 2006-04-04 09:35 | 40min | 0d | Cognizant | 0.67h |
| 107 | 1.14.3 | endOfPerformance and Backup | 20min | 2006-05-22 10:15 | 2006-05-22 10:35 | 106 | 2006-04-04 09:35 | 2006-04-04 09:55 | 20min | 0d | Cognizant | 0.33h |
| 108 | 1.14.4 | Reporting through KR site | 10min | 2006-05-22 10:35 | 2006-05-22 10:45 | 107 | 2006-04-04 09:55 | 2006-04-04 10:05 | 10min | 0d | Cognizant | 0.17h |
| 109 | 1.4.7.5 | Check: Sign off on Checkout Scripts | 30min | 2006-05-22 10:45 | 2006-05-22 11:15 | 108 |  |  |  | 0d | CBOE | 0.5h |

| ID | WBS | Task | Duration | Start | Finish | Predecessors | Baseline start | Baseline finish | Baseline duration | Total slack | Resources | Work |
| --- | --- | --- | --- | --- | --- | --- | --- | --- | --- | --- | --- | --- |
| 110 | 1.4.8 | **Hybrid test scenario 5 (Product State Change Test)** | 0.23d | 2006-05-22 11:15 | 2006-05-22 14:05 | 104 | 2006-03-21 14:50 | 2006-03-21 16:20 | 0.19d | 0d | Cognizant | 3.67h |
| 111 | 1.4.8.1 | BC Cleanup, Initial Driver Setup, | 20min | 2006-05-22 11:15 | 2006-05-22 11:35 | 109 | 2006-03-21 14:50 | 2006-03-21 15:10 | 20min | 0d | Cognizant | 0.33h |
| 112 | 1.4.8.2 | Test Execution - Global Server Bounce | 40min | 2006-05-22 11:35 | 2006-05-22 13:15 | 111 | 2006-03-21 15:10 | 2006-03-21 15:50 | 40min | 0d | Cognizant | 0.67h |
| 113 | 1.4.8.3 | Monitor and Backup logs | 20min | 2006-05-22 13:15 | 2006-05-22 13:35 | 112 | 2006-03-21 15:50 | 2006-03-21 16:10 | 20min | 0d | Cognizant | 0.33h |
| 114 | 1.4.8.4 | Reporting through KR site | 10min | 2006-05-22 13:35 | 2006-05-22 13:45 | 113 | 2006-03-21 16:10 | 2006-03-21 16:20 | 10min | 0d | Cognizant | 0.17h |
| 115 | 1.4.8.5 | Check: Sign Off on Logs and Results | 20min | 2006-05-22 13:45 | 2006-05-22 14:05 | 114 | 2006-03-21 16:20 | 2006-03-21 16:20 | 0h | 0d | CBOE | 0.33h |
| 116 | 1.15 | **Hybrid BC failover (new release to old release)** | 0.3d | 2006-05-22 14:05 | 2006-05-22 16:30 | 110 | 2006-04-04 10:05 | 2006-04-04 13:20 | 0.28d | 0d | Cognizant | 4.83h |
| 117 | 1.15.1 | Initial setup for test Drivers (starting processes on GC Slave.) | 25min | 2006-05-22 14:05 | 2006-05-22 14:30 | 109 | 2006-04-04 10:05 | 2006-04-04 10:30 | 25min | 0d | Cognizant | 0.42h |
| 118 | 1.15.2 | Quote/Order BC20 Hybrid traffic going before/during/after failover. Test Execution | 30min | 2006-05-22 14:30 | 2006-05-22 15:00 | 117 | 2006-04-04 10:30 | 2006-04-04 11:00 | 30min | 0d | Cognizant | 0.5h |
| 119 | 1.15.3 | ITG Checkout script (for W_MAIN Session) | 20min | 2006-05-22 15:00 | 2006-05-22 15:20 | 118 | 2006-04-04 11:00 | 2006-04-04 11:40 | 40min | 0d | Cognizant | 0.33h |
| 120 | 1.15.4 | Backup for Failover and ITG Checkout | 20min | 2006-05-22 15:20 | 2006-05-22 15:40 | 119 | 2006-04-04 11:40 | 2006-04-04 12:00 | 20min | 0d | Cognizant | 0.33h |
| 121 | 1.15.5 | Generate Report for Failover Timings for all BC Processes (taking time from log files) | 20min | 2006-05-22 15:40 | 2006-05-22 16:00 | 120 | 2006-04-04 13:00 | 2006-04-04 13:20 | 20min | 0d | Cognizant | 0.33h |
| 122 | 1.4.9.6 | Check: Sign off on Checkout Scripts | 30min | 2006-05-22 16:00 | 2006-05-22 16:30 | 121 |  |  |  | 0d | CBOE | 0.5h |
| 123 | 1.4.10 | Request DBA's to make changes in prod BC's for the new column in MDH and QH tables. | 4h? | 2006-05-22 16:30 | 2006-05-23 11:30 | 116 | 2006-03-31 10:15 | 2006-04-03 10:15 | 8h? | 0d | CBOE | 4h |
| 124 | 1.5 | **Install Hybrid BC B Side** | 1.78d | 2006-05-23 11:30 | 2006-05-25 09:45 | 123 | 2006-04-03 10:15 | 2006-04-04 15:20 | 1.51d | 0d | Cognizant | 42.75h |
| 125 | 1.16 | **Install Hybrid BC "B" side** | 0.27d | 2006-05-23 11:30 | 2006-05-23 14:40 | 123 | 2006-04-03 10:15 | 2006-04-03 13:15 | 0.25d | 0d | Cognizant | 4.33h |
| 126 | 1.16.1 | Configuration and starting processes | 1h | 2006-05-23 11:30 | 2006-05-23 13:30 | 123 | 2006-04-03 10:15 | 2006-04-03 11:15 | 1h | 0d | Cognizant | 1h |
| 127 | 1.16.2 | ITG Checkout script (W_MAIN Session) | 20min | 2006-05-23 13:30 | 2006-05-23 13:50 | 126 | 2006-04-03 11:15 | 2006-04-03 11:55 | 40min | 0d | Cognizant | 0.33h |
| 128 | 1.16.3 | Backup and Reporting | 20min | 2006-05-23 13:50 | 2006-05-23 14:10 | 127 | 2006-04-03 11:55 | 2006-04-03 13:15 | 20min | 0d | Cognizant | 0.33h |
| 129 | 1.5.1.4 | Check: Sign off on Checkout Scripts | 30min | 2006-05-23 14:10 | 2006-05-23 14:40 | 128 |  |  |  | 0d | CBOE | 0.5h |
| 130 | 1.17 | **Hybrid BC failover (new release to new release)** | 0.34d | 2006-05-23 14:40 | 2006-05-24 08:25 | 125 | 2006-04-03 13:15 | 2006-04-03 15:30 | 0.28d | 0d | Cognizant | 5.5h |
| 131 | 1.17.1 | Initial setup for test Drivers (starting processes on GC Slave.) | 25min | 2006-05-23 14:40 | 2006-05-23 15:05 | 129 | 2006-04-03 13:15 | 2006-04-03 13:40 | 25min | 0d | Cognizant | 0.42h |
| 132 | 1.17.2 | Quote/Order BC20 Hybrid traffic going before/during/after failover. Test Execution | 30min | 2006-05-23 15:05 | 2006-05-23 15:35 | 131 | 2006-04-03 13:40 | 2006-04-03 14:10 | 30min | 0d | Cognizant | 0.5h |
| 133 | 1.17.3 | ITG Checkout script (for W_MAIN and ONE_MAIN Session) | 40min | 2006-05-23 15:35 | 2006-05-23 16:15 | 132 | 2006-04-03 14:10 | 2006-04-03 14:50 | 40min | 0d | Cognizant | 0.67h |
| 134 | 1.17.4 | Backup for Failover and ITG Checkout | 20min | 2006-05-23 16:15 | 2006-05-23 16:35 | 133 | 2006-04-03 14:50 | 2006-04-03 15:10 | 20min | 0d | Cognizant | 0.33h |
| 135 | 1.17.5 | Generate Report for Failover Timings for all GC Processes (taking time from log files) | 20min | 2006-05-23 16:35 | 2006-05-23 16:55 | 134 | 2006-04-03 15:10 | 2006-04-03 15:30 | 20min | 0d | Cognizant | 0.33h |
| 136 | 1.5.2.6 | Check: Sign off on Checkout Scripts | 30min | 2006-05-23 16:55 | 2006-05-24 08:25 | 135 |  |  |  | 0d | CBOE | 0.5h |

| ID | WBS | Task | Duration | Start | Finish | Predecessors | Baseline start | Baseline finish | Baseline duration | Total slack | Resources | Work |
| --- | --- | --- | --- | --- | --- | --- | --- | --- | --- | --- | --- | --- |
| 137 | 1.12 | **Multi-class Quote step-up test with BOTR** | 0.46d | 2006-05-24 08:25 | 2006-05-24 13:05 | 130 | 2006-04-03 10:15 | 2006-04-03 14:25 | 0.4d | 0d | Cognizant | 7.33h |
| 138 | 1.12.1 | BC Cleanup, Initial Driver Setup, | 20min | 2006-05-24 08:25 | 2006-05-24 08:45 | 136 | 2006-04-03 10:15 | 2006-04-03 10:35 | 20min | 0d | Cognizant | 0.33h |
| 139 | 1.12.2 | Test Execution for No BOTR | 1h | 2006-05-24 08:45 | 2006-05-24 09:45 | 138 | 2006-04-03 10:35 | 2006-04-03 11:35 | 1h | 0d | Cognizant | 1h |
| 140 | 1.12.3 | BOTR from 1000 to 16000 | 50min | 2006-05-24 09:45 | 2006-05-24 10:35 | 139 | 2006-04-03 11:35 | 2006-04-03 13:25 | 50min | 0d | Cognizant | 0.83h |
| 141 | 1.12.4 | endOfPerformance and Backup | 30min | 2006-05-24 10:35 | 2006-05-24 11:05 | 140 | 2006-04-03 13:25 | 2006-04-03 13:55 | 30min | 0d | Cognizant | 0.5h |
| 142 | 1.12.5 | Reporting through KR site | 30min | 2006-05-24 11:05 | 2006-05-24 11:35 | 141 | 2006-04-03 13:55 | 2006-04-03 14:25 | 30min | 0d | Cognizant | 0.5h |
| 143 | 1.5.3.6 | Check: Sign off on Checkout Scripts | 30min | 2006-05-24 11:35 | 2006-05-24 13:05 | 142 |  |  |  | 0d | CBOE | 0.5h |
| 144 | 1.13 | **Single-class Quote step-up test with BOTR** | 0.46d | 2006-05-24 13:05 | 2006-05-24 16:45 | 137 | 2006-04-03 14:25 | 2006-04-04 08:35 | 0.4d | 0d | Cognizant | 7.33h |
| 145 | 1.13.1 | BC Cleanup, Initial Driver Setup, | 20min | 2006-05-24 13:05 | 2006-05-24 13:25 | 143 | 2006-04-03 14:25 | 2006-04-03 14:45 | 20min | 0d | Cognizant | 0.33h |
| 146 | 1.13.2 | Test Execution for No BOTR | 1h | 2006-05-24 13:25 | 2006-05-24 14:25 | 145 | 2006-04-03 14:45 | 2006-04-03 15:45 | 1h | 0d | Cognizant | 1h |
| 147 | 1.13.3 | BOTR from 1000 to 16000 | 50min | 2006-05-24 14:25 | 2006-05-24 15:15 | 146 | 2006-04-03 15:45 | 2006-04-03 16:35 | 50min | 0d | Cognizant | 0.83h |
| 148 | 1.13.4 | endOfPerformance and Backup | 30min | 2006-05-24 15:15 | 2006-05-24 15:45 | 147 | 2006-04-03 16:35 | 2006-04-04 08:05 | 30min | 0d | Cognizant | 0.5h |
| 149 | 1.13.5 | Reporting through KR site | 30min | 2006-05-24 15:45 | 2006-05-24 16:15 | 148 | 2006-04-04 08:05 | 2006-04-04 08:35 | 30min | 0d | Cognizant | 0.5h |
| 150 | 1.5.4.6 | Check: Sign off on Checkout Scripts | 30min | 2006-05-24 16:15 | 2006-05-24 16:45 | 149 |  |  |  | 0d | CBOE | 0.5h |
| 151 | 1.14 | **Multi-class Order step-up test** | 0.25d | 2006-05-24 16:45 | 2006-05-25 09:45 | 144 | 2006-04-04 08:35 | 2006-04-04 10:05 | 0.19d | 0d | Cognizant | 4h |
| 152 | 1.14.1 | BC Cleanup, Initial Driver Setup, | 20min | 2006-05-24 16:45 | 2006-05-25 08:05 | 150 | 2006-04-04 08:35 | 2006-04-04 08:55 | 20min | 0d | Cognizant | 0.33h |
| 153 | 1.14.2 | Test Execution for No BOTR | 40min | 2006-05-25 08:05 | 2006-05-25 08:45 | 152 | 2006-04-04 08:55 | 2006-04-04 09:35 | 40min | 0d | Cognizant | 0.67h |
| 154 | 1.14.3 | endOfPerformance and Backup | 20min | 2006-05-25 08:45 | 2006-05-25 09:05 | 153 | 2006-04-04 09:35 | 2006-04-04 09:55 | 20min | 0d | Cognizant | 0.33h |
| 155 | 1.14.4 | Reporting through KR site | 10min | 2006-05-25 09:05 | 2006-05-25 09:15 | 154 | 2006-04-04 09:55 | 2006-04-04 10:05 | 10min | 0d | Cognizant | 0.17h |
| 156 | 1.5.5.5 | Check: Sign off on Checkout Scripts | 30min | 2006-05-25 09:15 | 2006-05-25 09:45 | 155 |  |  |  | 0d | CBOE | 0.5h |
| 157 | 1.6 | **Install RTH Server A side** | 1.24d | 2006-05-25 09:45 | 2006-05-26 11:40 | 124 | 2006-04-04 15:20 | 2006-04-05 15:15 | 0.99d | 0d | Cognizant | 28.75h |
| 158 | 1.21 | **Install RTH BC, COF_MAIN, CFE_MAIN (A)** | 0.31d | 2006-05-25 09:45 | 2006-05-25 13:15 | 151 | 2006-04-04 15:20 | 2006-04-05 08:20 | 0.25d | 0d | Cognizant | 4h |
| 159 | 1.21.1 | Configuration and starting processes | 1h | 2006-05-25 09:45 | 2006-05-25 10:45 | 156 | 2006-04-04 15:20 | 2006-04-04 16:20 | 1h | 0d |  |  |
| 160 | 1.21.2 | ITG Checkout script (CFE_MAIN and COF_MAIN Session) | 40min | 2006-05-25 10:45 | 2006-05-25 11:25 | 159 | 2006-04-04 16:20 | 2006-04-04 17:00 | 40min | 0d | Cognizant | 0.67h |
| 161 | 1.21.3 | Backup and Reporting | 20min | 2006-05-25 11:25 | 2006-05-25 11:45 | 160 | 2006-04-05 08:00 | 2006-04-05 08:20 | 20min | 0d | Cognizant | 0.33h |
| 162 | 1.6.1.4 | Check: Sign off on Checkout Scripts | 30min | 2006-05-25 11:45 | 2006-05-25 13:15 | 161 |  |  |  | 0d | CBOE | 0.5h |

| ID | WBS | Task | Duration | Start | Finish | Predecessors | Baseline start | Baseline finish | Baseline duration | Total slack | Resources | Work |
| --- | --- | --- | --- | --- | --- | --- | --- | --- | --- | --- | --- | --- |
| 163 | 1.22 | **Single-class Order step-up test for COF_MAIN.** | 0.29d | 2006-05-25 13:15 | 2006-05-25 15:35 | 158 | 2006-04-05 08:20 | 2006-04-05 10:10 | 0.23d | 0d | Cognizant | 4.67h |
| 164 | 1.22.1 | BC Cleanup, Initial Driver Setup, | 20min | 2006-05-25 13:15 | 2006-05-25 13:35 | 162 | 2006-04-05 08:20 | 2006-04-05 08:40 | 20min | 0d | Cognizant | 0.33h |
| 165 | 1.22.2 | Test Execution for No BOTR | 1h | 2006-05-25 13:35 | 2006-05-25 14:35 | 164 | 2006-04-05 08:40 | 2006-04-05 09:40 | 1h | 0d | Cognizant | 1h |
| 166 | 1.22.3 | endOfPerformance and Backup | 20min | 2006-05-25 14:35 | 2006-05-25 14:55 | 165 | 2006-04-05 09:40 | 2006-04-05 10:00 | 20min | 0d | Cognizant | 0.33h |
| 167 | 1.22.4 | Reporting through KR site | 10min | 2006-05-25 14:55 | 2006-05-25 15:05 | 166 | 2006-04-05 10:00 | 2006-04-05 10:10 | 10min | 0d | Cognizant | 0.17h |
| 168 | 1.6.2.5 | Check: Sign off on Checkout Scripts | 30min | 2006-05-25 15:05 | 2006-05-25 15:35 | 167 |  |  |  | 0d | CBOE | 0.5h |
| 169 | 1.23 | **Single-class(72 products) Quote step-up test.** | 0.29d | 2006-05-25 15:35 | 2006-05-26 08:55 | 163 | 2006-04-05 10:10 | 2006-04-05 12:00 | 0.23d | 0d | Cognizant | 4.67h |
| 170 | 1.23.1 | BC Cleanup, Initial Driver Setup, | 20min | 2006-05-25 15:35 | 2006-05-25 15:55 | 168 | 2006-04-05 10:10 | 2006-04-05 10:30 | 20min | 0d | Cognizant | 0.33h |
| 171 | 1.23.2 | Test Execution for No BOTR | 1h | 2006-05-25 15:55 | 2006-05-25 16:55 | 170 | 2006-04-05 10:30 | 2006-04-05 11:30 | 1h | 0d | Cognizant | 1h |
| 172 | 1.23.3 | endOfPerformance and Backup | 20min | 2006-05-25 16:55 | 2006-05-26 08:15 | 171 | 2006-04-05 11:30 | 2006-04-05 11:50 | 20min | 0d | Cognizant | 0.33h |
| 173 | 1.23.4 | Reporting through KR site | 10min | 2006-05-26 08:15 | 2006-05-26 08:25 | 172 | 2006-04-05 11:50 | 2006-04-05 12:00 | 10min | 0d | Cognizant | 0.17h |
| 174 | 1.6.3.5 | Check: Sign off on Checkout Scripts | 30min | 2006-05-26 08:25 | 2006-05-26 08:55 | 173 |  |  |  | 0d | CBOE | 0.5h |
| 175 | 1.24 | **Failover RTH COF_MAIN, CFE_MAIN BC** | 0.34d | 2006-05-26 08:55 | 2006-05-26 11:40 | 169 | 2006-04-05 13:00 | 2006-04-05 15:15 | 0.28d | 0d | Cognizant | 5.5h |
| 176 | 1.24.1 | Initial setup for test Drivers (starting processes on GC Slave.) | 25min | 2006-05-26 08:55 | 2006-05-26 09:20 | 174 | 2006-04-05 13:00 | 2006-04-05 13:25 | 25min | 0d | Cognizant | 0.42h |
| 177 | 1.24.2 | Quote/Order CFE_MAIN traffic going before/during/after failover. Test Execution | 30min | 2006-05-26 09:20 | 2006-05-26 09:50 | 176 | 2006-04-05 13:25 | 2006-04-05 13:55 | 30min | 0d | Cognizant | 0.5h |
| 178 | 1.24.3 | ITG Checkout script (for CFE_MAIN and COF_MAIN Session) | 40min | 2006-05-26 09:50 | 2006-05-26 10:30 | 177 | 2006-04-05 13:55 | 2006-04-05 14:35 | 40min | 0d | Cognizant | 0.67h |
| 179 | 1.24.4 | Backup for Failover and ITG Checkout | 20min | 2006-05-26 10:30 | 2006-05-26 10:50 | 178 | 2006-04-05 14:35 | 2006-04-05 14:55 | 20min | 0d | Cognizant | 0.33h |
| 180 | 1.24.5 | Generate Report for Failover Timings for all GC Processes (taking time from log files) | 20min | 2006-05-26 10:50 | 2006-05-26 11:10 | 179 | 2006-04-05 14:55 | 2006-04-05 15:15 | 20min | 0d | Cognizant | 0.33h |
| 181 | 1.6.4.6 | Check: Sign off on Checkout Scripts | 30min | 2006-05-26 11:10 | 2006-05-26 11:40 | 180 |  |  |  | 0d | CBOE | 0.5h |
| 182 | 1.7 | **Install RTH Server B Side** | 0.66d | 2006-05-26 11:40 | 2006-05-29 08:55 | 157 | 2006-04-05 15:15 | 2006-04-06 08:15 | 0.25d | 0d | Cognizant | 15.75h |
| 183 | 1.25 | **Install RTH CFE COF_MAIN BC (B)** | 0.31d | 2006-05-26 11:40 | 2006-05-26 15:10 | 175 | 2006-04-05 15:15 | 2006-04-06 08:15 | 0.25d | 0d | Cognizant | 5h |
| 184 | 1.25.1 | Configuration and starting processes | 1h | 2006-05-26 11:40 | 2006-05-26 13:40 | 181 | 2006-04-05 15:15 | 2006-04-05 16:15 | 1h | 0d | Cognizant | 1h |
| 185 | 1.25.2 | ITG Checkout script (CFE_MAIN and COF_MAIN Session) | 40min | 2006-05-26 13:40 | 2006-05-26 14:20 | 184 | 2006-04-05 16:15 | 2006-04-05 16:55 | 40min | 0d | Cognizant | 0.67h |
| 186 | 1.25.3 | Backup and Reporting | 20min | 2006-05-26 14:20 | 2006-05-26 14:40 | 185 | 2006-04-05 16:55 | 2006-04-06 08:15 | 20min | 0d | Cognizant | 0.33h |
| 187 | 1.7.1.4 | Check: Sign off on Checkout Scripts | 30min | 2006-05-26 14:40 | 2006-05-26 15:10 | 186 |  |  |  | 0d | CBOE | 0.5h |

| ID | WBS | Task | Duration | Start | Finish | Predecessors | Baseline start | Baseline finish | Baseline duration | Total slack | Resources | Work |
| --- | --- | --- | --- | --- | --- | --- | --- | --- | --- | --- | --- | --- |
| 188 | 1.24 | **Failover RTH COF_MAIN, CFE_MAIN BC** | 0.34d | 2006-05-26 15:10 | 2006-05-29 08:55 | 183 | 2006-04-05 13:00 | 2006-04-05 15:15 | 0.28d | 0d | Cognizant | 5.5h |
| 189 | 1.24.1 | Initial setup for test Drivers (starting processes on GC Slave.) | 25min | 2006-05-26 15:10 | 2006-05-26 15:35 | 187 | 2006-04-05 13:00 | 2006-04-05 13:25 | 25min | 0d | Cognizant | 0.42h |
| 190 | 1.24.2 | Quote/Order CFE_MAIN traffic going before/during/after failover. Test Execution | 30min | 2006-05-26 15:35 | 2006-05-26 16:05 | 189 | 2006-04-05 13:25 | 2006-04-05 13:55 | 30min | 0d | Cognizant | 0.5h |
| 191 | 1.24.3 | ITG Checkout script (for CFE_MAIN and COF_MAIN Session) | 40min | 2006-05-26 16:05 | 2006-05-26 16:45 | 190 | 2006-04-05 13:55 | 2006-04-05 14:35 | 40min | 0d | Cognizant | 0.67h |
| 192 | 1.24.4 | Backup for Failover and ITG Checkout | 20min | 2006-05-26 16:45 | 2006-05-29 08:05 | 191 | 2006-04-05 14:35 | 2006-04-05 14:55 | 20min | 0d | Cognizant | 0.33h |
| 193 | 1.24.5 | Generate Report for Failover Timings for all GC Processes (taking time from log files) | 20min | 2006-05-29 08:05 | 2006-05-29 08:25 | 192 | 2006-04-05 14:55 | 2006-04-05 15:15 | 20min | 0d | Cognizant | 0.33h |
| 194 | 1.7.2.6 | Check: Sign off on Checkout Scripts | 30min | 2006-05-29 08:25 | 2006-05-29 08:55 | 193 |  |  |  | 0d | CBOE | 0.5h |
| 195 | 1.6 | **Install & perform tests on ONE_MAIN BC A Side** | 1.96d | 2006-05-29 08:55 | 2006-05-31 08:35 | 182 | 2006-03-24 15:35 | 2006-03-27 16:20 | 1.09d | 0d | Cognizant | 47h |
| 196 | 1.26 | **Install ONE_MAIN BC (A)** | 0.25d | 2006-05-29 08:55 | 2006-05-29 10:55 | 188 | 2006-03-24 15:35 | 2006-03-27 08:35 | 0.25d | 0d | Cognizant | 4h |
| 197 | 1.26.1 | Configuration and starting processes | 1h | 2006-05-29 08:55 | 2006-05-29 09:55 | 194 | 2006-03-24 15:35 | 2006-03-24 16:35 | 1h | 0d | Cognizant | 1h |
| 198 | 1.26.2 | ITG Checkout script (ONE_MAIN Session) | 20min | 2006-05-29 09:55 | 2006-05-29 10:15 | 197 | 2006-03-24 16:35 | 2006-03-27 08:15 | 40min | 0d | Cognizant | 0.33h |
| 199 | 1.26.3 | Backup and Reporting | 20min | 2006-05-29 10:15 | 2006-05-29 10:35 | 198 | 2006-03-27 08:15 | 2006-03-27 08:35 | 20min | 0d | Cognizant | 0.33h |
| 200 | 1.8.1.4 | Check: Sign Off on Checkout Scripts, Logs and Results | 20min | 2006-05-29 10:35 | 2006-05-29 10:55 | 199 | 2006-03-27 08:35 | 2006-03-27 08:35 | 0h | 0d | CBOE | 0.33h |
| 201 | 1.27 | **Multi-class Order step-up test for ONE_MAIN [Scenario 2]** | 0.27d | 2006-05-29 10:55 | 2006-05-29 14:05 | 196 | 2006-03-27 08:35 | 2006-03-27 10:25 | 0.23d | 0d | Cognizant | 4.33h |
| 202 | 1.27.1 | BC Cleanup, Initial Driver Setup, | 20min | 2006-05-29 10:55 | 2006-05-29 11:15 | 200 | 2006-03-27 08:35 | 2006-03-27 08:55 | 20min | 0d | Cognizant | 0.33h |
| 203 | 1.27.2 | Test Execution for No BOTR | 1h | 2006-05-29 11:15 | 2006-05-29 13:15 | 202 | 2006-03-27 08:55 | 2006-03-27 09:55 | 1h | 0d | Cognizant | 1h |
| 204 | 1.27.3 | endOfPerformance and Backup | 15min | 2006-05-29 13:15 | 2006-05-29 13:30 | 203 | 2006-03-27 09:55 | 2006-03-27 10:10 | 15min | 0d | Cognizant | 0.25h |
| 205 | 1.27.4 | Reporting through KR site | 15min | 2006-05-29 13:30 | 2006-05-29 13:45 | 204 | 2006-03-27 10:10 | 2006-03-27 10:25 | 15min | 0d | Cognizant | 0.25h |
| 206 | 1.8.2.5 | Check: Sign Off on Logs and Results | 20min | 2006-05-29 13:45 | 2006-05-29 14:05 | 205 | 2006-03-27 10:25 | 2006-03-27 10:25 | 0h | 0d | CBOE | 0.33h |
| 207 | 1.28 | **Multi-class Quote step-up test [Scenario 1]** | 0.31d | 2006-05-29 14:05 | 2006-05-29 16:35 | 201 | 2006-03-27 10:25 | 2006-03-27 13:35 | 0.27d | 0d | Cognizant | 5h |
| 208 | 1.28.1 | BC Cleanup, Initial Driver Setup, | 20min | 2006-05-29 14:05 | 2006-05-29 14:25 | 206 | 2006-03-27 10:25 | 2006-03-27 10:45 | 20min | 0d | Cognizant | 0.33h |
| 209 | 1.28.2 | Test Execution for No BOTR | 1h | 2006-05-29 14:25 | 2006-05-29 15:25 | 208 | 2006-03-27 10:45 | 2006-03-27 11:45 | 1h | 0d | Cognizant | 1h |
| 210 | 1.28.3 | endOfPerformance and Backup | 30min | 2006-05-29 15:25 | 2006-05-29 15:55 | 209 | 2006-03-27 11:45 | 2006-03-27 13:15 | 30min | 0d | Cognizant | 0.5h |
| 211 | 1.28.4 | Reporting through KR site | 20min | 2006-05-29 15:55 | 2006-05-29 16:15 | 210 | 2006-03-27 13:15 | 2006-03-27 13:35 | 20min | 0d | Cognizant | 0.33h |
| 212 | 1.8.3.5 | Check: Sign Off on Logs and Results | 20min | 2006-05-29 16:15 | 2006-05-29 16:35 | 211 | 2006-03-27 13:35 | 2006-03-27 13:35 | 0h | 0d | CBOE | 0.33h |

| ID | WBS | Task | Duration | Start | Finish | Predecessors | Baseline start | Baseline finish | Baseline duration | Total slack | Resources | Work |
| --- | --- | --- | --- | --- | --- | --- | --- | --- | --- | --- | --- | --- |
| 213 | 1.30 | **Failover ONE_MAIN BC (New to Old)** | 0.31d | 2006-05-29 16:35 | 2006-05-30 10:05 | 207 | 2006-03-27 13:35 | 2006-03-27 16:20 | 0.34d | 0d | Cognizant | 5h |
| 214 | 1.8.4.1 | Cleanup | 20min | 2006-05-29 16:35 | 2006-05-29 16:55 | 212 | 2006-03-27 13:35 | 2006-03-27 13:55 | 20min | 0d | Cognizant | 0.33h |
| 215 | 1.30.1 | Initial setup for test Drivers (starting processes on BC Slave.) | 20min | 2006-05-29 16:55 | 2006-05-30 08:15 | 214 | 2006-03-27 13:55 | 2006-03-27 14:20 | 25min | 0d | Cognizant | 0.33h |
| 216 | 1.30.2 | Quote/Order ONE_MAIN traffic going before/during/after failover. Test Execution | 20min | 2006-05-30 08:15 | 2006-05-30 08:35 | 215 | 2006-03-27 14:20 | 2006-03-27 14:50 | 30min | 0d | Cognizant | 0.33h |
| 217 | 1.30.3 | ITG Checkout script (for ONE_MAIN Session) | 20min | 2006-05-30 08:35 | 2006-05-30 08:55 | 216 | 2006-03-27 14:50 | 2006-03-27 15:30 | 40min | 0d | Cognizant | 0.33h |
| 218 | 1.30.4 | Backup for Failover and ITG Checkout | 20min | 2006-05-30 08:55 | 2006-05-30 09:15 | 217 | 2006-03-27 15:30 | 2006-03-27 15:50 | 20min | 0d | Cognizant | 0.33h |
| 219 | 1.30.5 | Generate Report for Failover Timings for all BC Processes (taking time from log files) | 30min | 2006-05-30 09:15 | 2006-05-30 09:45 | 218 | 2006-03-27 15:50 | 2006-03-27 16:20 | 30min | 0d | Cognizant | 0.5h |
| 220 | 1.8.4.7 | Check: Sign Off on Checkout Scripts,Logs and Results | 20min | 2006-05-30 09:45 | 2006-05-30 10:05 | 219 | 2006-03-27 16:20 | 2006-03-27 16:20 | 0h | 0d | CBOE | 0.33h |
| 221 | 1.11 | **4 Hour Endurance Test** | 0.81d | 2006-05-30 10:05 | 2006-05-31 08:35 | 213 | 2006-03-31 13:15 | 2006-04-03 10:15 | 0.75d | 0d | Cognizant | 13h |
| 222 | 1.11.1 | Cleanup for W_MAIN and ONE_MAIN BC and Driver setup and CAS Bounce | 1h | 2006-05-30 10:05 | 2006-05-30 11:05 | 220 | 2006-03-31 13:15 | 2006-03-31 14:15 | 1h | 0d | Cognizant | 1h |
| 223 | 1.11.2 | 4 hour Sanity Check | 4h | 2006-05-30 11:05 | 2006-05-30 16:05 | 222 | 2006-03-31 14:15 | 2006-04-03 09:15 | 4h | 0d | Cognizant | 4h |
| 224 | 1.11.3 | endOfPerformance and Backup and Reporting | 1h | 2006-05-30 16:05 | 2006-05-31 08:05 | 223 | 2006-04-03 09:15 | 2006-04-03 10:15 | 1h | 0d | Cognizant | 1h |
| 225 | 1.8.5.4 | Check: Sign off on Checkout Scripts | 30min | 2006-05-31 08:05 | 2006-05-31 08:35 | 224 |  |  |  | 0d | CBOE | 0.5h |
| 226 | 1.7 | **Install & perform tests on ONE_MAIN BC B Side** | 0.56d | 2006-05-31 08:35 | 2006-05-31 14:05 | 195 | 2006-03-27 16:20 | 2006-03-28 13:05 | 0.59d | 0d | Cognizant | 13.5h |
| 227 | 1.31 | **Install ONE_MAIN BC (B)** | 0.25d | 2006-05-31 08:35 | 2006-05-31 10:35 | 221 | 2006-03-27 16:20 | 2006-03-28 09:20 | 0.25d | 0d | Cognizant | 4h |
| 228 | 1.31.1 | Configuration and starting processes | 1h | 2006-05-31 08:35 | 2006-05-31 09:35 | 225 | 2006-03-27 16:20 | 2006-03-28 08:20 | 1h | 0d | Cognizant | 1h |
| 229 | 1.31.2 | ITG Checkout script (ONE_MAIN Session) | 20min | 2006-05-31 09:35 | 2006-05-31 09:55 | 228 | 2006-03-28 08:20 | 2006-03-28 09:00 | 40min | 0d | Cognizant | 0.33h |
| 230 | 1.31.3 | Backup and Reporting | 20min | 2006-05-31 09:55 | 2006-05-31 10:15 | 229 | 2006-03-28 09:00 | 2006-03-28 09:20 | 20min | 0d | Cognizant | 0.33h |
| 231 | 1.9.1.4 | Check: Sign Off on Checkout Scripts, Logs and Results | 20min | 2006-05-31 10:15 | 2006-05-31 10:35 | 230 | 2006-03-28 09:20 | 2006-03-28 09:20 | 0h | 0d | CBOE | 0.33h |
| 232 | 1.9.2 | **Failover ONE_MAIN BC (New to New)** | 0.31d | 2006-05-31 10:35 | 2006-05-31 14:05 | 227 | 2006-03-28 09:20 | 2006-03-28 13:05 | 0.34d | 0d | Cognizant | 5h |
| 233 | 1.9.2.1 | Cleanup | 20min | 2006-05-31 10:35 | 2006-05-31 10:55 | 231 | 2006-03-28 09:20 | 2006-03-28 09:40 | 20min | 0d | Cognizant | 0.33h |
| 234 | 1.9.2.2 | Initial setup for test Drivers (starting processes on BC Slave.) | 20min | 2006-05-31 10:55 | 2006-05-31 11:15 | 233 | 2006-03-28 09:40 | 2006-03-28 10:05 | 25min | 0d | Cognizant | 0.33h |
| 235 | 1.9.2.3 | Quote/Order ONE_MAIN traffic going before/during/after failover. Test Execution | 20min | 2006-05-31 11:15 | 2006-05-31 11:35 | 234 | 2006-03-28 10:05 | 2006-03-28 10:35 | 30min | 0d | Cognizant | 0.33h |
| 236 | 1.9.2.4 | ITG Checkout script (ONE_MAIN Session) | 20min | 2006-05-31 11:35 | 2006-05-31 11:55 | 235 | 2006-03-28 10:35 | 2006-03-28 11:15 | 40min | 0d | Cognizant | 0.33h |
| 237 | 1.9.2.5 | Backup for Failover and ITG Checkout | 20min | 2006-05-31 11:55 | 2006-05-31 13:15 | 236 | 2006-03-28 11:15 | 2006-03-28 11:35 | 20min | 0d | Cognizant | 0.33h |
| 238 | 1.9.2.6 | Generate Report for Failover Timings for all BC Processes (taking time from log files) | 30min | 2006-05-31 13:15 | 2006-05-31 13:45 | 237 | 2006-03-28 11:35 | 2006-03-28 13:05 | 30min | 0d | Cognizant | 0.5h |
| 239 | 1.9.2.7 | Check: Sign Off on Checkout Scripts,Logs and Results | 20min | 2006-05-31 13:45 | 2006-05-31 14:05 | 238 | 2006-03-28 13:05 | 2006-03-28 13:05 | 0h | 0d | CBOE | 0.33h |

| ID | WBS | Task | Duration | Start | Finish | Predecessors | Baseline start | Baseline finish | Baseline duration | Total slack | Resources | Work |
| --- | --- | --- | --- | --- | --- | --- | --- | --- | --- | --- | --- | --- |
| 240 | 1.10 | **Install A Side FE** | 0.95d | 2006-05-31 14:05 | 2006-06-01 13:40 | 226 | 2006-04-10 08:10 | 2006-04-10 16:15 | 0.89d | 0d | Cognizant | 27h |
| 241 | 1.32 | **Install 1 FE** | 0.95d | 2006-05-31 14:05 | 2006-06-01 13:40 | 232 | 2006-04-10 08:10 | 2006-04-10 10:10 | 0.25d | 0d | Cognizant | 19.42h |
| 242 | 1.32.1 | Configuration and starting processes | 1h | 2006-05-31 14:05 | 2006-05-31 15:05 | 239 | 2006-04-10 08:10 | 2006-04-10 09:10 | 1h | 0d |  |  |
| 243 | 1.32.2 | ITG Checkout script (W_MAIN and ONE_MAIN Session) | 40min | 2006-05-31 15:05 | 2006-05-31 15:45 | 242 | 2006-04-10 09:10 | 2006-04-10 09:50 | 40min | 0d | Cognizant | 0.67h |
| 244 | 1.32.3 | Backup and Reporting | 20min | 2006-05-31 15:45 | 2006-05-31 16:05 | 243 | 2006-04-10 09:50 | 2006-04-10 10:10 | 20min | 0d | Cognizant | 0.33h |
| 245 | 1.10.1.4 | Check: Sign Off on Checkout Scripts,Logs and Results | 20min | 2006-05-31 16:05 | 2006-05-31 16:25 | 244 | 2006-03-28 13:05 | 2006-03-28 13:05 | 0h | 0d | CBOE | 0.33h |
| 246 | 1.12 | **Multi-class Quote step-up test with NO BOTR** | 0.35d | 2006-05-31 16:25 | 2006-06-01 10:15 | 245 | 2006-04-03 10:15 | 2006-04-03 14:25 | 0.4d | 0d | Cognizant | 5.67h |
| 247 | 1.12.1 | BC Cleanup, Initial Driver Setup, | 20min | 2006-05-31 16:25 | 2006-05-31 16:45 | 245 | 2006-04-03 10:15 | 2006-04-03 10:35 | 20min | 0d | Cognizant | 0.33h |
| 248 | 1.12.2 | Test Execution for No BOTR | 1h | 2006-05-31 16:45 | 2006-06-01 08:45 | 247 | 2006-04-03 10:35 | 2006-04-03 11:35 | 1h | 0d | Cognizant | 1h |
| 249 | 1.12.4 | endOfPerformance and Backup | 30min | 2006-06-01 08:45 | 2006-06-01 09:15 | 248 | 2006-04-03 13:25 | 2006-04-03 13:55 | 30min | 0d | Cognizant | 0.5h |
| 250 | 1.12.5 | Reporting through KR site | 30min | 2006-06-01 09:15 | 2006-06-01 09:45 | 249 | 2006-04-03 13:55 | 2006-04-03 14:25 | 30min | 0d | Cognizant | 0.5h |
| 251 | 1.10.1.5.5 | Check: Sign off on Checkout Scripts | 30min | 2006-06-01 09:45 | 2006-06-01 10:15 | 250 |  |  |  | 0d | CBOE | 0.5h |
| 252 | 1.34 | **FE Failover** | 0.3d | 2006-06-01 10:15 | 2006-06-01 13:40 | 246 | 2006-04-10 14:20 | 2006-04-10 16:15 | 0.24d | 0d | Cognizant | 4.83h |
| 253 | 1.34.1 | ITG Checkout script(kill B side FE to make sure It used Aside FE) | 25min | 2006-06-01 10:15 | 2006-06-01 10:40 | 251 | 2006-04-10 14:20 | 2006-04-10 14:45 | 25min | 0d | Cognizant | 0.42h |
| 254 | 1.34.2 | Failover to FE2 side,Without restarting CAS, restart FE2 kill FE1 | 30min | 2006-06-01 10:40 | 2006-06-01 11:10 | 253 | 2006-04-10 14:45 | 2006-04-10 15:15 | 30min | 0d | Cognizant | 0.5h |
| 255 | 1.34.3 | ITG Checkout script after FE New to Old Failover | 40min | 2006-06-01 11:10 | 2006-06-01 11:50 | 254 | 2006-04-10 15:15 | 2006-04-10 15:55 | 40min | 0d | Cognizant | 0.67h |
| 256 | 1.34.4 | Backup for Failover | 20min | 2006-06-01 11:50 | 2006-06-01 13:10 | 255 | 2006-04-10 15:55 | 2006-04-10 16:15 | 20min | 0d | Cognizant | 0.33h |
| 257 | 1.10.1.6.5 | Check: Sign off on Checkout Scripts | 30min | 2006-06-01 13:10 | 2006-06-01 13:40 | 256 |  |  |  | 0d | CBOE | 0.5h |
| 258 | 1.11 | **Install B Side FE** | 0.57d | 2006-06-01 13:40 | 2006-06-02 09:15 | 240 | 2006-04-10 16:15 | 2006-04-11 11:10 | 0.49d | 0d | Cognizant | 15h |
| 259 | 1.35 | **Install FE2(Kill A side FE to make sure using B side)** | 0.57d | 2006-06-01 13:40 | 2006-06-02 09:15 | 241 | 2006-04-10 16:15 | 2006-04-11 09:15 | 0.25d | 0d | Cognizant | 10.42h |
| 260 | 1.35.1 | Configuration and starting processes | 1h | 2006-06-01 13:40 | 2006-06-01 14:40 | 257 | 2006-04-10 16:15 | 2006-04-11 08:15 | 1h | 0d |  |  |
| 261 | 1.35.2 | ITG Checkout script (W_MAIN and ONE_MAIN Session) | 40min | 2006-06-01 14:40 | 2006-06-01 15:20 | 260 | 2006-04-11 08:15 | 2006-04-11 08:55 | 40min | 0d | Cognizant | 0.67h |
| 262 | 1.35.3 | Backup and Reporting | 20min | 2006-06-01 15:20 | 2006-06-01 15:40 | 261 | 2006-04-11 08:55 | 2006-04-11 09:15 | 20min | 0d | Cognizant | 0.33h |
| 263 | 1.11.1.4 | Check: Sign Off on Checkout Scripts,Logs and Results | 20min | 2006-06-01 15:40 | 2006-06-01 16:00 | 262 | 2006-03-28 13:05 | 2006-03-28 13:05 | 0h | 0d | CBOE | 0.33h |

| ID | WBS | Task | Duration | Start | Finish | Predecessors | Baseline start | Baseline finish | Baseline duration | Total slack | Resources | Work |
| --- | --- | --- | --- | --- | --- | --- | --- | --- | --- | --- | --- | --- |
| 264 | 1.36 | **Failover FE** | 0.28d | 2006-06-01 16:00 | 2006-06-02 09:15 | 263 | 2006-04-11 09:15 | 2006-04-11 11:10 | 0.24d | 0d | Cognizant | 4.5h |
| 265 | 1.36.1 | ITG Checkout script(kill A side FE to make sure It used B side FE) | 25min | 2006-06-01 16:00 | 2006-06-01 16:25 | 263 | 2006-04-11 09:15 | 2006-04-11 09:40 | 25min | 0d | Cognizant | 0.42h |
| 266 | 1.36.2 | Failover to FE1 side,Without restarting CAS, restart FE1 kill FE2 | 30min | 2006-06-01 16:25 | 2006-06-01 16:55 | 265 | 2006-04-11 09:40 | 2006-04-11 10:10 | 30min | 0d | Cognizant | 0.5h |
| 267 | 1.36.3 | ITG Checkout script after FE New to new Failover | 40min | 2006-06-01 16:55 | 2006-06-02 08:35 | 266 | 2006-04-11 10:10 | 2006-04-11 10:50 | 40min | 0d | Cognizant | 0.67h |
| 268 | 1.36.4 | Backup for Failover | 20min | 2006-06-02 08:35 | 2006-06-02 08:55 | 267 | 2006-04-11 10:50 | 2006-04-11 11:10 | 20min | 0d | Cognizant | 0.33h |
| 269 | 1.11.1.5.5 | Check: Sign Off on Checkout Scripts,Logs and Results | 20min | 2006-06-02 08:55 | 2006-06-02 09:15 | 268 | 2006-03-28 13:05 | 2006-03-28 13:05 | 0h | 0d | CBOE | 0.33h |
| 270 | 1.12 | **Server Side Full Cleanup** | 0.48d | 2006-06-02 09:15 | 2006-06-02 14:05 | 258 |  |  |  | 0d | Cognizant | 7.67h |
| 271 | 1.12.1 | Time server full startup after cleanup (See Server Startup Timing Page) | 3h | 2006-06-02 09:15 | 2006-06-02 13:15 | 269 |  |  |  | 0d | Cognizant | 3h |
| 272 | 1.12.2 | Backup for server Timings | 20min | 2006-06-02 13:15 | 2006-06-02 13:35 | 271 |  |  |  | 0d | Cognizant | 0.33h |
| 273 | 1.12.3 | Check: Sign off on Server Timings | 30min | 2006-06-02 13:35 | 2006-06-02 14:05 | 272 |  |  |  | 0d | CBOE | 0.5h |
| 274 | 1.13 | **Install MDGC A Side** | 1.49d | 2006-06-02 14:05 | 2006-06-06 09:00 | 270 | 2006-04-11 11:10 | 2006-04-12 14:45 | 1.32d | 0d | Cognizant | 35.75h |
| 275 | 1.37 | **Install MDGCA side (perf driver install if needed)** | 0.29d | 2006-06-02 14:05 | 2006-06-02 16:25 | 270 | 2006-04-11 11:10 | 2006-04-11 14:10 | 0.25d | 0d | Cognizant | 4.67h |
| 276 | 1.37.1 | Configuration and starting processes | 1h | 2006-06-02 14:05 | 2006-06-02 15:05 | 273 | 2006-04-11 11:10 | 2006-04-11 13:10 | 1h | 0d | Cognizant | 1h |
| 277 | 1.37.2 | ITG Checkout script (W_MAIN and ONE_MAIN Session) | 40min | 2006-06-02 15:05 | 2006-06-02 15:45 | 276 | 2006-04-11 13:10 | 2006-04-11 13:50 | 40min | 0d | Cognizant | 0.67h |
| 278 | 1.37.3 | Backup and Reporting | 20min | 2006-06-02 15:45 | 2006-06-02 16:05 | 277 | 2006-04-11 13:50 | 2006-04-11 14:10 | 20min | 0d | Cognizant | 0.33h |
| 279 | 1.13.1.4 | Check: Sign Off on Checkout Scripts,Logs and Results | 20min | 2006-06-02 16:05 | 2006-06-02 16:25 | 278 | 2006-03-28 13:05 | 2006-03-28 13:05 | 0h | 0d | CBOE | 0.33h |
| 280 | 1.38 | **Multi-class Quote step-up test with ADD PDS QUERY TRAFFIC: 200q/s BOTR** | 0.44d | 2006-06-02 16:25 | 2006-06-05 10:55 | 275 | 2006-04-11 14:10 | 2006-04-12 08:20 | 0.4d | 0d | Cognizant | 7h |
| 281 | 1.38.1 | BC Cleanup, Initial Driver Setup, | 20min | 2006-06-02 16:25 | 2006-06-02 16:45 | 279 | 2006-04-11 14:10 | 2006-04-11 14:30 | 20min | 0d | Cognizant | 0.33h |
| 282 | 1.38.2 | Test Execution for No BOTR | 1h | 2006-06-02 16:45 | 2006-06-05 08:45 | 281 | 2006-04-11 14:30 | 2006-04-11 15:30 | 1h | 0d | Cognizant | 1h |
| 283 | 1.38.3 | BOTR from 1000 to 16000 | 50min | 2006-06-05 08:45 | 2006-06-05 09:35 | 282 | 2006-04-11 15:30 | 2006-04-11 16:20 | 50min | 0d | Cognizant | 0.83h |
| 284 | 1.38.4 | endOfPerformance and Backup | 30min | 2006-06-05 09:35 | 2006-06-05 10:05 | 283 | 2006-04-11 16:20 | 2006-04-11 16:50 | 30min | 0d | Cognizant | 0.5h |
| 285 | 1.38.5 | Reporting through KR site | 30min | 2006-06-05 10:05 | 2006-06-05 10:35 | 284 | 2006-04-11 16:50 | 2006-04-12 08:20 | 30min | 0d | Cognizant | 0.5h |
| 286 | 1.13.2.6 | Check: Sign Off on Checkout Scripts,Logs and Results | 20min | 2006-06-05 10:35 | 2006-06-05 10:55 | 285 | 2006-03-28 13:05 | 2006-03-28 13:05 | 0h | 0d | CBOE | 0.33h |
| 287 | 1.39 | **Fail over MDGC to B side ( shut down A side connections and bring up B side ones )** | 0.32d | 2006-06-05 10:55 | 2006-06-05 14:30 | 280 | 2006-04-12 08:20 | 2006-04-12 10:35 | 0.28d | 0d | Cognizant | 5.17h |
| 288 | 1.39.1 | Initial setup for test Drivers (starting processes on GC Slave.) | 25min | 2006-06-05 10:55 | 2006-06-05 11:20 | 286 | 2006-04-12 08:20 | 2006-04-12 08:45 | 25min | 0d | Cognizant | 0.42h |
| 289 | 1.39.2 | Quote/Order Hybrid and ONE_MAIN traffic going before/during/after failover. Test Execution | 30min | 2006-06-05 11:20 | 2006-06-05 11:50 | 288 | 2006-04-12 08:45 | 2006-04-12 09:15 | 30min | 0d | Cognizant | 0.5h |
| 290 | 1.39.3 | ITG Checkout script (for W_MAIN and ONE_MAIN Session) | 40min | 2006-06-05 11:50 | 2006-06-05 13:30 | 289 | 2006-04-12 09:15 | 2006-04-12 09:55 | 40min | 0d | Cognizant | 0.67h |
| 291 | 1.39.4 | Backup for Failover and ITG Checkout | 20min | 2006-06-05 13:30 | 2006-06-05 13:50 | 290 | 2006-04-12 09:55 | 2006-04-12 10:15 | 20min | 0d | Cognizant | 0.33h |
| 292 | 1.39.5 | Generate Report for Failover Timings for all GC Processes (taking time from log files) | 20min | 2006-06-05 13:50 | 2006-06-05 14:10 | 291 | 2006-04-12 10:15 | 2006-04-12 10:35 | 20min | 0d | Cognizant | 0.33h |
| 293 | 1.13.3.6 | Check: Sign Off on Checkout Scripts,Logs and Results | 20min | 2006-06-05 14:10 | 2006-06-05 14:30 | 292 | 2006-03-28 13:05 | 2006-03-28 13:05 | 0h | 0d | CBOE | 0.33h |

| ID | WBS | Task | Duration | Start | Finish | Predecessors | Baseline start | Baseline finish | Baseline duration | Total slack | Resources | Work |
| --- | --- | --- | --- | --- | --- | --- | --- | --- | --- | --- | --- | --- |
| 294 | 1.40 | **Multi-class Quote step-up test with ADD PDS QUERY TRAFFIC: 200q/s BOTR** | 0.44d | 2006-06-05 14:30 | 2006-06-06 09:00 | 287 | 2006-04-12 10:35 | 2006-04-12 14:45 | 0.4d | 0d | Cognizant | 7h |
| 295 | 1.40.1 | BC Cleanup, Initial Driver Setup, | 20min | 2006-06-05 14:30 | 2006-06-05 14:50 | 293 | 2006-04-12 10:35 | 2006-04-12 10:55 | 20min | 0d | Cognizant | 0.33h |
| 296 | 1.40.2 | Test Execution for No BOTR | 1h | 2006-06-05 14:50 | 2006-06-05 15:50 | 295 | 2006-04-12 10:55 | 2006-04-12 11:55 | 1h | 0d | Cognizant | 1h |
| 297 | 1.40.3 | BOTR from 1000 to 16000 | 50min | 2006-06-05 15:50 | 2006-06-05 16:40 | 296 | 2006-04-12 11:55 | 2006-04-12 13:45 | 50min | 0d | Cognizant | 0.83h |
| 298 | 1.40.4 | endOfPerformance and Backup | 30min | 2006-06-05 16:40 | 2006-06-06 08:10 | 297 | 2006-04-12 13:45 | 2006-04-12 14:15 | 30min | 0d | Cognizant | 0.5h |
| 299 | 1.40.5 | Reporting through KR site | 30min | 2006-06-06 08:10 | 2006-06-06 08:40 | 298 | 2006-04-12 14:15 | 2006-04-12 14:45 | 30min | 0d | Cognizant | 0.5h |
| 300 | 1.13.4.6 | Check: Sign Off on Checkout Scripts,Logs and Results | 20min | 2006-06-06 08:40 | 2006-06-06 09:00 | 299 | 2006-03-28 13:05 | 2006-03-28 13:05 | 0h | 0d | CBOE | 0.33h |
| 301 | 1.14 | **Install MDGC B Side** | 0.29d | 2006-06-06 09:00 | 2006-06-06 11:20 | 274 | 2006-04-12 14:45 | 2006-04-12 16:45 | 0.25d | 0d | Cognizant | 7h |
| 302 | 1.41 | **Install MDGCB side and failover** | 0.29d | 2006-06-06 09:00 | 2006-06-06 11:20 | 294 | 2006-04-12 14:45 | 2006-04-12 16:45 | 0.25d | 0d | Cognizant | 4.67h |
| 303 | 1.41.1 | Configuration and starting processes | 1h | 2006-06-06 09:00 | 2006-06-06 10:00 | 300 | 2006-04-12 14:45 | 2006-04-12 15:45 | 1h | 0d | Cognizant | 1h |
| 304 | 1.41.2 | ITG Checkout script (W_MAIN and ONE_MAIN Session) | 40min | 2006-06-06 10:00 | 2006-06-06 10:40 | 303 | 2006-04-12 15:45 | 2006-04-12 16:25 | 40min | 0d | Cognizant | 0.67h |
| 305 | 1.41.3 | Backup and Reporting | 20min | 2006-06-06 10:40 | 2006-06-06 11:00 | 304 | 2006-04-12 16:25 | 2006-04-12 16:45 | 20min | 0d | Cognizant | 0.33h |
| 306 | 1.14.1.4 | Check: Sign Off on Checkout Scripts,Logs and Results | 20min | 2006-06-06 11:00 | 2006-06-06 11:20 | 305 | 2006-03-28 13:05 | 2006-03-28 13:05 | 0h | 0d | CBOE | 0.33h |
| 307 | 1.15 | **QT4 Specific test** | 4.73d? | 2006-06-06 11:20 | 2006-06-13 09:10 | 301 | 2006-03-14 08:00 | 2006-03-14 17:00 | 8h? | 0d | Cognizant | 152.33h |
| 308 | 1.15.1 | **To verify SysManAgent down scenario - Bring down sysManAgent on GC, BC and FE boxes** | 2.79d | 2006-06-06 11:20 | 2006-06-09 09:40 | 305 | 2006-03-14 08:00 | 2006-03-14 17:00 | 8h? | 0d | Cognizant | 67h |
| 309 | 1.32.2 | **ITG Checkout script (W_MAIN and ONE_MAIN Session)** | 0.1d | 2006-06-06 11:20 | 2006-06-06 13:10 | 305 | 2006-04-10 09:10 | 2006-04-10 09:50 | 40min | 0d | Cognizant | 1.67h |
| 310 | 1.32.3 | Backup and Reporting | 20min | 2006-06-06 11:20 | 2006-06-06 11:40 | 306 | 2006-04-10 09:50 | 2006-04-10 10:10 | 20min | 0d | Cognizant | 0.33h |
| 311 | 1.15.1.1.2 | Check: Sign Off on Checkout Scripts,Logs and Results | 30min | 2006-06-06 11:40 | 2006-06-06 13:10 | 310 | 2006-03-28 13:05 | 2006-03-28 13:05 | 0h | 0d | CBOE | 0.5h |
| 312 | 1.15.1.2 | **Hybrid Performance test Scenario_0 With HTS and HHS on same box** | 0.31d | 2006-06-06 13:10 | 2006-06-06 15:40 | 309 | 2006-03-14 08:00 | 2006-03-14 17:00 | 1d? | 0d | Cognizant | 5h |
| 313 | 1.15.1.2.1 | Multi-Class Quote step-up Quotes Only | 2h | 2006-06-06 13:10 | 2006-06-06 15:10 | 311 | 2006-03-14 08:00 | 2006-03-14 17:00 | 8h? | 0d | Cognizant | 2h |
| 314 | 1.15.1.2.2 | Check: Sign Off on Checkout Scripts,Logs and Results | 30min | 2006-06-06 15:10 | 2006-06-06 15:40 | 313 | 2006-03-28 13:05 | 2006-03-28 13:05 | 0h | 0d | CBOE | 0.5h |
| 315 | 1.15.1.3 | **Hybrid Performance test Scenario_0 With only HTS. Kill HHS in middle of test** | 0.31d | 2006-06-06 15:40 | 2006-06-07 09:10 | 312 | 2006-03-14 08:00 | 2006-03-14 17:00 | 1d? | 0d | Cognizant | 5h |
| 316 | 1.15.1.3.1 | Multi-Class Quote step-up Quotes Only | 2h | 2006-06-06 15:40 | 2006-06-07 08:40 | 314 | 2006-03-14 08:00 | 2006-03-14 17:00 | 8h? | 0d | Cognizant | 2h |
| 317 | 1.15.1.3.2 | Check: Sign Off on Checkout Scripts,Logs and Results | 30min | 2006-06-07 08:40 | 2006-06-07 09:10 | 316 | 2006-03-28 13:05 | 2006-03-28 13:05 | 0h | 0d | CBOE | 0.5h |

| ID | WBS | Task | Duration | Start | Finish | Predecessors | Baseline start | Baseline finish | Baseline duration | Total slack | Resources | Work |
| --- | --- | --- | --- | --- | --- | --- | --- | --- | --- | --- | --- | --- |
| 318 | 1.15.1.4 | **Hybrid Performance test Scenario_0 With only HTS. pstop and prun HHS in middle of test** | 0.31d | 2006-06-07 09:10 | 2006-06-07 11:40 | 315 | 2006-03-14 08:00 | 2006-03-14 17:00 | 1d? | 0d | Cognizant | 5h |
| 319 | 1.15.1.4.1 | Multi-Class Quote step-up Quotes Only | 2h | 2006-06-07 09:10 | 2006-06-07 11:10 | 317 | 2006-03-14 08:00 | 2006-03-14 17:00 | 8h? | 0d | Cognizant | 2h |
| 320 | 1.15.1.4.2 | Check: Sign Off on Checkout Scripts,Logs and Results | 30min | 2006-06-07 11:10 | 2006-06-07 11:40 | 319 | 2006-03-28 13:05 | 2006-03-28 13:05 | 0h | 0d | CBOE | 0.5h |
| 321 | 1.15.1.5 | **Hybrid Performance test Scenario_0 With HTS and HHS on separate boxes** | 0.31d | 2006-06-07 11:40 | 2006-06-07 15:10 | 318 | 2006-03-14 08:00 | 2006-03-14 17:00 | 1d? | 0d | Cognizant | 5h |
| 322 | 1.15.1.5.1 | Multi-Class Quote step-up Quotes Only | 2h | 2006-06-07 11:40 | 2006-06-07 14:40 | 320 | 2006-03-14 08:00 | 2006-03-14 17:00 | 8h? | 0d | Cognizant | 2h |
| 323 | 1.15.1.5.2 | Check: Sign Off on Checkout Scripts,Logs and Results | 30min | 2006-06-07 14:40 | 2006-06-07 15:10 | 322 | 2006-03-28 13:05 | 2006-03-28 13:05 | 0h | 0d | CBOE | 0.5h |
| 324 | 1.15.1.6 | **Hybrid fail over test for history servers.** | 0.38d | 2006-06-07 15:10 | 2006-06-08 09:10 | 321 | 2006-03-14 08:00 | 2006-03-14 17:00 | 1d? | 0d | Cognizant | 6h |
| 325 | 1.15.1.6.1 | Run HTS on prdbc20a and prdbc20b, HHS on mdgca and mdgcb. Run quote traffic. | 2h | 2006-06-07 15:10 | 2006-06-08 08:10 | 323 | 2006-03-14 08:00 | 2006-03-14 17:00 | 8h? | 0d | Cognizant | 2h |
| 326 | 1.15.1.6.2 | Kill HHS on mdgca. Fail over mdgca processes (HHS) using failover procedure. | 15min | 2006-06-08 08:10 | 2006-06-08 08:25 | 325 | 2006-03-14 08:00 | 2006-03-14 17:00 | 8h? | 0d | Cognizant | 0.25h |
| 327 | 1.15.1.6.3 | Use ar commands to point HTS to new HHS | 15min | 2006-06-08 08:25 | 2006-06-08 08:40 | 326 | 2006-03-14 08:00 | 2006-03-14 17:00 | 8h? | 0d | Cognizant | 0.25h |
| 328 | 1.15.1.6.4 | Check: Sign Off on Checkout Scripts,Logs and Results | 30min | 2006-06-08 08:40 | 2006-06-08 09:10 | 327 | 2006-03-28 13:05 | 2006-03-28 13:05 | 0h | 0d | CBOE | 0.5h |
| 329 | 1.15.1.7 | **Hybrid Performance test Scenario_0 With HTS, HHS and CDB Replication ON** | 0.44d | 2006-06-08 09:10 | 2006-06-08 13:40 | 324 | 2006-03-14 08:00 | 2006-03-14 17:00 | 1d? | 0d | Cognizant | 7h |
| 330 | 1.15.1.7.1 | Multi-Class Quote step-up Quotes Only | 3h | 2006-06-08 09:10 | 2006-06-08 13:10 | 328 | 2006-03-14 08:00 | 2006-03-14 17:00 | 8h? | 0d | Cognizant | 3h |
| 331 | 1.15.1.7.2 | Check: Sign Off on Checkout Scripts,Logs and Results | 30min | 2006-06-08 13:10 | 2006-06-08 13:40 | 330 | 2006-03-28 13:05 | 2006-03-28 13:05 | 0h | 0d | CBOE | 0.5h |
| 332 | 1.15.1.8 | **Hybrid Performance test - Order Stepup** | 0.31d | 2006-06-08 13:40 | 2006-06-08 16:10 | 329 | 2006-03-14 08:00 | 2006-03-14 17:00 | 1d? | 0d | Cognizant | 5h |
| 333 | 1.15.1.8.1 | Order Stepup test | 2h | 2006-06-08 13:40 | 2006-06-08 15:40 | 314 | 2006-03-14 08:00 | 2006-03-14 17:00 | 8h? | 0d | Cognizant | 2h |
| 334 | 1.15.1.8.2 | Check: Sign Off on Checkout Scripts,Logs and Results | 30min | 2006-06-08 15:40 | 2006-06-08 16:10 | 333 | 2006-03-28 13:05 | 2006-03-28 13:05 | 0h | 0d | CBOE | 0.5h |
| 335 | 1.15.1.9 | **Hybrid Performance test Order + Quotes** | 0.31d | 2006-06-08 16:10 | 2006-06-09 09:40 | 332 | 2006-03-14 08:00 | 2006-03-14 17:00 | 1d? | 0d | Cognizant | 5h |
| 336 | 1.15.1.9.1 | Order + Quotes test | 2h | 2006-06-08 16:10 | 2006-06-09 09:10 | 334 | 2006-03-14 08:00 | 2006-03-14 17:00 | 8h? | 0d | Cognizant | 2h |
| 337 | 1.15.1.9.2 | Check: Sign Off on Checkout Scripts,Logs and Results | 30min | 2006-06-09 09:10 | 2006-06-09 09:40 | 336 | 2006-03-28 13:05 | 2006-03-28 13:05 | 0h | 0d | CBOE | 0.5h |
| 338 | 1.15.2 | **DBA's to create index on the MDH and QH tables on the new column CREAT_REC_TIME + any other tunable parameters for order tables.** | 1.94d? | 2006-06-09 09:40 | 2006-06-13 09:10 | 335 | 2006-03-14 08:00 | 2006-03-14 17:00 | 8h? | 0d | CBOE | 47.5h |
| 339 | 1.15.2.1 | **Hybrid Performance test Scenario_0 With HTS and HHS . dbldBlockSize =10** | 0.31d | 2006-06-09 09:40 | 2006-06-09 13:10 | 335 | 2006-03-14 08:00 | 2006-03-14 17:00 | 1d? | 0d | Cognizant | 5h |
| 340 | 1.15.2.1.1 | Multi-Class Quote step-up Quotes Only | 2h | 2006-06-09 09:40 | 2006-06-09 11:40 |  | 2006-03-14 08:00 | 2006-03-14 17:00 | 8h? | 0d | Cognizant | 2h |
| 341 | 1.15.2.1.2 | Check: Sign Off on Checkout Scripts,Logs and Results | 30min | 2006-06-09 11:40 | 2006-06-09 13:10 | 340 | 2006-03-28 13:05 | 2006-03-28 13:05 | 0h | 0d | CBOE | 0.5h |

| ID | WBS | Task | Duration | Start | Finish | Predecessors | Baseline start | Baseline finish | Baseline duration | Total slack | Resources | Work |
| --- | --- | --- | --- | --- | --- | --- | --- | --- | --- | --- | --- | --- |
| 342 | 1.15.2.2 | **Hybrid Performance test Scenario_0 With HTS and HHS . dbldBlockSize =1 million** | 0.31d | 2006-06-09 13:10 | 2006-06-09 15:40 | 339 | 2006-03-14 08:00 | 2006-03-14 17:00 | 1d? | 0d | Cognizant | 5h |
| 343 | 1.15.2.2.1 | Multi-Class Quote step-up Quotes Only | 2h | 2006-06-09 13:10 | 2006-06-09 15:10 | 341 | 2006-03-14 08:00 | 2006-03-14 17:00 | 8h? | 0d | Cognizant | 2h |
| 344 | 1.15.2.2.2 | Check: Sign Off on Checkout Scripts,Logs and Results | 30min | 2006-06-09 15:10 | 2006-06-09 15:40 | 343 | 2006-03-28 13:05 | 2006-03-28 13:05 | 0h | 0d | CBOE | 0.5h |
| 345 | 1.15.2.3 | **Hybrid Performance test - Order Stepup** | 0.25d | 2006-06-09 15:40 | 2006-06-12 08:40 | 342 | 2006-03-14 08:00 | 2006-03-14 17:00 | 1d? | 0d | Cognizant | 4h |
| 346 | 1.15.2.3.1 | Order Stepup test | 1.5h | 2006-06-09 15:40 | 2006-06-12 08:10 | 344 | 2006-03-14 08:00 | 2006-03-14 17:00 | 8h? | 0d | Cognizant | 1.5h |
| 347 | 1.15.2.3.2 | Check: Sign Off on Checkout Scripts,Logs and Results | 30min | 2006-06-12 08:10 | 2006-06-12 08:40 | 346 | 2006-03-28 13:05 | 2006-03-28 13:05 | 0h | 0d | CBOE | 0.5h |
| 348 | 1.15.2.4 | **Hybrid Performance test Order + Quotes** | 0.25d | 2006-06-12 08:40 | 2006-06-12 10:40 | 345 | 2006-03-14 08:00 | 2006-03-14 17:00 | 1d? | 0d | Cognizant | 4h |
| 349 | 1.15.2.4.1 | Order + Quotes test | 1.5h | 2006-06-12 08:40 | 2006-06-12 10:10 | 347 | 2006-03-14 08:00 | 2006-03-14 17:00 | 8h? | 0d | Cognizant | 1.5h |
| 350 | 1.15.2.4.2 | Check: Sign Off on Checkout Scripts,Logs and Results | 30min | 2006-06-12 10:10 | 2006-06-12 10:40 | 349 | 2006-03-28 13:05 | 2006-03-28 13:05 | 0h | 0d | CBOE | 0.5h |
| 351 | 1.15.2.5 | **Test Double failover of FE** | 0.25d | 2006-06-12 10:40 | 2006-06-12 13:40 | 348 | 2006-03-14 08:00 | 2006-03-14 17:00 | 8h? | 0d | Cognizant | 4h |
| 352 | 1.15.2.5.1 | Double Failover for FE | 1.5h | 2006-06-12 10:40 | 2006-06-12 13:10 | 350 | 2006-03-14 08:00 | 2006-03-14 17:00 | 8h? | 0d | Cognizant | 1.5h |
| 353 | 1.15.2.5.2 | Check: Sign Off on Checkout Scripts,Logs and Results | 30min | 2006-06-12 13:10 | 2006-06-12 13:40 | 352 | 2006-03-28 13:05 | 2006-03-28 13:05 | 0h | 0d | CBOE | 0.5h |
| 354 | 1.15.2.6 | **Test for user logout in case of both FE's down** | 0.25d | 2006-06-12 13:40 | 2006-06-12 15:40 | 351 | 2006-03-14 08:00 | 2006-03-14 17:00 | 8h? | 0d | Cognizant | 4h |
| 355 | 1.15.2.6.1 | Test for User Logout with FE down | 1.5h | 2006-06-12 13:40 | 2006-06-12 15:10 | 353 | 2006-03-14 08:00 | 2006-03-14 17:00 | 8h? | 0d | Cognizant | 1.5h |
| 356 | 1.15.2.6.2 | Check: Sign Off on Checkout Scripts,Logs and Results | 30min | 2006-06-12 15:10 | 2006-06-12 15:40 | 355 | 2006-03-28 13:05 | 2006-03-28 13:05 | 0h | 0d | CBOE | 0.5h |
| 357 | 1.15.2.7 | **Controlled test to verify CDB data replication. Requires CDB resource to run CDB data replication and verify MDH / QH record counts.** | 0.31d | 2006-06-12 15:40 | 2006-06-13 09:10 | 354 | 2006-03-14 08:00 | 2006-03-14 17:00 | 8h? | 0d | Cognizant | 5h |
| 358 | 1.15.2.7.1 | CDB replication Test | 2h | 2006-06-12 15:40 | 2006-06-13 08:40 | 356 | 2006-03-14 08:00 | 2006-03-14 17:00 | 8h? | 0d | Cognizant | 2h |
| 359 | 1.15.2.7.2 | Check: Sign Off on Checkout Scripts,Logs and Results | 30min | 2006-06-13 08:40 | 2006-06-13 09:10 | 358 | 2006-03-28 13:05 | 2006-03-28 13:05 | 0h | 0d | CBOE | 0.5h |
| 360 | 1.15.2.8 | Verify HTS uses HHS on its side. | 1h? | 2006-06-09 09:40 | 2006-06-09 10:40 |  | 2006-03-14 08:00 | 2006-03-14 17:00 | 8h? | 1.81d | Cognizant | 1h |
