Schedule from MS Project, 2006-09-05 to 2006-09-21.
Cognizant Technology Solutions

## Calendars

- Standard: Mon-Fri 08:00-12:00, 13:00-17:00; Sat-Sun off.

## Resources

| Resource |
| --- |
| Cognizant |
| 2 |
| CBOE |

## Schedule

| ID | WBS | Task | Duration | Start | Finish | Predecessors | Baseline start | Baseline finish | Baseline duration | Total slack | Constraint | Resources | Work |
| --- | --- | --- | --- | --- | --- | --- | --- | --- | --- | --- | --- | --- | --- |
| 1 | 1 | **Rollout Task** | 12.62d | 2006-09-05 08:00 | 2006-09-21 14:00 |  | 2006-03-14 08:00 | 2006-05-17 13:55 | 46.61d? | 0d |  |  | 236.5h |
| 2 | 1.1 | **Pre-Rollout Verification/Changes** | 0.03d | 2006-09-05 08:00 | 2006-09-05 08:15 |  | 2006-03-14 08:00 | 2006-05-17 13:55 | 46.61d? | 0d |  |  | 0.25h |
| 3 | 1.1.1 | **Make Database Changes** | 0.03d | 2006-09-05 08:00 | 2006-09-05 08:15 |  | 2006-05-10 08:00 | 2006-05-10 10:00 | 0.25d? | 0d |  |  | 0.25h |
| 4 | 1.1.1.1 | GC Specific database changes | 15min | 2006-09-05 08:00 | 2006-09-05 08:15 |  | 2006-05-10 08:00 | 2006-05-10 10:00 | 2h? | 0d | start no earlier than 2006-09-05 08:00 | Cognizant | 0.25h |
| 5 | 1.2 | **Install GC A Side, User Login and Failover Tests** | 1.62d | 2006-09-05 08:15 | 2006-09-06 14:15 | 2 |  |  |  | 0d |  | Cognizant | 33h |
| 6 | 1.2.1 | **Install GC "A" side with new release** | 0.48d | 2006-09-05 08:15 | 2006-09-05 13:05 | 3 |  |  |  | 0d |  | Cognizant | 7.67h |
| 7 | 1.2.1.1 | GC Installation steps | 1h | 2006-09-05 08:15 | 2006-09-05 09:15 | 4 |  |  |  | 0d | start no earlier than 2006-05-11 08:00 | Cognizant | 1h |
| 8 | 1.2.1.2 | Server Side Full Cleanup | 1.5h | 2006-09-05 09:15 | 2006-09-05 10:45 | 7 |  |  |  | 0d |  | Cognizant | 1.5h |
| 9 | 1.2.1.3 | Time server full startup after cleanup (See Server Startup Timing Page) | 30min | 2006-09-05 10:45 | 2006-09-05 11:15 | 8 |  |  |  | 0d |  | Cognizant | 0.5h |
| 10 | 1.2.1.4 | Backup for server Timings | 20min | 2006-09-05 11:15 | 2006-09-05 11:35 | 9 |  |  |  | 0d |  | Cognizant | 0.33h |
| 11 | 1.2.1.5 | Check: Sign off on Server Timings | 30min | 2006-09-05 11:35 | 2006-09-05 13:05 | 10 |  |  |  | 0d |  | CBOE | 0.5h |
| 12 | 1.2.2 | **ITG Checkout Script** | 0.19d | 2006-09-05 13:05 | 2006-09-05 14:35 | 6 |  |  |  | 0d |  | Cognizant | 3h |
| 13 | 1.2.1 | ITG Checkout script (W_MAIN, ONE_MAIN) | 40min | 2006-09-05 13:05 | 2006-09-05 13:45 | 11 |  |  |  | 0d |  | Cognizant | 0.67h |
| 14 | 1.2.5 | Backup and Reporting | 20min | 2006-09-05 13:45 | 2006-09-05 14:05 | 13 |  |  |  | 0d |  | Cognizant | 0.33h |
| 15 | 1.2.2.3 | Check: Sign off on Checkout Scripts | 30min | 2006-09-05 14:05 | 2006-09-05 14:35 | 14 |  |  |  | 0d |  | CBOE | 0.5h |
| 16 | 1.2.3 | **User Login test** | 0.25d | 2006-09-05 14:35 | 2006-09-05 16:35 | 12 |  |  |  | 0d |  | Cognizant | 4h |
| 17 | 1.2.3.1 | Initial setup like bouncing Global Server and SACAS. | 40min | 2006-09-05 14:35 | 2006-09-05 15:15 | 15 |  |  |  | 0d |  | Cognizant | 0.67h |
| 18 | 1.2.3.2 | Login Test for 1 and 2 Users | 15min | 2006-09-05 15:15 | 2006-09-05 15:30 | 17 |  |  |  | 0d |  | Cognizant | 0.25h |
| 19 | 1.2.3.3 | Product State Update to CLOSE on VLO (visually timing Single class CLOSED with SAGUI) | 15min | 2006-09-05 15:30 | 2006-09-05 15:45 | 18 |  |  |  | 0d |  | Cognizant | 0.25h |
| 20 | 1.2.3.4 | Backup for Login User Test and Product state Update through SAGUI | 20min | 2006-09-05 15:45 | 2006-09-05 16:05 | 19 |  |  |  | 0d |  | Cognizant | 0.33h |
| 21 | 1.2.3.5 | Check: Sign Off on Logs and Results | 30min | 2006-09-05 16:05 | 2006-09-05 16:35 | 20 |  |  |  | 0d |  | CBOE | 0.5h |
| 22 | 1.2.4 | **GC failover to "B" side** | 0.33d | 2006-09-05 16:35 | 2006-09-06 10:15 | 16 |  |  |  | 0d |  | Cognizant | 5.33h |
| 23 | 1.2.4.1 | Initial setup for test Drivers (starting processes on GC Slave.) | 30min | 2006-09-05 16:35 | 2006-09-06 08:05 | 21 |  |  |  | 0d |  | Cognizant | 0.5h |
| 24 | 1.2.4.2 | Quote/Order BC20 Hybrid and ONE_MAIN traffic going before/during/after failover. Should not hang to verify no Global Dependency introduced. Test Execution | 30min | 2006-09-06 08:05 | 2006-09-06 08:35 | 23 |  |  |  | 0d |  | Cognizant | 0.5h |
| 25 | 1.2.4.3 | ITG Checkout script (for W_MAIN and ONE_MAIN Session) | 30min | 2006-09-06 08:35 | 2006-09-06 09:05 | 24 |  |  |  | 0d |  | Cognizant | 0.5h |
| 26 | 1.2.4.4 | Backup for Failover and ITG Checkout | 20min | 2006-09-06 09:05 | 2006-09-06 09:25 | 25 |  |  |  | 0d |  | Cognizant | 0.33h |
| 27 | 1.2.4.5 | Generate Report for Failover Timings for all GC Processes (taking time from log files) | 20min | 2006-09-06 09:25 | 2006-09-06 09:45 | 26 |  |  |  | 0d |  | Cognizant | 0.33h |
| 28 | 1.2.4.6 | Check: Sign Off on Checkout Scripts, Logs and Results | 30min | 2006-09-06 09:45 | 2006-09-06 10:15 | 27 |  |  |  | 0d |  | CBOE | 0.5h |
| 29 | 1.2.5 | SMS Related Test Cases 8.1.a1-7 | 1.5h | 2006-09-06 10:15 | 2006-09-06 11:45 | 22 |  |  |  | 0d |  |  |  |
| 30 | 1.2.6 | SMS Related Test Cases 8.1.b1-9 | 1.5h | 2006-09-06 11:45 | 2006-09-06 14:15 | 29 |  |  |  | 0d |  |  |  |

| ID | WBS | Task | Duration | Start | Finish | Predecessors | Baseline start | Baseline finish | Baseline duration | Total slack | Resources | Work |
| --- | --- | --- | --- | --- | --- | --- | --- | --- | --- | --- | --- | --- |
| 31 | 1.3 | **Install GC B Side , Failover and Perf Tests** | 2.05d | 2006-09-06 14:15 | 2006-09-08 14:40 | 30 | 2006-03-27 14:00 | 2006-03-31 10:15 | 3.66d? | 0d | Cognizant | 46.25h |
| 32 | 1.3.1 | **Install GC "B" side** | 0.38d | 2006-09-06 14:15 | 2006-09-07 08:15 | 22 | 2006-03-27 14:00 | 2006-03-27 17:00 | 0.38d | 0d | Cognizant | 6h |
| 33 | 1.3.1.1 | Cleanup, createCurrentBusinessDay,starting all GC Processes on B side | 1.5h | 2006-09-06 14:15 | 2006-09-06 15:45 | 28 | 2006-03-27 14:00 | 2006-03-27 16:00 | 2h | 0d | Cognizant | 1.5h |
| 34 | 1.3.1.2 | ITG Checkout script (for W_MAIN, ONE_MAIN Session) | 40min | 2006-09-06 15:45 | 2006-09-06 16:25 | 33 | 2006-03-27 16:00 | 2006-03-27 16:40 | 40min | 0d | Cognizant | 0.67h |
| 35 | 1.3.1.3 | Backup for GC Upgrade and ITG Checkout | 20min | 2006-09-06 16:25 | 2006-09-06 16:45 | 34 | 2006-03-27 16:40 | 2006-03-27 17:00 | 20min | 0d | Cognizant | 0.33h |
| 36 | 1.3.1.4 | Check: Sign Off on Checkout Scripts, Logs and Results | 30min | 2006-09-06 16:45 | 2006-09-07 08:15 | 35 |  |  |  | 0d | CBOE | 0.5h |
| 37 | 1.3.2 | **ITG Checkout Script** | 0.19d | 2006-09-07 08:15 | 2006-09-07 09:45 | 36 |  |  |  | 0d | Cognizant | 3h |
| 38 | 1.2.1 | ITG Checkout script (W_MAIN, ONE_MAIN) | 40min | 2006-09-07 08:15 | 2006-09-07 08:55 | 36 |  |  |  | 0d | Cognizant | 0.67h |
| 39 | 1.2.5 | Backup and Reporting | 20min | 2006-09-07 08:55 | 2006-09-07 09:15 | 38 |  |  |  | 0d | Cognizant | 0.33h |
| 40 | 1.3.2.3 | Check: Sign off on Checkout Scripts | 30min | 2006-09-07 09:15 | 2006-09-07 09:45 | 39 |  |  |  | 0d | CBOE | 0.5h |
| 41 | 1.3.3 | **GC fail over to "A" side** | 0.35d | 2006-09-07 09:45 | 2006-09-07 13:35 | 37 | 2006-03-29 11:20 | 2006-03-30 11:20 | 1d? | 0d | Cognizant | 5.67h |
| 42 | 1.3.3.1 | Initial setup for test Drivers (starting processes on GC Slave.) | 30min | 2006-09-07 09:45 | 2006-09-07 10:15 | 40 | 2006-03-29 11:20 | 2006-03-29 11:50 | 30min | 0d | Cognizant | 0.5h |
| 43 | 1.3.3.2 | Quote/Order BC20 Hybrid and ONE_MAIN traffic going before/during/after failover. Should not hang to verify no Global Dependency introduced. Test Execution | 30min | 2006-09-07 10:15 | 2006-09-07 10:45 | 42 | 2006-03-29 11:50 | 2006-03-29 13:20 | 30min | 0d | Cognizant | 0.5h |
| 44 | 1.3.3.3 | ITG Checkout script (for W_MAIN and ONE_MAIN Session) | 40min | 2006-09-07 10:45 | 2006-09-07 11:25 | 43 | 2006-03-29 13:20 | 2006-03-29 14:00 | 40min | 0d | Cognizant | 0.67h |
| 45 | 1.3.3.4 | Backup for Failover and ITG Checkout | 20min | 2006-09-07 11:25 | 2006-09-07 11:45 | 44 | 2006-03-29 14:00 | 2006-03-29 14:20 | 20min | 0d | Cognizant | 0.33h |
| 46 | 1.3.3.5 | Generate Report for Failover Timings for all GC Processes (taking time from log files) | 20min | 2006-09-07 11:45 | 2006-09-07 13:05 | 45 | 2006-03-29 14:20 | 2006-03-29 14:40 | 20min | 0d | Cognizant | 0.33h |
| 47 | 1.3.3.6 | Check: Sign off on Checkout Scripts | 30min | 2006-09-07 13:05 | 2006-09-07 13:35 | 46 |  |  |  | 0d | CBOE | 0.5h |
| 48 | 1.3.4 | **60 User Login Test** | 0.18d | 2006-09-07 13:35 | 2006-09-07 15:00 | 41 | 2006-03-30 11:20 | 2006-03-30 13:45 | 0.18d | 0d | Cognizant | 2.83h |
| 49 | 1.3.4.1 | bouncing Global Server process, SACAS and all other CASes for 60 User login Test and SAGUI login test | 25min | 2006-09-07 13:35 | 2006-09-07 14:00 | 47 | 2006-03-30 11:20 | 2006-03-30 11:45 | 25min | 0d | Cognizant | 0.42h |
| 50 | 1.3.4.2 | User login test and 60 user login test, test execution | 30min | 2006-09-07 14:00 | 2006-09-07 14:30 | 49 | 2006-03-30 11:45 | 2006-03-30 13:15 | 30min | 0d | Cognizant | 0.5h |
| 51 | 1.3.4.3 | Backup and Reporting | 30min | 2006-09-07 14:30 | 2006-09-07 15:00 | 50 | 2006-03-30 13:15 | 2006-03-30 13:45 | 30min | 0d | Cognizant | 0.5h |
| 52 | 1.3.5 | SMS Related Test Cases 8.1.a1-7 | 1.5h | 2006-09-07 15:00 | 2006-09-07 16:30 | 48 |  |  |  | 0d | Cognizant | 1.5h |
| 53 | 1.3.6 | SMS Related Test Cases 8.1.b1-9 | 1.5h | 2006-09-07 16:30 | 2006-09-08 09:00 | 52 |  |  |  | 0d | Cognizant | 1.5h |
| 54 | 1.14 | **Multi-class Order step-up test** | 0.25d | 2006-09-08 09:00 | 2006-09-08 11:00 | 53 | 2006-04-04 08:35 | 2006-04-04 10:05 | 0.19d | 0d | Cognizant | 4h |
| 55 | 1.14.1 | BC Cleanup, Initial Driver Setup, | 20min | 2006-09-08 09:00 | 2006-09-08 09:20 |  | 2006-04-04 08:35 | 2006-04-04 08:55 | 20min | 0d | Cognizant | 0.33h |
| 56 | 1.14.2 | Test Execution for No BOTR | 40min | 2006-09-08 09:20 | 2006-09-08 10:00 | 55 | 2006-04-04 08:55 | 2006-04-04 09:35 | 40min | 0d | Cognizant | 0.67h |
| 57 | 1.14.3 | endOfPerformance and Backup | 20min | 2006-09-08 10:00 | 2006-09-08 10:20 | 56 | 2006-04-04 09:35 | 2006-04-04 09:55 | 20min | 0d | Cognizant | 0.33h |
| 58 | 1.14.4 | Reporting through KR site | 10min | 2006-09-08 10:20 | 2006-09-08 10:30 | 57 | 2006-04-04 09:55 | 2006-04-04 10:05 | 10min | 0d | Cognizant | 0.17h |
| 59 | 1.3.7.5 | Check: Sign off on Checkout Scripts | 30min | 2006-09-08 10:30 | 2006-09-08 11:00 | 58 |  |  |  | 0d | CBOE | 0.5h |

| ID | WBS | Task | Duration | Start | Finish | Predecessors | Baseline start | Baseline finish | Baseline duration | Total slack | Free slack | Resources | Work |
| --- | --- | --- | --- | --- | --- | --- | --- | --- | --- | --- | --- | --- | --- |
| 60 | 1.3.8 | **Hybrid Performance test Scenario_3 Multi-class Step-up with BOTR/EI/OT/LS/MDHQ/QQ session: W_MAIN** | 0.33d | 2006-09-08 11:00 | 2006-09-08 14:40 | 54 | 2006-03-30 13:45 | 2006-03-30 16:55 | 0.4d | 0d |  | Cognizant | 5.33h |
| 61 | 1.3.8.1 | BC Cleanup, Initial Driver Setup, | 20min | 2006-09-08 11:00 | 2006-09-08 11:20 | 51 | 2006-03-30 13:45 | 2006-03-30 14:05 | 20min | 0d |  | Cognizant | 0.33h |
| 62 | 1.3.8.2 | Test Execution | 75min | 2006-09-08 11:20 | 2006-09-08 13:35 | 61 | 2006-03-30 14:05 | 2006-03-30 15:05 | 1h | 0d |  | Cognizant | 1.25h |
| 63 | 1.3.8.3 | endOfPerformance and Backup | 20min | 2006-09-08 13:35 | 2006-09-08 13:55 | 62 | 2006-03-30 15:55 | 2006-03-30 16:25 | 30min | 0d |  | Cognizant | 0.33h |
| 64 | 1.3.8.4 | Reporting through KR site | 15min | 2006-09-08 13:55 | 2006-09-08 14:10 | 63 | 2006-03-30 16:25 | 2006-03-30 16:55 | 30min | 0d |  | Cognizant | 0.25h |
| 65 | 1.3.8.5 | Check: Sign off on Checkout Scripts | 30min | 2006-09-08 14:10 | 2006-09-08 14:40 | 64 |  |  |  | 0d |  | CBOE | 0.5h |
| 66 | 1.4 | **Install A Side FE, Failover and Perf test (Rollout Flag set to True)** | 1.88d | 2006-09-08 14:40 | 2006-09-12 13:40 | 31 | 2006-04-10 08:10 | 2006-04-10 16:15 | 0.89d | 0d |  | Cognizant | 40.5h |
| 67 | 1.32 | **Install 1 FE** | 0.23d | 2006-09-08 14:40 | 2006-09-08 16:30 | 60 | 2006-04-10 08:10 | 2006-04-10 10:10 | 0.25d | 0d |  | Cognizant | 3.67h |
| 68 | 1.32.1 | Configuration and starting processes | 30min | 2006-09-08 14:40 | 2006-09-08 15:10 | 65 | 2006-04-10 08:10 | 2006-04-10 09:10 | 1h | 0d |  | Cognizant | 0.5h |
| 69 | 1.32.2 | ITG Checkout script (W_MAIN and ONE_MAIN Session) | 40min | 2006-09-08 15:10 | 2006-09-08 15:50 | 68 | 2006-04-10 09:10 | 2006-04-10 09:50 | 40min | 0d |  | Cognizant | 0.67h |
| 70 | 1.32.3 | Backup and Reporting | 20min | 2006-09-08 15:50 | 2006-09-08 16:10 | 69 | 2006-04-10 09:50 | 2006-04-10 10:10 | 20min | 0d |  | Cognizant | 0.33h |
| 71 | 1.4.1.4 | Check: Sign Off on Checkout Scripts,Logs and Results | 20min | 2006-09-08 16:10 | 2006-09-08 16:30 | 70 | 2006-03-28 13:05 | 2006-03-28 13:05 | 0h | 0d |  | CBOE | 0.33h |
| 72 | 1.14 | **Multi-class Order step-up test** | 0.25d | 2006-09-08 16:30 | 2006-09-11 09:30 | 67 | 2006-04-04 08:35 | 2006-04-04 10:05 | 0.19d | 1.4d |  | Cognizant | 4h |
| 73 | 1.14.1 | BC Cleanup, Initial Driver Setup, | 20min | 2006-09-08 16:30 | 2006-09-08 16:50 | 71 | 2006-04-04 08:35 | 2006-04-04 08:55 | 20min | 1.4d | 0d | Cognizant | 0.33h |
| 74 | 1.14.2 | Test Execution for No BOTR | 40min | 2006-09-08 16:50 | 2006-09-11 08:30 | 73 | 2006-04-04 08:55 | 2006-04-04 09:35 | 40min | 1.4d | 0d | Cognizant | 0.67h |
| 75 | 1.14.3 | endOfPerformance and Backup | 20min | 2006-09-11 08:30 | 2006-09-11 08:50 | 74 | 2006-04-04 09:35 | 2006-04-04 09:55 | 20min | 1.4d | 0d | Cognizant | 0.33h |
| 76 | 1.14.4 | Reporting through KR site | 10min | 2006-09-11 08:50 | 2006-09-11 09:00 | 75 | 2006-04-04 09:55 | 2006-04-04 10:05 | 10min | 1.4d | 0d | Cognizant | 0.17h |
| 77 | 1.4.2.5 | Check: Sign off on Checkout Scripts | 30min | 2006-09-11 09:00 | 2006-09-11 09:30 | 76 |  |  |  | 1.4d |  | CBOE | 0.5h |
| 78 | 1.4.3 | **Hybrid Performance test Scenario_3 Multi-class Step-up with BOTR/EI/OT/LS/MDHQ/QQ session: W_MAIN** | 0.33d | 2006-09-08 16:30 | 2006-09-11 10:10 | 71 | 2006-03-30 13:45 | 2006-03-30 16:55 | 0.4d | 0d |  | Cognizant | 5.33h |
| 79 | 1.4.3.1 | BC Cleanup, Initial Driver Setup, | 20min | 2006-09-08 16:30 | 2006-09-08 16:50 |  | 2006-03-30 13:45 | 2006-03-30 14:05 | 20min | 0d |  | Cognizant | 0.33h |
| 80 | 1.4.3.2 | Test Execution | 75min | 2006-09-08 16:50 | 2006-09-11 09:05 | 79 | 2006-03-30 14:05 | 2006-03-30 15:05 | 1h | 0d |  | Cognizant | 1.25h |
| 81 | 1.4.3.3 | endOfPerformance and Backup | 20min | 2006-09-11 09:05 | 2006-09-11 09:25 | 80 | 2006-03-30 15:55 | 2006-03-30 16:25 | 30min | 0d |  | Cognizant | 0.33h |
| 82 | 1.4.3.4 | Reporting through KR site | 15min | 2006-09-11 09:25 | 2006-09-11 09:40 | 81 | 2006-03-30 16:25 | 2006-03-30 16:55 | 30min | 0d |  | Cognizant | 0.25h |
| 83 | 1.4.3.5 | Check: Sign off on Checkout Scripts | 30min | 2006-09-11 09:40 | 2006-09-11 10:10 | 82 |  |  |  | 0d |  | CBOE | 0.5h |
| 84 | 1.4.4 | Test Cases 1C 1-3 | 2h | 2006-09-11 10:10 | 2006-09-11 13:10 | 78 |  |  |  | 0d |  | Cognizant | 2h |
| 85 | 1.4.5 | Test Cases 6 1-2 | 2h | 2006-09-11 13:10 | 2006-09-11 15:10 | 84 |  |  |  | 0d |  | Cognizant | 2h |
| 86 | 1.4.6 | Test cases 2 a i | 1h | 2006-09-11 15:10 | 2006-09-11 16:10 | 85 |  |  |  | 0d |  | Cognizant | 1h |
| 87 | 1.4.7 | Test cases 2 a ii 1 | 1h | 2006-09-11 16:10 | 2006-09-12 08:10 | 86 |  |  |  | 0d |  | Cognizant | 1h |
| 88 | 1.4.8 | General Test Case 5 1-5 | 2.5h | 2006-09-12 08:10 | 2006-09-12 10:40 | 87 |  |  |  | 0d |  | Cognizant | 2.5h |

| ID | WBS | Task | Duration | Start | Finish | Predecessors | Baseline start | Baseline finish | Baseline duration | Total slack | Resources | Work |
| --- | --- | --- | --- | --- | --- | --- | --- | --- | --- | --- | --- | --- |
| 89 | 1.34 | **FE Failover** | 0.25d | 2006-09-12 10:40 | 2006-09-12 13:40 | 88 | 2006-04-10 14:20 | 2006-04-10 16:15 | 0.24d | 0d | Cognizant | 4h |
| 90 | 1.34.2 | Failover to FE2 side,Without restarting CAS, restart FE2 kill FE1 | 30min | 2006-09-12 10:40 | 2006-09-12 11:10 |  | 2006-04-10 14:45 | 2006-04-10 15:15 | 30min | 0d | Cognizant | 0.5h |
| 91 | 1.34.3 | ITG Checkout script after FE New to Old Failover | 40min | 2006-09-12 11:10 | 2006-09-12 11:50 | 90 | 2006-04-10 15:15 | 2006-04-10 15:55 | 40min | 0d | Cognizant | 0.67h |
| 92 | 1.34.4 | Backup for Failover | 20min | 2006-09-12 11:50 | 2006-09-12 13:10 | 91 | 2006-04-10 15:55 | 2006-04-10 16:15 | 20min | 0d | Cognizant | 0.33h |
| 93 | 1.4.9.4 | Check: Sign off on Checkout Scripts | 30min | 2006-09-12 13:10 | 2006-09-12 13:40 | 92 |  |  |  | 0d | CBOE | 0.5h |
| 94 | 1.5 | **Bring down sbtfe04, Only sbtfe03 running** | 1.42d | 2006-09-12 13:40 | 2006-09-13 17:00 | 66 |  |  |  | 0d |  | 16h |
| 95 | 1.32.2 | ITG Checkout script (W_MAIN and ONE_MAIN Session) | 40min | 2006-09-12 13:40 | 2006-09-12 14:20 | 89 | 2006-04-10 09:10 | 2006-04-10 09:50 | 40min | 0d | Cognizant | 0.67h |
| 96 | 1.5.2 | Test Cases 1C 1-3 | 2h | 2006-09-12 14:20 | 2006-09-12 16:20 | 95 |  |  |  | 0d | Cognizant | 2h |
| 97 | 1.5.3 | Test Cases 6 1-2 | 2h | 2006-09-12 16:20 | 2006-09-13 09:20 | 96 |  |  |  | 0d | Cognizant | 2h |
| 98 | 1.5.4 | General Test Case 5 1-5 | 2h | 2006-09-13 09:20 | 2006-09-13 11:20 | 97 |  |  |  | 0d | Cognizant | 2h |
| 99 | 1.5.5 | **Hybrid Performance test Scenario_3 Multi-class Step-up with BOTR/EI/OT/LS/MDHQ/QQ session: W_MAIN** | 0.33d | 2006-09-13 11:20 | 2006-09-13 15:00 | 98 | 2006-03-30 13:45 | 2006-03-30 16:55 | 0.4d | 0d | Cognizant | 5.33h |
| 100 | 1.5.5.1 | BC Cleanup, Initial Driver Setup, | 20min | 2006-09-13 11:20 | 2006-09-13 11:40 |  | 2006-03-30 13:45 | 2006-03-30 14:05 | 20min | 0d | Cognizant | 0.33h |
| 101 | 1.5.5.2 | Test Execution | 75min | 2006-09-13 11:40 | 2006-09-13 13:55 | 100 | 2006-03-30 14:05 | 2006-03-30 15:05 | 1h | 0d | Cognizant | 1.25h |
| 102 | 1.5.5.3 | endOfPerformance and Backup | 20min | 2006-09-13 13:55 | 2006-09-13 14:15 | 101 | 2006-03-30 15:55 | 2006-03-30 16:25 | 30min | 0d | Cognizant | 0.33h |
| 103 | 1.5.5.4 | Reporting through KR site | 15min | 2006-09-13 14:15 | 2006-09-13 14:30 | 102 | 2006-03-30 16:25 | 2006-03-30 16:55 | 30min | 0d | Cognizant | 0.25h |
| 104 | 1.5.5.5 | Check: Sign off on Checkout Scripts | 30min | 2006-09-13 14:30 | 2006-09-13 15:00 | 103 |  |  |  | 0d | CBOE | 0.5h |
| 105 | 1.14 | **Multi-class Order step-up test** | 0.25d | 2006-09-13 15:00 | 2006-09-13 17:00 | 99 | 2006-04-04 08:35 | 2006-04-04 10:05 | 0.19d | 0d | Cognizant | 4h |
| 106 | 1.14.1 | BC Cleanup, Initial Driver Setup, | 20min | 2006-09-13 15:00 | 2006-09-13 15:20 |  | 2006-04-04 08:35 | 2006-04-04 08:55 | 20min | 0d | Cognizant | 0.33h |
| 107 | 1.14.2 | Test Execution for No BOTR | 40min | 2006-09-13 15:20 | 2006-09-13 16:00 | 106 | 2006-04-04 08:55 | 2006-04-04 09:35 | 40min | 0d | Cognizant | 0.67h |
| 108 | 1.14.3 | endOfPerformance and Backup | 20min | 2006-09-13 16:00 | 2006-09-13 16:20 | 107 | 2006-04-04 09:35 | 2006-04-04 09:55 | 20min | 0d | Cognizant | 0.33h |
| 109 | 1.14.4 | Reporting through KR site | 10min | 2006-09-13 16:20 | 2006-09-13 16:30 | 108 | 2006-04-04 09:55 | 2006-04-04 10:05 | 10min | 0d | Cognizant | 0.17h |
| 110 | 1.5.6.5 | Check: Sign off on Checkout Scripts | 30min | 2006-09-13 16:30 | 2006-09-13 17:00 | 109 |  |  |  | 0d | CBOE | 0.5h |
| 111 | 1.6 | **Install B Side FE and Failover Test (Rollout Flag not present)** | 1.35d | 2006-09-14 08:00 | 2006-09-15 10:50 | 105 | 2006-04-10 16:15 | 2006-04-11 11:10 | 0.49d | 0d | Cognizant | 25h |
| 112 | 1.35 | **Install FE2(Kill A side FE to make sure using B side)** | 0.23d | 2006-09-14 08:00 | 2006-09-14 09:50 | 67 | 2006-04-10 16:15 | 2006-04-11 09:15 | 0.25d | 0d | Cognizant | 3.17h |
| 113 | 1.35.1 | Configuration and starting processes | 30min | 2006-09-14 08:00 | 2006-09-14 08:30 | 93 | 2006-04-10 16:15 | 2006-04-11 08:15 | 1h | 0d |  |  |
| 114 | 1.35.2 | ITG Checkout script (W_MAIN and ONE_MAIN Session) | 40min | 2006-09-14 08:30 | 2006-09-14 09:10 | 113 | 2006-04-11 08:15 | 2006-04-11 08:55 | 40min | 0d | Cognizant | 0.67h |
| 115 | 1.35.3 | Backup and Reporting | 20min | 2006-09-14 09:10 | 2006-09-14 09:30 | 114 | 2006-04-11 08:55 | 2006-04-11 09:15 | 20min | 0d | Cognizant | 0.33h |
| 116 | 1.6.1.4 | Check: Sign Off on Checkout Scripts,Logs and Results | 20min | 2006-09-14 09:30 | 2006-09-14 09:50 | 115 | 2006-03-28 13:05 | 2006-03-28 13:05 | 0h | 0d | CBOE | 0.33h |
| 117 | 1.6.2 | Test Cases 1d 1-3, 4,6 | 2.5h | 2006-09-14 09:50 | 2006-09-14 13:20 | 112 |  |  |  | 0d | Cognizant | 2.5h |
| 118 | 1.6.3 | Test cases 2 a i | 1h | 2006-09-14 13:20 | 2006-09-14 14:20 | 117 |  |  |  | 0d | Cognizant | 1h |
| 119 | 1.6.4 | Test cases 2 a ii 1 | 1h | 2006-09-14 14:20 | 2006-09-14 15:20 | 118 |  |  |  | 0d | Cognizant | 1h |
| 120 | 1.6.5 | General Test Case 5 1-5 | 2.5h | 2006-09-14 15:20 | 2006-09-15 08:50 | 119 |  |  |  | 0d | Cognizant | 2.5h |

| ID | WBS | Task | Duration | Start | Finish | Predecessors | Baseline start | Baseline finish | Baseline duration | Total slack | Free slack | Resources | Work |
| --- | --- | --- | --- | --- | --- | --- | --- | --- | --- | --- | --- | --- | --- |
| 121 | 1.34 | **FE Failover** | 0.25d | 2006-09-15 08:50 | 2006-09-15 10:50 | 120 | 2006-04-10 14:20 | 2006-04-10 16:15 | 0.24d | 0d |  | Cognizant | 4h |
| 122 | 1.34.2 | Failover to FE2 side,Without restarting CAS, restart FE2 kill FE1 | 30min | 2006-09-15 08:50 | 2006-09-15 09:20 | 116 | 2006-04-10 14:45 | 2006-04-10 15:15 | 30min | 0d |  | Cognizant | 0.5h |
| 123 | 1.34.3 | ITG Checkout script after FE New to Old Failover | 40min | 2006-09-15 09:20 | 2006-09-15 10:00 | 122 | 2006-04-10 15:15 | 2006-04-10 15:55 | 40min | 0d |  | Cognizant | 0.67h |
| 124 | 1.34.4 | Backup for Failover | 20min | 2006-09-15 10:00 | 2006-09-15 10:20 | 123 | 2006-04-10 15:55 | 2006-04-10 16:15 | 20min | 0d |  | Cognizant | 0.33h |
| 125 | 1.6.6.4 | Check: Sign off on Checkout Scripts | 30min | 2006-09-15 10:20 | 2006-09-15 10:50 | 124 |  |  |  | 0d |  | CBOE | 0.5h |
| 126 | 1.7 | **Remove Rollout Flag from sbtfe03** | 1.25d | 2006-09-15 10:50 | 2006-09-18 13:50 | 111 |  |  |  | 0d |  |  | 19.5h |
| 127 | 1.7.1 | **ITG Checkout Script** | 0.19d | 2006-09-15 10:50 | 2006-09-15 13:20 | 121 |  |  |  | 0d |  | Cognizant | 3h |
| 128 | 1.2.1 | ITG Checkout script (W_MAIN, ONE_MAIN) | 40min | 2006-09-15 10:50 | 2006-09-15 11:30 | 120 |  |  |  | 0d |  | Cognizant | 0.67h |
| 129 | 1.2.5 | Backup and Reporting | 20min | 2006-09-15 11:30 | 2006-09-15 11:50 | 128 |  |  |  | 0.75d | 0d | Cognizant | 0.33h |
| 130 | 1.7.1.3 | Check: Sign off on Checkout Scripts | 30min | 2006-09-15 11:50 | 2006-09-15 13:20 | 129 |  |  |  | 0.75d |  | CBOE | 0.5h |
| 131 | 1.7.2 | Test Cases 1d 1-7 | 2.5h | 2006-09-15 13:20 | 2006-09-15 15:50 | 127 |  |  |  | 0.75d |  | Cognizant | 2.5h |
| 132 | 1.7.3 | Test cases 2 a i | 1h | 2006-09-15 11:30 | 2006-09-15 13:30 | 128 |  |  |  | 0d |  | Cognizant | 1h |
| 133 | 1.7.4 | Test cases 2 a ii 1 | 1h | 2006-09-15 13:30 | 2006-09-15 14:30 | 132 |  |  |  | 0d |  | Cognizant | 1h |
| 134 | 1.7.5 | General Test Case 5 1-5 | 2.67h | 2006-09-15 14:30 | 2006-09-18 08:10 | 133 |  |  |  | 0d |  | Cognizant | 2.67h |
| 135 | 1.14 | **Multi-class Order step-up test** | 0.25d | 2006-09-18 08:10 | 2006-09-18 10:10 | 134 | 2006-04-04 08:35 | 2006-04-04 10:05 | 0.19d | 0d |  | Cognizant | 4h |
| 136 | 1.14.1 | BC Cleanup, Initial Driver Setup, | 20min | 2006-09-18 08:10 | 2006-09-18 08:30 |  | 2006-04-04 08:35 | 2006-04-04 08:55 | 20min | 0d |  | Cognizant | 0.33h |
| 137 | 1.14.2 | Test Execution for No BOTR | 40min | 2006-09-18 08:30 | 2006-09-18 09:10 | 136 | 2006-04-04 08:55 | 2006-04-04 09:35 | 40min | 0d |  | Cognizant | 0.67h |
| 138 | 1.14.3 | endOfPerformance and Backup | 20min | 2006-09-18 09:10 | 2006-09-18 09:30 | 137 | 2006-04-04 09:35 | 2006-04-04 09:55 | 20min | 0d |  | Cognizant | 0.33h |
| 139 | 1.14.4 | Reporting through KR site | 10min | 2006-09-18 09:30 | 2006-09-18 09:40 | 138 | 2006-04-04 09:55 | 2006-04-04 10:05 | 10min | 0d |  | Cognizant | 0.17h |
| 140 | 1.7.6.5 | Check: Sign off on Checkout Scripts | 30min | 2006-09-18 09:40 | 2006-09-18 10:10 | 139 |  |  |  | 0d |  | CBOE | 0.5h |
| 141 | 1.7.7 | **Hybrid Performance test Scenario_3 Multi-class Step-up with BOTR/EI/OT/LS/MDHQ/QQ session: W_MAIN** | 0.33d | 2006-09-18 10:10 | 2006-09-18 13:50 | 135 | 2006-03-30 13:45 | 2006-03-30 16:55 | 0.4d | 0d |  | Cognizant | 5.33h |
| 142 | 1.7.7.1 | BC Cleanup, Initial Driver Setup, | 20min | 2006-09-18 10:10 | 2006-09-18 10:30 |  | 2006-03-30 13:45 | 2006-03-30 14:05 | 20min | 0d |  | Cognizant | 0.33h |
| 143 | 1.7.7.2 | Test Execution | 75min | 2006-09-18 10:30 | 2006-09-18 11:45 | 142 | 2006-03-30 14:05 | 2006-03-30 15:05 | 1h | 0d |  | Cognizant | 1.25h |
| 144 | 1.7.7.3 | endOfPerformance and Backup | 20min | 2006-09-18 11:45 | 2006-09-18 13:05 | 143 | 2006-03-30 15:55 | 2006-03-30 16:25 | 30min | 0d |  | Cognizant | 0.33h |
| 145 | 1.7.7.4 | Reporting through KR site | 15min | 2006-09-18 13:05 | 2006-09-18 13:20 | 144 | 2006-03-30 16:25 | 2006-03-30 16:55 | 30min | 0d |  | Cognizant | 0.25h |
| 146 | 1.7.7.5 | Check: Sign off on Checkout Scripts | 30min | 2006-09-18 13:20 | 2006-09-18 13:50 | 145 |  |  |  | 0d |  | CBOE | 0.5h |

| ID | WBS | Task | Duration | Start | Finish | Predecessors | Baseline start | Baseline finish | Baseline duration | Total slack | Resources | Work |
| --- | --- | --- | --- | --- | --- | --- | --- | --- | --- | --- | --- | --- |
| 147 | 1.8 | **Install CAS on devcas5** | 2.58d | 2006-09-18 13:50 | 2006-09-21 09:30 | 126 |  |  |  | 0d | Cognizant | 47.5h |
| 148 | 1.8.1 | **ITG Checkout Script** | 0.19d | 2006-09-18 13:50 | 2006-09-18 15:20 | 141 |  |  |  | 0d | Cognizant | 3h |
| 149 | 1.2.1 | ITG Checkout script (W_MAIN, ONE_MAIN) | 40min | 2006-09-18 13:50 | 2006-09-18 14:30 |  |  |  |  | 0d | Cognizant | 0.67h |
| 150 | 1.2.5 | Backup and Reporting | 20min | 2006-09-18 14:30 | 2006-09-18 14:50 | 149 |  |  |  | 0d | Cognizant | 0.33h |
| 151 | 1.8.1.3 | Check: Sign off on Checkout Scripts | 30min | 2006-09-18 14:50 | 2006-09-18 15:20 | 150 |  |  |  | 0d | CBOE | 0.5h |
| 152 | 1.8.2 | Test Cases 1b 1-9 | 2h | 2006-09-18 15:20 | 2006-09-19 08:20 | 148 |  |  |  | 0d | Cognizant | 2h |
| 153 | 1.8.3 | Test Cases 2aii 2 a-f | 2h | 2006-09-19 08:20 | 2006-09-19 10:20 | 152 |  |  |  | 0d | Cognizant | 2h |
| 154 | 1.8.4 | Test Case 4.1 | 2h | 2006-09-19 10:20 | 2006-09-19 13:20 | 153 |  |  |  | 0d | Cognizant | 2h |
| 155 | 1.8.5 | General Test Case 5 1-5 | 2.5h | 2006-09-19 13:20 | 2006-09-19 15:50 | 154 |  |  |  | 0d | Cognizant | 2.5h |
| 156 | 1.14 | **Multi-class Order step-up test** | 0.25d | 2006-09-19 15:50 | 2006-09-20 08:50 | 155 | 2006-04-04 08:35 | 2006-04-04 10:05 | 0.19d | 0d | Cognizant | 4h |
| 157 | 1.14.1 | BC Cleanup, Initial Driver Setup, | 20min | 2006-09-19 15:50 | 2006-09-19 16:10 |  | 2006-04-04 08:35 | 2006-04-04 08:55 | 20min | 0d | Cognizant | 0.33h |
| 158 | 1.14.2 | Test Execution for No BOTR | 40min | 2006-09-19 16:10 | 2006-09-19 16:50 | 157 | 2006-04-04 08:55 | 2006-04-04 09:35 | 40min | 0d | Cognizant | 0.67h |
| 159 | 1.14.3 | endOfPerformance and Backup | 20min | 2006-09-19 16:50 | 2006-09-20 08:10 | 158 | 2006-04-04 09:35 | 2006-04-04 09:55 | 20min | 0d | Cognizant | 0.33h |
| 160 | 1.14.4 | Reporting through KR site | 10min | 2006-09-20 08:10 | 2006-09-20 08:20 | 159 | 2006-04-04 09:55 | 2006-04-04 10:05 | 10min | 0d | Cognizant | 0.17h |
| 161 | 1.8.6.5 | Check: Sign off on Checkout Scripts | 30min | 2006-09-20 08:20 | 2006-09-20 08:50 | 160 |  |  |  | 0d | CBOE | 0.5h |
| 162 | 1.8.7 | **Hybrid Performance test Scenario_3 Multi-class Step-up with BOTR/EI/OT/LS/MDHQ/QQ session: W_MAIN** | 0.33d | 2006-09-20 08:50 | 2006-09-20 11:30 | 156 | 2006-03-30 13:45 | 2006-03-30 16:55 | 0.4d | 0d | Cognizant | 5.33h |
| 163 | 1.8.7.1 | BC Cleanup, Initial Driver Setup, | 20min | 2006-09-20 08:50 | 2006-09-20 09:10 |  | 2006-03-30 13:45 | 2006-03-30 14:05 | 20min | 0d | Cognizant | 0.33h |
| 164 | 1.8.7.2 | Test Execution | 75min | 2006-09-20 09:10 | 2006-09-20 10:25 | 163 | 2006-03-30 14:05 | 2006-03-30 15:05 | 1h | 0d | Cognizant | 1.25h |
| 165 | 1.8.7.3 | endOfPerformance and Backup | 20min | 2006-09-20 10:25 | 2006-09-20 10:45 | 164 | 2006-03-30 15:55 | 2006-03-30 16:25 | 30min | 0d | Cognizant | 0.33h |
| 166 | 1.8.7.4 | Reporting through KR site | 15min | 2006-09-20 10:45 | 2006-09-20 11:00 | 165 | 2006-03-30 16:25 | 2006-03-30 16:55 | 30min | 0d | Cognizant | 0.25h |
| 167 | 1.8.7.5 | Check: Sign off on Checkout Scripts | 30min | 2006-09-20 11:00 | 2006-09-20 11:30 | 166 |  |  |  | 0d | CBOE | 0.5h |
| 168 | 1.8.8 | CAS Perf Tests (4x6, 8x3, 24x1) | 6h | 2006-09-20 11:30 | 2006-09-21 09:30 | 162 |  |  |  | 0d | Cognizant | 6h |
| 169 | 1.9 | **Install CAS on sbtcas5** | 0.44d | 2006-09-21 09:30 | 2006-09-21 14:00 | 147 |  |  |  | 0d | Cognizant | 8.5h |
| 170 | 1.9.1 | **ITG Checkout Script** | 0.19d | 2006-09-21 09:30 | 2006-09-21 11:00 | 168 |  |  |  | 0d | Cognizant | 3h |
| 171 | 1.2.1 | ITG Checkout script (W_MAIN, ONE_MAIN) | 40min | 2006-09-21 09:30 | 2006-09-21 10:10 |  |  |  |  | 0d | Cognizant | 0.67h |
| 172 | 1.2.5 | Backup and Reporting | 20min | 2006-09-21 10:10 | 2006-09-21 10:30 | 171 |  |  |  | 0d | Cognizant | 0.33h |
| 173 | 1.9.1.3 | Check: Sign off on Checkout Scripts | 30min | 2006-09-21 10:30 | 2006-09-21 11:00 | 172 |  |  |  | 0d | CBOE | 0.5h |
| 174 | 1.9.2 | Test case 2 a ii g-h | 2h | 2006-09-21 11:00 | 2006-09-21 14:00 | 170 |  |  |  | 0d | Cognizant | 2h |
