Schedule from MS Project, 2006-07-17 to 2006-08-02.
Cognizant Technology Solutions

## Calendars

- Standard: Mon-Fri 08:00-12:00, 13:00-17:00; Sat-Sun off.

## Resources

| Resource |
| --- |
| Cognizant |
| 2 |
| CBOE |

## Schedule

| ID | WBS | Task | Duration | Start | Finish | Predecessors | Baseline start | Baseline finish | Baseline duration | Total slack | Constraint | Resources | Work |
| --- | --- | --- | --- | --- | --- | --- | --- | --- | --- | --- | --- | --- | --- |
| 1 | 1 | **Rollout Task** | 12.99d | 2006-07-17 08:00 | 2006-08-02 16:55 |  | 2006-03-14 08:00 | 2006-05-17 13:55 | 46.61d? | 0d |  |  | 292.92h |
| 2 | 1.1 | **Pre-Rollout Verification/Changes** | 0.03d | 2006-07-17 08:00 | 2006-07-17 08:15 |  | 2006-03-14 08:00 | 2006-05-17 13:55 | 46.61d? | 0d |  |  | 0.25h |
| 3 | 1.1.1 | **Make Database Changes** | 0.03d | 2006-07-17 08:00 | 2006-07-17 08:15 |  | 2006-05-10 08:00 | 2006-05-10 10:00 | 0.25d? | 0d |  |  | 0.25h |
| 4 | 1.1.1.1 | BC Specific database changes | 15min | 2006-07-17 08:00 | 2006-07-17 08:15 |  | 2006-05-10 08:00 | 2006-05-10 10:00 | 2h? | 0d | start no earlier than 2006-07-17 08:00 | Cognizant | 0.25h |
| 5 | 1.2 | **Install GC A Side, User Login and Failover Tests** | 1.5d | 2006-07-17 08:15 | 2006-07-18 13:15 | 2 |  |  |  | 0d |  | Cognizant | 36h |
| 6 | 1.2.1 | **Install GC "A" side with new release** | 0.73d | 2006-07-17 08:15 | 2006-07-17 15:05 | 3 |  |  |  | 0d |  | Cognizant | 11.67h |
| 7 | 1.2.1.1 | OT3 GC Installation steps | 1h | 2006-07-17 08:15 | 2006-07-17 09:15 | 4 |  |  |  | 0d | start no earlier than 2006-05-11 08:00 | Cognizant | 1h |
| 8 | 1.2.1.2 | Server Side Full Cleanup | 3h | 2006-07-17 09:15 | 2006-07-17 13:15 | 7 |  |  |  | 0d |  | Cognizant | 3h |
| 9 | 1.2.1.3 | Time server full startup after cleanup (See Server Startup Timing Page) | 1h | 2006-07-17 13:15 | 2006-07-17 14:15 | 8 |  |  |  | 0d |  | Cognizant | 1h |
| 10 | 1.2.1.4 | Backup for server Timings | 20min | 2006-07-17 14:15 | 2006-07-17 14:35 | 9 |  |  |  | 0d |  | Cognizant | 0.33h |
| 11 | 1.2.1.5 | Check: Sign off on Server Timings | 30min | 2006-07-17 14:35 | 2006-07-17 15:05 | 10 |  |  |  | 0d |  | CBOE | 0.5h |
| 12 | 1.2.2 | **ITG Checkout Script** | 0.19d | 2006-07-17 15:05 | 2006-07-17 16:35 | 6 |  |  |  | 0d |  | Cognizant | 3h |
| 13 | 1.2.1 | ITG Checkout script (W_MAIN, ONE_MAIN) | 40min | 2006-07-17 15:05 | 2006-07-17 15:45 | 11 |  |  |  | 0d |  | Cognizant | 0.67h |
| 14 | 1.2.5 | Backup and Reporting | 20min | 2006-07-17 15:45 | 2006-07-17 16:05 | 13 |  |  |  | 0d |  | Cognizant | 0.33h |
| 15 | 1.2.2.3 | Check: Sign off on Checkout Scripts | 30min | 2006-07-17 16:05 | 2006-07-17 16:35 | 14 |  |  |  | 0d |  | CBOE | 0.5h |
| 16 | 1.2.3 | **User Login test** | 0.25d | 2006-07-17 16:35 | 2006-07-18 09:35 | 12 |  |  |  | 0d |  | Cognizant | 4h |
| 17 | 1.2.3.1 | Initial setup like bouncing Global Server and SACAS. | 40min | 2006-07-17 16:35 | 2006-07-18 08:15 | 15 |  |  |  | 0d |  | Cognizant | 0.67h |
| 18 | 1.2.3.2 | Login Test for 1 and 2 Users | 15min | 2006-07-18 08:15 | 2006-07-18 08:30 | 17 |  |  |  | 0d |  | Cognizant | 0.25h |
| 19 | 1.2.3.3 | Product State Update to CLOSE on VLO (visually timing Single class CLOSED with SAGUI) | 15min | 2006-07-18 08:30 | 2006-07-18 08:45 | 18 |  |  |  | 0d |  | Cognizant | 0.25h |
| 20 | 1.2.3.4 | Backup for Login User Test and Product state Update through SAGUI | 20min | 2006-07-18 08:45 | 2006-07-18 09:05 | 19 |  |  |  | 0d |  | Cognizant | 0.33h |
| 21 | 1.2.3.5 | Check: Sign Off on Logs and Results | 30min | 2006-07-18 09:05 | 2006-07-18 09:35 | 20 |  |  |  | 0d |  | CBOE | 0.5h |
| 22 | 1.2.4 | **GC failover to "B" side** | 0.33d | 2006-07-18 09:35 | 2006-07-18 13:15 | 16 |  |  |  | 0d |  | Cognizant | 5.33h |
| 23 | 1.2.4.1 | Initial setup for test Drivers (starting processes on GC Slave.) | 30min | 2006-07-18 09:35 | 2006-07-18 10:05 | 21 |  |  |  | 0d |  | Cognizant | 0.5h |
| 24 | 1.2.4.2 | Quote/Order BC20 Hybrid and ONE_MAIN traffic going before/during/after failover. Should not hang to verify no Global Dependency introduced. Test Execution | 30min | 2006-07-18 10:05 | 2006-07-18 10:35 | 23 |  |  |  | 0d |  | Cognizant | 0.5h |
| 25 | 1.2.4.3 | ITG Checkout script (for W_MAIN and ONE_MAIN Session) | 30min | 2006-07-18 10:35 | 2006-07-18 11:05 | 24 |  |  |  | 0d |  | Cognizant | 0.5h |
| 26 | 1.2.4.4 | Backup for Failover and ITG Checkout | 20min | 2006-07-18 11:05 | 2006-07-18 11:25 | 25 |  |  |  | 0d |  | Cognizant | 0.33h |
| 27 | 1.2.4.5 | Generate Report for Failover Timings for all GC Processes (taking time from log files) | 20min | 2006-07-18 11:25 | 2006-07-18 11:45 | 26 |  |  |  | 0d |  | Cognizant | 0.33h |
| 28 | 1.2.4.6 | Check: Sign Off on Checkout Scripts, Logs and Results | 30min | 2006-07-18 11:45 | 2006-07-18 13:15 | 27 |  |  |  | 0d |  | CBOE | 0.5h |

| ID | WBS | Task | Duration | Start | Finish | Predecessors | Baseline start | Baseline finish | Baseline duration | Total slack | Resources | Work |
| --- | --- | --- | --- | --- | --- | --- | --- | --- | --- | --- | --- | --- |
| 29 | 1.3 | **Install GC B Side , Failover and Perf Tests** | 2.17d | 2006-07-18 13:15 | 2006-07-20 14:35 | 5 | 2006-03-27 14:00 | 2006-03-31 10:15 | 3.66d? | 0d | Cognizant | 48h |
| 30 | 1.3.1 | **Install GC "B" side** | 0.56d | 2006-07-18 13:15 | 2006-07-19 08:45 | 22 | 2006-03-27 14:00 | 2006-03-27 17:00 | 0.38d | 0d | Cognizant | 9h |
| 31 | 1.3.1.1 | Cleanup, createCurrentBusinessDay,starting all GC Processes on B side | 3h | 2006-07-18 13:15 | 2006-07-18 16:15 | 28 | 2006-03-27 14:00 | 2006-03-27 16:00 | 2h | 0d | Cognizant | 3h |
| 32 | 1.3.1.2 | ITG Checkout script (for W_MAIN, ONE_MAIN Session) | 40min | 2006-07-18 16:15 | 2006-07-18 16:55 | 31 | 2006-03-27 16:00 | 2006-03-27 16:40 | 40min | 0d | Cognizant | 0.67h |
| 33 | 1.3.1.3 | Backup for GC Upgrade and ITG Checkout | 20min | 2006-07-18 16:55 | 2006-07-19 08:15 | 32 | 2006-03-27 16:40 | 2006-03-27 17:00 | 20min | 0d | Cognizant | 0.33h |
| 34 | 1.3.1.4 | Check: Sign Off on Checkout Scripts, Logs and Results | 30min | 2006-07-19 08:15 | 2006-07-19 08:45 | 33 |  |  |  | 0d | CBOE | 0.5h |
| 35 | 1.3.2 | Install SAGUI | 2h | 2006-07-19 08:45 | 2006-07-19 10:45 | 30 | 2006-03-28 09:40 | 2006-03-29 11:20 | 1.21d? | 0d |  |  |
| 36 | 1.3.3 | **ITG Checkout Script** | 0.19d | 2006-07-19 10:45 | 2006-07-19 13:15 | 35 |  |  |  | 0d | Cognizant | 3h |
| 37 | 1.2.1 | ITG Checkout script (W_MAIN, ONE_MAIN) | 40min | 2006-07-19 10:45 | 2006-07-19 11:25 | 35 |  |  |  | 0d | Cognizant | 0.67h |
| 38 | 1.2.5 | Backup and Reporting | 20min | 2006-07-19 11:25 | 2006-07-19 11:45 | 37 |  |  |  | 0d | Cognizant | 0.33h |
| 39 | 1.3.3.3 | Check: Sign off on Checkout Scripts | 30min | 2006-07-19 11:45 | 2006-07-19 13:15 | 38 |  |  |  | 0d | CBOE | 0.5h |
| 40 | 1.3.4 | **GC fail over to "A" side** | 0.35d | 2006-07-19 13:15 | 2006-07-19 16:05 | 35 | 2006-03-29 11:20 | 2006-03-30 11:20 | 1d? | 0d | Cognizant | 5.67h |
| 41 | 1.3.4.1 | Initial setup for test Drivers (starting processes on GC Slave.) | 30min | 2006-07-19 13:15 | 2006-07-19 13:45 | 39 | 2006-03-29 11:20 | 2006-03-29 11:50 | 30min | 0d | Cognizant | 0.5h |
| 42 | 1.3.4.2 | Quote/Order BC20 Hybrid and ONE_MAIN traffic going before/during/after failover. Should not hang to verify no Global Dependency introduced. Test Execution | 30min | 2006-07-19 13:45 | 2006-07-19 14:15 | 41 | 2006-03-29 11:50 | 2006-03-29 13:20 | 30min | 0d | Cognizant | 0.5h |
| 43 | 1.3.4.3 | ITG Checkout script (for W_MAIN and ONE_MAIN Session) | 40min | 2006-07-19 14:15 | 2006-07-19 14:55 | 42 | 2006-03-29 13:20 | 2006-03-29 14:00 | 40min | 0d | Cognizant | 0.67h |
| 44 | 1.3.4.4 | Backup for Failover and ITG Checkout | 20min | 2006-07-19 14:55 | 2006-07-19 15:15 | 43 | 2006-03-29 14:00 | 2006-03-29 14:20 | 20min | 0d | Cognizant | 0.33h |
| 45 | 1.3.4.5 | Generate Report for Failover Timings for all GC Processes (taking time from log files) | 20min | 2006-07-19 15:15 | 2006-07-19 15:35 | 44 | 2006-03-29 14:20 | 2006-03-29 14:40 | 20min | 0d | Cognizant | 0.33h |
| 46 | 1.3.4.6 | Check: Sign off on Checkout Scripts | 30min | 2006-07-19 15:35 | 2006-07-19 16:05 | 45 |  |  |  | 0d | CBOE | 0.5h |
| 47 | 1.3.5 | **60 User Login Test** | 0.18d | 2006-07-19 16:05 | 2006-07-20 08:30 | 40 | 2006-03-30 11:20 | 2006-03-30 13:45 | 0.18d | 0d | Cognizant | 2.83h |
| 48 | 1.3.5.1 | bouncing Global Server process, SACAS and all other CASes for 60 User login Test and SAGUI login test | 25min | 2006-07-19 16:05 | 2006-07-19 16:30 | 46 | 2006-03-30 11:20 | 2006-03-30 11:45 | 25min | 0d | Cognizant | 0.42h |
| 49 | 1.3.5.2 | User login test and 60 user login test, test execution | 30min | 2006-07-19 16:30 | 2006-07-19 17:00 | 48 | 2006-03-30 11:45 | 2006-03-30 13:15 | 30min | 0d | Cognizant | 0.5h |
| 50 | 1.3.5.3 | Backup and Reporting | 30min | 2006-07-20 08:00 | 2006-07-20 08:30 | 49 | 2006-03-30 13:15 | 2006-03-30 13:45 | 30min | 0d | Cognizant | 0.5h |
| 51 | 1.3.6 | **Hybrid Performance test Scenario_3 Multi-class Step-up with BOTR/EI/OT/LS/MDHQ/QQ session: W_MAIN** | 0.33d | 2006-07-20 08:30 | 2006-07-20 11:10 | 47 | 2006-03-30 13:45 | 2006-03-30 16:55 | 0.4d | 0d | Cognizant | 5.33h |
| 52 | 1.3.6.1 | BC Cleanup, Initial Driver Setup, | 20min | 2006-07-20 08:30 | 2006-07-20 08:50 | 50 | 2006-03-30 13:45 | 2006-03-30 14:05 | 20min | 0d | Cognizant | 0.33h |
| 53 | 1.3.6.2 | Test Execution | 75min | 2006-07-20 08:50 | 2006-07-20 10:05 | 52 | 2006-03-30 14:05 | 2006-03-30 15:05 | 1h | 0d | Cognizant | 1.25h |
| 54 | 1.3.6.3 | endOfPerformance and Backup | 20min | 2006-07-20 10:05 | 2006-07-20 10:25 | 53 | 2006-03-30 15:55 | 2006-03-30 16:25 | 30min | 0d | Cognizant | 0.33h |
| 55 | 1.3.6.4 | Reporting through KR site | 15min | 2006-07-20 10:25 | 2006-07-20 10:40 | 54 | 2006-03-30 16:25 | 2006-03-30 16:55 | 30min | 0d | Cognizant | 0.25h |
| 56 | 1.3.6.5 | Check: Sign off on Checkout Scripts | 30min | 2006-07-20 10:40 | 2006-07-20 11:10 | 55 |  |  |  | 0d | CBOE | 0.5h |

| ID | WBS | Task | Duration | Start | Finish | Predecessors | Baseline start | Baseline finish | Baseline duration | Total slack | Resources | Work |
| --- | --- | --- | --- | --- | --- | --- | --- | --- | --- | --- | --- | --- |
| 57 | 1.3.7 | **Hybrid Performance test Scenario_3 Multi-class Step-up with NO BOTR session: W_MAIN** | 0.3d | 2006-07-20 11:10 | 2006-07-20 14:35 | 51 | 2006-03-30 16:55 | 2006-03-31 10:15 | 0.29d | 0d | Cognizant | 4.83h |
| 58 | 1.3.7.1 | BC Cleanup, Initial Driver Setup, | 20min | 2006-07-20 11:10 | 2006-07-20 11:30 | 56 | 2006-03-30 16:55 | 2006-03-31 08:15 | 20min | 0d | Cognizant | 0.33h |
| 59 | 1.9.2 | Test Execution for No BOTR | 1h | 2006-07-20 11:30 | 2006-07-20 13:30 | 58 | 2006-03-31 08:15 | 2006-03-31 09:15 | 1h | 0d | Cognizant | 1h |
| 60 | 1.9.3 | endOfPerformance and Backup | 20min | 2006-07-20 13:30 | 2006-07-20 13:50 | 59 | 2006-03-31 09:15 | 2006-03-31 09:45 | 30min | 0d | Cognizant | 0.33h |
| 61 | 1.9.4 | Reporting through KR site | 15min | 2006-07-20 13:50 | 2006-07-20 14:05 | 60 | 2006-03-31 09:45 | 2006-03-31 10:15 | 30min | 0d | Cognizant | 0.25h |
| 62 | 1.3.7.5 | Check: Sign off on Checkout Scripts | 30min | 2006-07-20 14:05 | 2006-07-20 14:35 | 61 |  |  |  | 0d | CBOE | 0.5h |
| 63 | 1.4 | **Install Hybrid BC A Side** | 2.88d | 2006-07-20 14:35 | 2006-07-25 13:35 | 29 | 2006-03-31 10:15 | 2006-04-04 13:20 | 2.26d? | 0d | Cognizant | 66.25h |
| 64 | 1.10 | **Install Hybrid BC (A)** | 0.24d | 2006-07-20 14:35 | 2006-07-20 16:30 | 57 | 2006-03-31 10:15 | 2006-03-31 13:15 | 0.25d | 0d | Cognizant | 3.08h |
| 65 | 1.10.1 | Configuration and starting processes | 45min | 2006-07-20 14:35 | 2006-07-20 15:20 | 62 | 2006-03-31 10:15 | 2006-03-31 11:15 | 1h | 0d |  |  |
| 66 | 1.10.2 | ITG Checkout script (W_MAIN Session) | 20min | 2006-07-20 15:20 | 2006-07-20 15:40 | 65 | 2006-03-31 11:15 | 2006-03-31 11:55 | 40min | 0d | Cognizant | 0.33h |
| 67 | 1.10.3 | Backup and Reporting | 20min | 2006-07-20 15:40 | 2006-07-20 16:00 | 66 | 2006-03-31 11:55 | 2006-03-31 13:15 | 20min | 0d | Cognizant | 0.33h |
| 68 | 1.4.1.4 | Check: Sign off on Checkout Scripts | 30min | 2006-07-20 16:00 | 2006-07-20 16:30 | 67 |  |  |  | 0d | CBOE | 0.5h |
| 69 | 1.4.2 | FIX Strategy Order Test | 2h | 2006-07-20 16:30 | 2006-07-21 09:30 | 64 |  |  |  | 0d | Cognizant | 2h |
| 70 | 1.12 | **Multi-class Quote step-up test with NO BOTR and Single User Logout** | 0.27d | 2006-07-21 09:30 | 2006-07-21 11:40 | 69 | 2006-04-03 10:15 | 2006-04-03 14:25 | 0.4d | 0d | Cognizant | 4.33h |
| 71 | 1.12.1 | BC Cleanup, Initial Driver Setup, | 20min | 2006-07-21 09:30 | 2006-07-21 09:50 | 69 | 2006-04-03 10:15 | 2006-04-03 10:35 | 20min | 0d | Cognizant | 0.33h |
| 72 | 1.12.2 | Test Execution for No BOTR with single user logout | 45min | 2006-07-21 09:50 | 2006-07-21 10:35 | 71 | 2006-04-03 10:35 | 2006-04-03 11:35 | 1h | 0d | Cognizant | 0.75h |
| 73 | 1.12.4 | endOfPerformance and Backup | 20min | 2006-07-21 10:35 | 2006-07-21 10:55 | 72 | 2006-04-03 13:25 | 2006-04-03 13:55 | 30min | 0d | Cognizant | 0.33h |
| 74 | 1.12.5 | Reporting through KR site | 15min | 2006-07-21 10:55 | 2006-07-21 11:10 | 73 | 2006-04-03 13:55 | 2006-04-03 14:25 | 30min | 0d | Cognizant | 0.25h |
| 75 | 1.4.3.5 | Check: Sign off on Checkout Scripts | 30min | 2006-07-21 11:10 | 2006-07-21 11:40 | 74 |  |  |  | 0d | CBOE | 0.5h |
| 76 | 1.4.4 | **Hybrid Performance test Scenario_3 Multi-class Step-up with BOTR/EI/OT/LS/MDHQ/QQ session: W_MAIN** | 0.33d | 2006-07-21 11:40 | 2006-07-21 15:20 | 70 | 2006-03-30 13:45 | 2006-03-30 16:55 | 0.4d | 0d | Cognizant | 5.33h |
| 77 | 1.4.4.1 | BC Cleanup, Initial Driver Setup, | 20min | 2006-07-21 11:40 | 2006-07-21 12:00 | 75 | 2006-03-30 13:45 | 2006-03-30 14:05 | 20min | 0d | Cognizant | 0.33h |
| 78 | 1.4.4.2 | Test Execution | 75min | 2006-07-21 13:00 | 2006-07-21 14:15 | 77 | 2006-03-30 14:05 | 2006-03-30 15:05 | 1h | 0d | Cognizant | 1.25h |
| 79 | 1.4.4.3 | endOfPerformance and Backup | 20min | 2006-07-21 14:15 | 2006-07-21 14:35 | 78 | 2006-03-30 15:55 | 2006-03-30 16:25 | 30min | 0d | Cognizant | 0.33h |
| 80 | 1.4.4.4 | Reporting through KR site | 15min | 2006-07-21 14:35 | 2006-07-21 14:50 | 79 | 2006-03-30 16:25 | 2006-03-30 16:55 | 30min | 0d | Cognizant | 0.25h |
| 81 | 1.4.4.5 | Check: Sign off on Checkout Scripts | 30min | 2006-07-21 14:50 | 2006-07-21 15:20 | 80 |  |  |  | 0d | CBOE | 0.5h |

| ID | WBS | Task | Duration | Start | Finish | Predecessors | Baseline start | Baseline finish | Baseline duration | Total slack | Resources | Work |
| --- | --- | --- | --- | --- | --- | --- | --- | --- | --- | --- | --- | --- |
| 82 | 1.13 | **Single-class Quote step-up test with BOTR** | 0.3d | 2006-07-21 15:20 | 2006-07-24 08:45 | 76 | 2006-04-03 14:25 | 2006-04-04 08:35 | 0.4d | 0d | Cognizant | 4.83h |
| 83 | 1.13.1 | BC Cleanup, Initial Driver Setup, | 20min | 2006-07-21 15:20 | 2006-07-21 15:40 | 75 | 2006-04-03 14:25 | 2006-04-03 14:45 | 20min | 0d | Cognizant | 0.33h |
| 84 | 1.13.2 | Test Execution | 1h | 2006-07-21 15:40 | 2006-07-21 16:40 | 83 | 2006-04-03 14:45 | 2006-04-03 15:45 | 1h | 0d | Cognizant | 1h |
| 85 | 1.13.4 | endOfPerformance and Backup | 20min | 2006-07-21 16:40 | 2006-07-21 17:00 | 84 | 2006-04-03 16:35 | 2006-04-04 08:05 | 30min | 0d | Cognizant | 0.33h |
| 86 | 1.13.5 | Reporting through KR site | 15min | 2006-07-24 08:00 | 2006-07-24 08:15 | 85 | 2006-04-04 08:05 | 2006-04-04 08:35 | 30min | 0d | Cognizant | 0.25h |
| 87 | 1.4.5.5 | Check: Sign off on Checkout Scripts | 30min | 2006-07-24 08:15 | 2006-07-24 08:45 | 86 |  |  |  | 0d | CBOE | 0.5h |
| 88 | 1.14 | **Multi-class Order step-up test** | 0.25d | 2006-07-24 08:45 | 2006-07-24 10:45 | 82 | 2006-04-04 08:35 | 2006-04-04 10:05 | 0.19d | 0d | Cognizant | 4h |
| 89 | 1.14.1 | BC Cleanup, Initial Driver Setup, | 20min | 2006-07-24 08:45 | 2006-07-24 09:05 | 87 | 2006-04-04 08:35 | 2006-04-04 08:55 | 20min | 0d | Cognizant | 0.33h |
| 90 | 1.14.2 | Test Execution for No BOTR | 40min | 2006-07-24 09:05 | 2006-07-24 09:45 | 89 | 2006-04-04 08:55 | 2006-04-04 09:35 | 40min | 0d | Cognizant | 0.67h |
| 91 | 1.14.3 | endOfPerformance and Backup | 20min | 2006-07-24 09:45 | 2006-07-24 10:05 | 90 | 2006-04-04 09:35 | 2006-04-04 09:55 | 20min | 0d | Cognizant | 0.33h |
| 92 | 1.14.4 | Reporting through KR site | 10min | 2006-07-24 10:05 | 2006-07-24 10:15 | 91 | 2006-04-04 09:55 | 2006-04-04 10:05 | 10min | 0d | Cognizant | 0.17h |
| 93 | 1.4.6.5 | Check: Sign off on Checkout Scripts | 30min | 2006-07-24 10:15 | 2006-07-24 10:45 | 92 |  |  |  | 0d | CBOE | 0.5h |
| 94 | 1.4.7 | **Hybrid test scenario 5 (Product State Change Test)** | 0.23d | 2006-07-24 10:45 | 2006-07-24 13:35 | 88 | 2006-03-21 14:50 | 2006-03-21 16:20 | 0.19d | 0d | Cognizant | 3.67h |
| 95 | 1.4.7.1 | BC Cleanup, Initial Driver Setup, | 20min | 2006-07-24 10:45 | 2006-07-24 11:05 | 93 | 2006-03-21 14:50 | 2006-03-21 15:10 | 20min | 0d | Cognizant | 0.33h |
| 96 | 1.4.7.2 | Test Execution - Global Server Bounce | 40min | 2006-07-24 11:05 | 2006-07-24 11:45 | 95 | 2006-03-21 15:10 | 2006-03-21 15:50 | 40min | 0d | Cognizant | 0.67h |
| 97 | 1.4.7.3 | Monitor and Backup logs | 20min | 2006-07-24 11:45 | 2006-07-24 13:05 | 96 | 2006-03-21 15:50 | 2006-03-21 16:10 | 20min | 0d | Cognizant | 0.33h |
| 98 | 1.4.7.4 | Reporting through KR site | 10min | 2006-07-24 13:05 | 2006-07-24 13:15 | 97 | 2006-03-21 16:10 | 2006-03-21 16:20 | 10min | 0d | Cognizant | 0.17h |
| 99 | 1.4.7.5 | Check: Sign Off on Logs and Results | 20min | 2006-07-24 13:15 | 2006-07-24 13:35 | 98 | 2006-03-21 16:20 | 2006-03-21 16:20 | 0h | 0d | CBOE | 0.33h |
| 100 | 1.4.8 | **OT3 Compass Tests** | 0.25d | 2006-07-24 13:35 | 2006-07-24 15:35 | 94 |  |  |  | 0d | Cognizant | 4h |
| 101 | 1.4.8.1 | Compass Drivers 1Driver per connection with 50 ops | 2h | 2006-07-24 13:35 | 2006-07-24 15:35 | 99 |  |  |  | 0d | Cognizant | 2h |
| 102 | 1.4.9 | **OT3 Opening Test - NonParallel** | 0.5d | 2006-07-24 15:35 | 2006-07-25 10:35 | 100 |  |  |  | 0d | Cognizant | 8h |
| 103 | 1.4.9.1 | Opening Test with block size=1, Parallel =false | 2h | 2006-07-24 15:35 | 2006-07-25 08:35 | 101 |  |  |  | 0d | Cognizant | 2h |
| 104 | 1.4.9.2 | Opening Test with block size=20, Parallel =false | 2h | 2006-07-25 08:35 | 2006-07-25 10:35 | 103 |  |  |  | 0d | Cognizant | 2h |
| 105 | 1.4.10 | **OT3 Opening Test - Parallel** | 0.25d | 2006-07-25 10:35 | 2006-07-25 13:35 | 102 |  |  |  | 0d | Cognizant | 4h |
| 106 | 1.4.10.1 | Opening Test with block size=20, Parallel =true | 2h | 2006-07-25 10:35 | 2006-07-25 13:35 | 104 |  |  |  | 0d | Cognizant | 2h |

| ID | WBS | Task | Duration | Start | Finish | Predecessors | Baseline start | Baseline finish | Baseline duration | Total slack | Resources | Work |
| --- | --- | --- | --- | --- | --- | --- | --- | --- | --- | --- | --- | --- |
| 107 | 1.15 | **Hybrid BC failover (new release to old release)** | 0.28d | 2006-07-25 13:35 | 2006-07-25 15:50 | 105 | 2006-04-04 10:05 | 2006-04-04 13:20 | 0.28d | 0d | Cognizant | 4.5h |
| 108 | 1.15.1 | Initial setup for test Drivers (starting processes on GC Slave.) | 25min | 2006-07-25 13:35 | 2006-07-25 14:00 | 93 | 2006-04-04 10:05 | 2006-04-04 10:30 | 25min | 0d | Cognizant | 0.42h |
| 109 | 1.15.2 | Quote/Order BC20 Hybrid traffic going before/during/after failover. Test Execution | 20min | 2006-07-25 14:00 | 2006-07-25 14:20 | 108 | 2006-04-04 10:30 | 2006-04-04 11:00 | 30min | 0d | Cognizant | 0.33h |
| 110 | 1.15.3 | ITG Checkout script (for W_MAIN Session) | 20min | 2006-07-25 14:20 | 2006-07-25 14:40 | 109 | 2006-04-04 11:00 | 2006-04-04 11:40 | 40min | 0d | Cognizant | 0.33h |
| 111 | 1.15.4 | Backup for Failover and ITG Checkout | 20min | 2006-07-25 14:40 | 2006-07-25 15:00 | 110 | 2006-04-04 11:40 | 2006-04-04 12:00 | 20min | 0d | Cognizant | 0.33h |
| 112 | 1.15.5 | Generate Report for Failover Timings for all BC Processes (taking time from log files) | 20min | 2006-07-25 15:00 | 2006-07-25 15:20 | 111 | 2006-04-04 13:00 | 2006-04-04 13:20 | 20min | 0d | Cognizant | 0.33h |
| 113 | 1.5.6 | Check: Sign off on Checkout Scripts | 30min | 2006-07-25 15:20 | 2006-07-25 15:50 | 112 |  |  |  | 0d | CBOE | 0.5h |
| 114 | 1.6 | **Install Hybrid BC B Side** | 1.41d | 2006-07-25 15:50 | 2006-07-27 10:05 | 63 | 2006-04-03 10:15 | 2006-04-04 15:20 | 1.51d | 0d | Cognizant | 33.75h |
| 115 | 1.16 | **Install Hybrid BC "B" side** | 0.24d | 2006-07-25 15:50 | 2006-07-26 08:45 | 107 | 2006-04-03 10:15 | 2006-04-03 13:15 | 0.25d | 0d | Cognizant | 3.83h |
| 116 | 1.16.1 | Configuration and starting processes | 45min | 2006-07-25 15:50 | 2006-07-25 16:35 | 113 | 2006-04-03 10:15 | 2006-04-03 11:15 | 1h | 0d | Cognizant | 0.75h |
| 117 | 1.16.2 | ITG Checkout script (W_MAIN Session) | 20min | 2006-07-25 16:35 | 2006-07-25 16:55 | 116 | 2006-04-03 11:15 | 2006-04-03 11:55 | 40min | 0d | Cognizant | 0.33h |
| 118 | 1.16.3 | Backup and Reporting | 20min | 2006-07-25 16:55 | 2006-07-26 08:15 | 117 | 2006-04-03 11:55 | 2006-04-03 13:15 | 20min | 0d | Cognizant | 0.33h |
| 119 | 1.6.1.4 | Check: Sign off on Checkout Scripts | 30min | 2006-07-26 08:15 | 2006-07-26 08:45 | 118 |  |  |  | 0d | CBOE | 0.5h |
| 120 | 1.17 | **Hybrid BC failover (new release to new release)** | 0.28d | 2006-07-26 08:45 | 2006-07-26 11:00 | 115 | 2006-04-03 13:15 | 2006-04-03 15:30 | 0.28d | 0d | Cognizant | 4.5h |
| 121 | 1.17.1 | Initial setup for test Drivers (starting processes on GC Slave.) | 25min | 2006-07-26 08:45 | 2006-07-26 09:10 | 119 | 2006-04-03 13:15 | 2006-04-03 13:40 | 25min | 0d | Cognizant | 0.42h |
| 122 | 1.17.2 | Quote/Order BC20 Hybrid traffic going before/during/after failover. Test Execution | 20min | 2006-07-26 09:10 | 2006-07-26 09:30 | 121 | 2006-04-03 13:40 | 2006-04-03 14:10 | 30min | 0d | Cognizant | 0.33h |
| 123 | 1.17.3 | ITG Checkout script (for W_MAIN Session) | 20min | 2006-07-26 09:30 | 2006-07-26 09:50 | 122 | 2006-04-03 14:10 | 2006-04-03 14:50 | 40min | 0d | Cognizant | 0.33h |
| 124 | 1.17.4 | Backup for Failover and ITG Checkout | 20min | 2006-07-26 09:50 | 2006-07-26 10:10 | 123 | 2006-04-03 14:50 | 2006-04-03 15:10 | 20min | 0d | Cognizant | 0.33h |
| 125 | 1.17.5 | Generate Report for Failover Timings | 20min | 2006-07-26 10:10 | 2006-07-26 10:30 | 124 | 2006-04-03 15:10 | 2006-04-03 15:30 | 20min | 0d | Cognizant | 0.33h |
| 126 | 1.6.2.6 | Check: Sign off on Checkout Scripts | 30min | 2006-07-26 10:30 | 2006-07-26 11:00 | 125 |  |  |  | 0d | CBOE | 0.5h |
| 127 | 1.6.3 | **Hybrid Performance test Scenario_3 Multi-class Step-up with BOTR/EI/OT/LS/MDHQ/QQ session: W_MAIN** | 0.33d | 2006-07-26 11:00 | 2006-07-26 14:40 | 120 | 2006-03-30 13:45 | 2006-03-30 16:55 | 0.4d | 0d | Cognizant | 5.33h |
| 128 | 1.6.3.1 | BC Cleanup, Initial Driver Setup, | 20min | 2006-07-26 11:00 | 2006-07-26 11:20 | 126 | 2006-03-30 13:45 | 2006-03-30 14:05 | 20min | 0d | Cognizant | 0.33h |
| 129 | 1.6.3.2 | Test Execution | 75min | 2006-07-26 11:20 | 2006-07-26 13:35 | 128 | 2006-03-30 14:05 | 2006-03-30 15:05 | 1h | 0d | Cognizant | 1.25h |
| 130 | 1.6.3.3 | endOfPerformance and Backup | 20min | 2006-07-26 13:35 | 2006-07-26 13:55 | 129 | 2006-03-30 15:55 | 2006-03-30 16:25 | 30min | 0d | Cognizant | 0.33h |
| 131 | 1.6.3.4 | Reporting through KR site | 15min | 2006-07-26 13:55 | 2006-07-26 14:10 | 130 | 2006-03-30 16:25 | 2006-03-30 16:55 | 30min | 0d | Cognizant | 0.25h |
| 132 | 1.6.3.5 | Check: Sign off on Checkout Scripts | 30min | 2006-07-26 14:10 | 2006-07-26 14:40 | 131 |  |  |  | 0d | CBOE | 0.5h |

| ID | WBS | Task | Duration | Start | Finish | Predecessors | Baseline start | Baseline finish | Baseline duration | Total slack | Resources | Work |
| --- | --- | --- | --- | --- | --- | --- | --- | --- | --- | --- | --- | --- |
| 133 | 1.13 | **Single-class Quote step-up test with BOTR** | 0.3d | 2006-07-26 14:40 | 2006-07-27 08:05 | 127 | 2006-04-03 14:25 | 2006-04-04 08:35 | 0.4d | 0d | Cognizant | 4.83h |
| 134 | 1.13.1 | BC Cleanup, Initial Driver Setup, | 20min | 2006-07-26 14:40 | 2006-07-26 15:00 | 132 | 2006-04-03 14:25 | 2006-04-03 14:45 | 20min | 0d | Cognizant | 0.33h |
| 135 | 1.13.2 | Test Execution | 1h | 2006-07-26 15:00 | 2006-07-26 16:00 | 134 | 2006-04-03 14:45 | 2006-04-03 15:45 | 1h | 0d | Cognizant | 1h |
| 136 | 1.13.4 | endOfPerformance and Backup | 20min | 2006-07-26 16:00 | 2006-07-26 16:20 | 135 | 2006-04-03 16:35 | 2006-04-04 08:05 | 30min | 0d | Cognizant | 0.33h |
| 137 | 1.13.5 | Reporting through KR site | 15min | 2006-07-26 16:20 | 2006-07-26 16:35 | 136 | 2006-04-04 08:05 | 2006-04-04 08:35 | 30min | 0d | Cognizant | 0.25h |
| 138 | 1.6.4.5 | Check: Sign off on Checkout Scripts | 30min | 2006-07-26 16:35 | 2006-07-27 08:05 | 137 |  |  |  | 0d | CBOE | 0.5h |
| 139 | 1.14 | **Multi-class Order step-up test** | 0.25d | 2006-07-27 08:05 | 2006-07-27 10:05 | 133 | 2006-04-04 08:35 | 2006-04-04 10:05 | 0.19d | 0d | Cognizant | 4h |
| 140 | 1.14.1 | BC Cleanup, Initial Driver Setup, | 20min | 2006-07-27 08:05 | 2006-07-27 08:25 | 138 | 2006-04-04 08:35 | 2006-04-04 08:55 | 20min | 0d | Cognizant | 0.33h |
| 141 | 1.14.2 | Test Execution for No BOTR | 40min | 2006-07-27 08:25 | 2006-07-27 09:05 | 140 | 2006-04-04 08:55 | 2006-04-04 09:35 | 40min | 0d | Cognizant | 0.67h |
| 142 | 1.14.3 | endOfPerformance and Backup | 20min | 2006-07-27 09:05 | 2006-07-27 09:25 | 141 | 2006-04-04 09:35 | 2006-04-04 09:55 | 20min | 0d | Cognizant | 0.33h |
| 143 | 1.14.4 | Reporting through KR site | 10min | 2006-07-27 09:25 | 2006-07-27 09:35 | 142 | 2006-04-04 09:55 | 2006-04-04 10:05 | 10min | 0d | Cognizant | 0.17h |
| 144 | 1.6.5.5 | Check: Sign off on Checkout Scripts | 30min | 2006-07-27 09:35 | 2006-07-27 10:05 | 143 |  |  |  | 0d | CBOE | 0.5h |
| 145 | 1.6 | **Install & perform tests on ONE_MAIN BC A Side** | 1.06d | 2006-07-27 10:05 | 2006-07-28 10:35 | 114 | 2006-03-24 15:35 | 2006-03-27 16:20 | 1.09d | 0d | Cognizant | 25.5h |
| 146 | 1.26 | **Install ONE_MAIN BC (A)** | 0.22d | 2006-07-27 10:05 | 2006-07-27 11:50 | 139 | 2006-03-24 15:35 | 2006-03-27 08:35 | 0.25d | 0d | Cognizant | 3.5h |
| 147 | 1.26.1 | Configuration and starting processes | 45min | 2006-07-27 10:05 | 2006-07-27 10:50 | 144 | 2006-03-24 15:35 | 2006-03-24 16:35 | 1h | 0d | Cognizant | 0.75h |
| 148 | 1.26.2 | ITG Checkout script (ONE_MAIN Session) | 20min | 2006-07-27 10:50 | 2006-07-27 11:10 | 147 | 2006-03-24 16:35 | 2006-03-27 08:15 | 40min | 0d | Cognizant | 0.33h |
| 149 | 1.26.3 | Backup and Reporting | 20min | 2006-07-27 11:10 | 2006-07-27 11:30 | 148 | 2006-03-27 08:15 | 2006-03-27 08:35 | 20min | 0d | Cognizant | 0.33h |
| 150 | 1.7.1.4 | Check: Sign Off on Checkout Scripts, Logs and Results | 20min | 2006-07-27 11:30 | 2006-07-27 11:50 | 149 | 2006-03-27 08:35 | 2006-03-27 08:35 | 0h | 0d | CBOE | 0.33h |
| 151 | 1.27 | **Multi-class Order step-up test for ONE_MAIN [Scenario 2]** | 0.27d | 2006-07-27 11:50 | 2006-07-27 15:00 | 146 | 2006-03-27 08:35 | 2006-03-27 10:25 | 0.23d | 0d | Cognizant | 4.33h |
| 152 | 1.27.1 | BC Cleanup, Initial Driver Setup, | 20min | 2006-07-27 11:50 | 2006-07-27 13:10 | 150 | 2006-03-27 08:35 | 2006-03-27 08:55 | 20min | 0d | Cognizant | 0.33h |
| 153 | 1.27.2 | Test Execution for No BOTR | 1h | 2006-07-27 13:10 | 2006-07-27 14:10 | 152 | 2006-03-27 08:55 | 2006-03-27 09:55 | 1h | 0d | Cognizant | 1h |
| 154 | 1.27.3 | endOfPerformance and Backup | 15min | 2006-07-27 14:10 | 2006-07-27 14:25 | 153 | 2006-03-27 09:55 | 2006-03-27 10:10 | 15min | 0d | Cognizant | 0.25h |
| 155 | 1.27.4 | Reporting through KR site | 15min | 2006-07-27 14:25 | 2006-07-27 14:40 | 154 | 2006-03-27 10:10 | 2006-03-27 10:25 | 15min | 0d | Cognizant | 0.25h |
| 156 | 1.7.2.5 | Check: Sign Off on Logs and Results | 20min | 2006-07-27 14:40 | 2006-07-27 15:00 | 155 | 2006-03-27 10:25 | 2006-03-27 10:25 | 0h | 0d | CBOE | 0.33h |

| ID | WBS | Task | Duration | Start | Finish | Predecessors | Baseline start | Baseline finish | Baseline duration | Total slack | Resources | Work |
| --- | --- | --- | --- | --- | --- | --- | --- | --- | --- | --- | --- | --- |
| 157 | 1.28 | **Multi-class Quote step-up test [Scenario 1]** | 0.28d | 2006-07-27 15:00 | 2006-07-28 08:15 | 151 | 2006-03-27 10:25 | 2006-03-27 13:35 | 0.27d | 0d | Cognizant | 4.5h |
| 158 | 1.28.1 | BC Cleanup, Initial Driver Setup, | 20min | 2006-07-27 15:00 | 2006-07-27 15:20 | 156 | 2006-03-27 10:25 | 2006-03-27 10:45 | 20min | 0d | Cognizant | 0.33h |
| 159 | 1.28.2 | Test Execution for No BOTR | 1h | 2006-07-27 15:20 | 2006-07-27 16:20 | 158 | 2006-03-27 10:45 | 2006-03-27 11:45 | 1h | 0d | Cognizant | 1h |
| 160 | 1.28.3 | endOfPerformance and Backup | 20min | 2006-07-27 16:20 | 2006-07-27 16:40 | 159 | 2006-03-27 11:45 | 2006-03-27 13:15 | 30min | 0d | Cognizant | 0.33h |
| 161 | 1.28.4 | Reporting through KR site | 15min | 2006-07-27 16:40 | 2006-07-27 16:55 | 160 | 2006-03-27 13:15 | 2006-03-27 13:35 | 20min | 0d | Cognizant | 0.25h |
| 162 | 1.7.3.5 | Check: Sign Off on Logs and Results | 20min | 2006-07-27 16:55 | 2006-07-28 08:15 | 161 | 2006-03-27 13:35 | 2006-03-27 13:35 | 0h | 0d | CBOE | 0.33h |
| 163 | 1.30 | **Failover ONE_MAIN BC (New to Old)** | 0.29d | 2006-07-28 08:15 | 2006-07-28 10:35 | 157 | 2006-03-27 13:35 | 2006-03-27 16:20 | 0.34d | 0d | Cognizant | 4.67h |
| 164 | 1.7.4.1 | Cleanup | 20min | 2006-07-28 08:15 | 2006-07-28 08:35 | 162 | 2006-03-27 13:35 | 2006-03-27 13:55 | 20min | 0d | Cognizant | 0.33h |
| 165 | 1.30.1 | Initial setup for test Drivers (starting processes on BC Slave.) | 20min | 2006-07-28 08:35 | 2006-07-28 08:55 | 164 | 2006-03-27 13:55 | 2006-03-27 14:20 | 25min | 0d | Cognizant | 0.33h |
| 166 | 1.30.2 | Quote/Order ONE_MAIN traffic going before/during/after failover. Test Execution | 20min | 2006-07-28 08:55 | 2006-07-28 09:15 | 165 | 2006-03-27 14:20 | 2006-03-27 14:50 | 30min | 0d | Cognizant | 0.33h |
| 167 | 1.30.3 | ITG Checkout script (for ONE_MAIN Session) | 20min | 2006-07-28 09:15 | 2006-07-28 09:35 | 166 | 2006-03-27 14:50 | 2006-03-27 15:30 | 40min | 0d | Cognizant | 0.33h |
| 168 | 1.30.4 | Backup for Failover and ITG Checkout | 20min | 2006-07-28 09:35 | 2006-07-28 09:55 | 167 | 2006-03-27 15:30 | 2006-03-27 15:50 | 20min | 0d | Cognizant | 0.33h |
| 169 | 1.30.5 | Generate Report for Failover Timings for all BC Processes (taking time from log files) | 20min | 2006-07-28 09:55 | 2006-07-28 10:15 | 168 | 2006-03-27 15:50 | 2006-03-27 16:20 | 30min | 0d | Cognizant | 0.33h |
| 170 | 1.7.4.7 | Check: Sign Off on Checkout Scripts,Logs and Results | 20min | 2006-07-28 10:15 | 2006-07-28 10:35 | 169 | 2006-03-27 16:20 | 2006-03-27 16:20 | 0h | 0d | CBOE | 0.33h |
| 171 | 1.11 | **4 Hour Endurance Test** | 0.81d | 2006-07-28 10:35 | 2006-07-31 09:05 | 163 | 2006-03-31 13:15 | 2006-04-03 10:15 | 0.75d | 0d | Cognizant | 13h |
| 172 | 1.11.1 | Cleanup for W_MAIN and ONE_MAIN BC and Driver setup and CAS Bounce | 1h | 2006-07-28 10:35 | 2006-07-28 11:35 | 170 | 2006-03-31 13:15 | 2006-03-31 14:15 | 1h | 0d | Cognizant | 1h |
| 173 | 1.11.2 | 4 hour Sanity Check | 4h | 2006-07-28 11:35 | 2006-07-28 16:35 | 172 | 2006-03-31 14:15 | 2006-04-03 09:15 | 4h | 0d | Cognizant | 4h |
| 174 | 1.11.3 | endOfPerformance and Backup and Reporting | 1h | 2006-07-28 16:35 | 2006-07-31 08:35 | 173 | 2006-04-03 09:15 | 2006-04-03 10:15 | 1h | 0d | Cognizant | 1h |
| 175 | 1.8.4 | Check: Sign off on Checkout Scripts | 30min | 2006-07-31 08:35 | 2006-07-31 09:05 | 174 |  |  |  | 0d | CBOE | 0.5h |
| 176 | 1.7 | **Install & perform tests on ONE_MAIN BC B Side** | 0.56d | 2006-07-31 09:05 | 2006-07-31 14:35 | 145 | 2006-03-27 16:20 | 2006-03-28 13:05 | 0.59d | 0d | Cognizant | 13.5h |
| 177 | 1.31 | **Install ONE_MAIN BC (B)** | 0.25d | 2006-07-31 09:05 | 2006-07-31 11:05 | 171 | 2006-03-27 16:20 | 2006-03-28 09:20 | 0.25d | 0d | Cognizant | 4h |
| 178 | 1.31.1 | Configuration and starting processes | 1h | 2006-07-31 09:05 | 2006-07-31 10:05 | 175 | 2006-03-27 16:20 | 2006-03-28 08:20 | 1h | 0d | Cognizant | 1h |
| 179 | 1.31.2 | ITG Checkout script (ONE_MAIN Session) | 20min | 2006-07-31 10:05 | 2006-07-31 10:25 | 178 | 2006-03-28 08:20 | 2006-03-28 09:00 | 40min | 0d | Cognizant | 0.33h |
| 180 | 1.31.3 | Backup and Reporting | 20min | 2006-07-31 10:25 | 2006-07-31 10:45 | 179 | 2006-03-28 09:00 | 2006-03-28 09:20 | 20min | 0d | Cognizant | 0.33h |
| 181 | 1.9.1.4 | Check: Sign Off on Checkout Scripts, Logs and Results | 20min | 2006-07-31 10:45 | 2006-07-31 11:05 | 180 | 2006-03-28 09:20 | 2006-03-28 09:20 | 0h | 0d | CBOE | 0.33h |

| ID | WBS | Task | Duration | Start | Finish | Predecessors | Baseline start | Baseline finish | Baseline duration | Total slack | Free slack | Resources | Work |
| --- | --- | --- | --- | --- | --- | --- | --- | --- | --- | --- | --- | --- | --- |
| 182 | 1.9.2 | **Failover ONE_MAIN BC (New to New)** | 0.31d | 2006-07-31 11:05 | 2006-07-31 14:35 | 177 | 2006-03-28 09:20 | 2006-03-28 13:05 | 0.34d | 0d |  | Cognizant | 5h |
| 183 | 1.9.2.1 | Cleanup | 20min | 2006-07-31 11:05 | 2006-07-31 11:25 | 181 | 2006-03-28 09:20 | 2006-03-28 09:40 | 20min | 0d |  | Cognizant | 0.33h |
| 184 | 1.9.2.2 | Initial setup for test Drivers (starting processes on BC Slave.) | 20min | 2006-07-31 11:25 | 2006-07-31 11:45 | 183 | 2006-03-28 09:40 | 2006-03-28 10:05 | 25min | 0d |  | Cognizant | 0.33h |
| 185 | 1.9.2.3 | Quote/Order ONE_MAIN traffic going before/during/after failover. Test Execution | 20min | 2006-07-31 11:45 | 2006-07-31 13:05 | 184 | 2006-03-28 10:05 | 2006-03-28 10:35 | 30min | 0d |  | Cognizant | 0.33h |
| 186 | 1.9.2.4 | ITG Checkout script (ONE_MAIN Session) | 20min | 2006-07-31 13:05 | 2006-07-31 13:25 | 185 | 2006-03-28 10:35 | 2006-03-28 11:15 | 40min | 0d |  | Cognizant | 0.33h |
| 187 | 1.9.2.5 | Backup for Failover and ITG Checkout | 20min | 2006-07-31 13:25 | 2006-07-31 13:45 | 186 | 2006-03-28 11:15 | 2006-03-28 11:35 | 20min | 0d |  | Cognizant | 0.33h |
| 188 | 1.9.2.6 | Generate Report for Failover Timings for all BC Processes (taking time from log files) | 30min | 2006-07-31 13:45 | 2006-07-31 14:15 | 187 | 2006-03-28 11:35 | 2006-03-28 13:05 | 30min | 0d |  | Cognizant | 0.5h |
| 189 | 1.9.2.7 | Check: Sign Off on Checkout Scripts,Logs and Results | 20min | 2006-07-31 14:15 | 2006-07-31 14:35 | 188 | 2006-03-28 13:05 | 2006-03-28 13:05 | 0h | 0d |  | CBOE | 0.33h |
| 190 | 1.10 | **Install A Side FE, Failover and Perf test** | 0.56d | 2006-07-31 14:35 | 2006-08-01 10:05 | 176 | 2006-04-10 08:10 | 2006-04-10 16:15 | 0.89d | 0d |  | Cognizant | 17h |
| 191 | 1.32 | **Install 1 FE** | 0.23d | 2006-07-31 14:35 | 2006-07-31 16:25 | 182 | 2006-04-10 08:10 | 2006-04-10 10:10 | 0.25d | 0d |  | Cognizant | 3.17h |
| 192 | 1.32.1 | Configuration and starting processes | 30min | 2006-07-31 14:35 | 2006-07-31 15:05 | 189 | 2006-04-10 08:10 | 2006-04-10 09:10 | 1h | 0d |  |  |  |
| 193 | 1.32.2 | ITG Checkout script (W_MAIN and ONE_MAIN Session) | 40min | 2006-07-31 15:05 | 2006-07-31 15:45 | 192 | 2006-04-10 09:10 | 2006-04-10 09:50 | 40min | 0d |  | Cognizant | 0.67h |
| 194 | 1.32.3 | Backup and Reporting | 20min | 2006-07-31 15:45 | 2006-07-31 16:05 | 193 | 2006-04-10 09:50 | 2006-04-10 10:10 | 20min | 0d |  | Cognizant | 0.33h |
| 195 | 1.10.1.4 | Check: Sign Off on Checkout Scripts,Logs and Results | 20min | 2006-07-31 16:05 | 2006-07-31 16:25 | 194 | 2006-03-28 13:05 | 2006-03-28 13:05 | 0h | 0d |  | CBOE | 0.33h |
| 196 | 1.10.2 | **Hybrid Performance test Scenario_3 Multi-class Step-up with BOTR/EI/OT/LS/MDHQ/QQ session: W_MAIN** | 0.33d | 2006-07-31 16:25 | 2006-08-01 10:05 | 195 | 2006-03-30 13:45 | 2006-03-30 16:55 | 0.4d | 0d |  | Cognizant | 5.33h |
| 197 | 1.10.2.1 | BC Cleanup, Initial Driver Setup, | 20min | 2006-07-31 16:25 | 2006-07-31 16:45 |  | 2006-03-30 13:45 | 2006-03-30 14:05 | 20min | 0d |  | Cognizant | 0.33h |
| 198 | 1.10.2.2 | Test Execution | 75min | 2006-07-31 16:45 | 2006-08-01 09:00 | 197 | 2006-03-30 14:05 | 2006-03-30 15:05 | 1h | 0d |  | Cognizant | 1.25h |
| 199 | 1.10.2.3 | endOfPerformance and Backup | 20min | 2006-08-01 09:00 | 2006-08-01 09:20 | 198 | 2006-03-30 15:55 | 2006-03-30 16:25 | 30min | 0d |  | Cognizant | 0.33h |
| 200 | 1.10.2.4 | Reporting through KR site | 15min | 2006-08-01 09:20 | 2006-08-01 09:35 | 199 | 2006-03-30 16:25 | 2006-03-30 16:55 | 30min | 0d |  | Cognizant | 0.25h |
| 201 | 1.10.2.5 | Check: Sign off on Checkout Scripts | 30min | 2006-08-01 09:35 | 2006-08-01 10:05 | 200 |  |  |  | 0d |  | CBOE | 0.5h |
| 202 | 1.34 | **FE Failover** | 0.25d | 2006-07-31 14:35 | 2006-07-31 16:35 |  | 2006-04-10 14:20 | 2006-04-10 16:15 | 0.24d | 0.31d |  | Cognizant | 4h |
| 203 | 1.34.2 | Failover to FE2 side,Without restarting CAS, restart FE2 kill FE1 | 30min | 2006-07-31 14:35 | 2006-07-31 15:05 |  | 2006-04-10 14:45 | 2006-04-10 15:15 | 30min | 0.31d | 0d | Cognizant | 0.5h |
| 204 | 1.34.3 | ITG Checkout script after FE New to Old Failover | 40min | 2006-07-31 15:05 | 2006-07-31 15:45 | 203 | 2006-04-10 15:15 | 2006-04-10 15:55 | 40min | 0.31d | 0d | Cognizant | 0.67h |
| 205 | 1.34.4 | Backup for Failover | 20min | 2006-07-31 15:45 | 2006-07-31 16:05 | 204 | 2006-04-10 15:55 | 2006-04-10 16:15 | 20min | 0.31d | 0d | Cognizant | 0.33h |
| 206 | 1.10.3.4 | Check: Sign off on Checkout Scripts | 30min | 2006-07-31 16:05 | 2006-07-31 16:35 | 205 |  |  |  | 0.31d |  | CBOE | 0.5h |

| ID | WBS | Task | Duration | Start | Finish | Predecessors | Baseline start | Baseline finish | Baseline duration | Total slack | Resources | Work |
| --- | --- | --- | --- | --- | --- | --- | --- | --- | --- | --- | --- | --- |
| 207 | 1.11 | **Install B Side FE and Failover Test** | 0.48d | 2006-08-01 10:05 | 2006-08-01 14:55 | 190 | 2006-04-10 16:15 | 2006-04-11 11:10 | 0.49d | 0d | Cognizant | 11h |
| 208 | 1.35 | **Install FE2(Kill A side FE to make sure using B side)** | 0.23d | 2006-08-01 10:05 | 2006-08-01 11:55 | 191 | 2006-04-10 16:15 | 2006-04-11 09:15 | 0.25d | 0d | Cognizant | 3.17h |
| 209 | 1.35.1 | Configuration and starting processes | 30min | 2006-08-01 10:05 | 2006-08-01 10:35 | 206 | 2006-04-10 16:15 | 2006-04-11 08:15 | 1h | 0d |  |  |
| 210 | 1.35.2 | ITG Checkout script (W_MAIN and ONE_MAIN Session) | 40min | 2006-08-01 10:35 | 2006-08-01 11:15 | 209 | 2006-04-11 08:15 | 2006-04-11 08:55 | 40min | 0d | Cognizant | 0.67h |
| 211 | 1.35.3 | Backup and Reporting | 20min | 2006-08-01 11:15 | 2006-08-01 11:35 | 210 | 2006-04-11 08:55 | 2006-04-11 09:15 | 20min | 0d | Cognizant | 0.33h |
| 212 | 1.11.1.4 | Check: Sign Off on Checkout Scripts,Logs and Results | 20min | 2006-08-01 11:35 | 2006-08-01 11:55 | 211 | 2006-03-28 13:05 | 2006-03-28 13:05 | 0h | 0d | CBOE | 0.33h |
| 213 | 1.34 | **FE Failover** | 0.25d | 2006-08-01 11:55 | 2006-08-01 14:55 | 208 | 2006-04-10 14:20 | 2006-04-10 16:15 | 0.24d | 0d | Cognizant | 4h |
| 214 | 1.34.2 | Failover to FE2 side,Without restarting CAS, restart FE2 kill FE1 | 30min | 2006-08-01 11:55 | 2006-08-01 13:25 | 212 | 2006-04-10 14:45 | 2006-04-10 15:15 | 30min | 0d | Cognizant | 0.5h |
| 215 | 1.34.3 | ITG Checkout script after FE New to Old Failover | 40min | 2006-08-01 13:25 | 2006-08-01 14:05 | 214 | 2006-04-10 15:15 | 2006-04-10 15:55 | 40min | 0d | Cognizant | 0.67h |
| 216 | 1.34.4 | Backup for Failover | 20min | 2006-08-01 14:05 | 2006-08-01 14:25 | 215 | 2006-04-10 15:55 | 2006-04-10 16:15 | 20min | 0d | Cognizant | 0.33h |
| 217 | 1.11.2.4 | Check: Sign off on Checkout Scripts | 30min | 2006-08-01 14:25 | 2006-08-01 14:55 | 216 |  |  |  | 0d | CBOE | 0.5h |
| 218 | 1.12 | **Server Side Full Cleanup** | 0.48d | 2006-08-01 14:55 | 2006-08-02 09:45 | 207 |  |  |  | 0d | Cognizant | 7.67h |
| 219 | 1.12.1 | Time server full startup after cleanup (See Server Startup Timing Page) | 3h | 2006-08-01 14:55 | 2006-08-02 08:55 | 217 |  |  |  | 0d | Cognizant | 3h |
| 220 | 1.12.2 | Backup for server Timings | 20min | 2006-08-02 08:55 | 2006-08-02 09:15 | 219 |  |  |  | 0d | Cognizant | 0.33h |
| 221 | 1.12.3 | Check: Sign off on Server Timings | 30min | 2006-08-02 09:15 | 2006-08-02 09:45 | 220 |  |  |  | 0d | CBOE | 0.5h |
| 222 | 1.13 | **Install MDGC A Side** | 0.26d | 2006-08-02 09:45 | 2006-08-02 11:50 | 218 | 2006-04-11 11:10 | 2006-04-12 14:45 | 1.32d | 0d | Cognizant | 6.25h |
| 223 | 1.37 | **Install MDGCA side (perf driver install if needed)** | 0.26d | 2006-08-02 09:45 | 2006-08-02 11:50 | 218 | 2006-04-11 11:10 | 2006-04-11 14:10 | 0.25d | 0d | Cognizant | 4.17h |
| 224 | 1.37.1 | Configuration and starting processes | 45min | 2006-08-02 09:45 | 2006-08-02 10:30 | 221 | 2006-04-11 11:10 | 2006-04-11 13:10 | 1h | 0d | Cognizant | 0.75h |
| 225 | 1.37.2 | ITG Checkout script (W_MAIN and ONE_MAIN Session) | 40min | 2006-08-02 10:30 | 2006-08-02 11:10 | 224 | 2006-04-11 13:10 | 2006-04-11 13:50 | 40min | 0d | Cognizant | 0.67h |
| 226 | 1.37.3 | Backup and Reporting | 20min | 2006-08-02 11:10 | 2006-08-02 11:30 | 225 | 2006-04-11 13:50 | 2006-04-11 14:10 | 20min | 0d | Cognizant | 0.33h |
| 227 | 1.13.1.4 | Check: Sign Off on Checkout Scripts,Logs and Results | 20min | 2006-08-02 11:30 | 2006-08-02 11:50 | 226 | 2006-03-28 13:05 | 2006-03-28 13:05 | 0h | 0d | CBOE | 0.33h |
| 228 | 1.14 | **Install MDGC B Side** | 0.26d | 2006-08-02 11:50 | 2006-08-02 14:55 | 222 | 2006-04-12 14:45 | 2006-04-12 16:45 | 0.25d | 0d | Cognizant | 6.25h |
| 229 | 1.41 | **Install MDGCB side and failover** | 0.26d | 2006-08-02 11:50 | 2006-08-02 14:55 | 223 | 2006-04-12 14:45 | 2006-04-12 16:45 | 0.25d | 0d | Cognizant | 4.17h |
| 230 | 1.41.1 | Configuration and starting processes | 45min | 2006-08-02 11:50 | 2006-08-02 13:35 | 227 | 2006-04-12 14:45 | 2006-04-12 15:45 | 1h | 0d | Cognizant | 0.75h |
| 231 | 1.41.2 | ITG Checkout script (W_MAIN and ONE_MAIN Session) | 40min | 2006-08-02 13:35 | 2006-08-02 14:15 | 230 | 2006-04-12 15:45 | 2006-04-12 16:25 | 40min | 0d | Cognizant | 0.67h |
| 232 | 1.41.3 | Backup and Reporting | 20min | 2006-08-02 14:15 | 2006-08-02 14:35 | 231 | 2006-04-12 16:25 | 2006-04-12 16:45 | 20min | 0d | Cognizant | 0.33h |
| 233 | 1.14.1.4 | Check: Sign Off on Checkout Scripts,Logs and Results | 20min | 2006-08-02 14:35 | 2006-08-02 14:55 | 232 | 2006-03-28 13:05 | 2006-03-28 13:05 | 0h | 0d | CBOE | 0.33h |

| ID | WBS | Task | Duration | Start | Finish | Predecessors | Total slack | Resources | Work |
| --- | --- | --- | --- | --- | --- | --- | --- | --- | --- |
| 234 | 1.15 | **OT3 Specific Tests** | 0.25d | 2006-08-02 14:55 | 2006-08-02 16:55 | 228 | 0d | Cognizant | 4h |
| 235 | 1.15.1 | Compass + CMI orders test | 1h | 2006-08-02 14:55 | 2006-08-02 15:55 | 233 | 0d | Cognizant | 1h |
| 236 | 1.15.2 | Quotes + Orders+BOTR test | 1h | 2006-08-02 15:55 | 2006-08-02 16:55 | 235 | 0d | Cognizant | 1h |
