Schedule from MS Project, 2006-10-03 to 2006-10-31.
Cognizant Technology Solutions

## Calendars

- Standard: Mon-Fri 08:00-12:00, 13:00-17:00; Sat-Sun off.

## Resources

| Resource |
| --- |
| Cognizant |
| 2 |
| CBOE |

## Schedule

| ID | WBS | Task | Duration | Start | Finish | Predecessors | Baseline start | Baseline finish | Baseline duration | Total slack | Constraint | Resources | Work |
| --- | --- | --- | --- | --- | --- | --- | --- | --- | --- | --- | --- | --- | --- |
| 1 | 1 | **Rollout Task** | 20.79d | 2006-10-03 08:00 | 2006-10-31 15:19 |  | 2006-03-14 08:00 | 2006-05-17 13:55 | 46.61d? | 0d |  |  | 487.4h |
| 2 | 1.1 | **Pre-Rollout Verification/Changes** | 5.48d | 2006-10-03 08:00 | 2006-10-10 11:49 |  | 2006-03-14 08:00 | 2006-05-17 13:55 | 46.61d? | 0d |  | Cognizant | 139.57h |
| 3 | 1.1.1 | **Make Database Changes** | 0.22d | 2006-10-03 08:00 | 2006-10-03 09:45 |  | 2006-05-10 08:00 | 2006-05-10 10:00 | 0.25d? | 0d |  | Cognizant | 3.5h |
| 4 | 1.1.1.1 | Version verification | 1h | 2006-10-03 08:00 | 2006-10-03 09:00 |  |  |  |  | 0d | start no earlier than 2006-10-03 08:00 | Cognizant | 1h |
| 5 | 1.1.1.2 | BC Specific database changes | 15min | 2006-10-03 09:00 | 2006-10-03 09:15 | 4 | 2006-05-10 08:00 | 2006-05-10 10:00 | 2h? | 0d | start no earlier than 2006-10-03 08:00 | Cognizant | 0.25h |
| 6 | 1.1.1.3 | ITG Checkout after DB changes | 30min | 2006-10-03 09:15 | 2006-10-03 09:45 | 5 |  |  |  | 0d |  | Cognizant | 0.5h |
| 7 | 1.1.2 | **Pre-OHX Baselines** | 5.26d | 2006-10-03 09:45 | 2006-10-10 11:49 | 3 |  |  |  | 0d |  | Cognizant | 92.24h |
| 8 | 1.1.2.1 | **Standard tests** | 1.01d | 2006-10-03 09:45 | 2006-10-04 09:49 | 3 |  |  |  | 0d |  | Cognizant | 16.16h |
| 9 | 1.1.2.1.1 | MCQST | 2.17h | 2006-10-03 09:45 | 2006-10-03 11:55 | 6 |  |  |  | 0d |  | Cognizant | 2.17h |
| 10 | 1.1.2.1.2 | MCOST | 1.83h | 2006-10-03 11:55 | 2006-10-03 14:45 | 9 |  |  |  | 0d |  | Cognizant | 1.83h |
| 11 | 1.1.2.1.3 | Single class quote stepup test | 2.25h | 2006-10-03 14:45 | 2006-10-03 17:00 | 10 |  |  |  | 0d |  | Cognizant | 2.25h |
| 12 | 1.1.2.1.4 | Product state change test | 1.83h | 2006-10-04 08:00 | 2006-10-04 09:49 | 11 |  |  |  | 0d |  | Cognizant | 1.83h |
| 13 | 1.1.2.2 | **OHX-Specific tests** | 4.25d | 2006-10-04 09:49 | 2006-10-10 11:49 | 9 |  |  |  | 0d |  | Cognizant | 34h |
| 14 | 1.1.2.2.1 | Price Flyweight test | 4h | 2006-10-04 09:49 | 2006-10-04 14:49 | 12 |  |  |  | 0d |  |  |  |
| 15 | 1.1.2.2.2 | HAL Test (all scenarios) | 10h | 2006-10-04 14:49 | 2006-10-05 16:49 | 14 |  |  |  | 0d |  |  |  |
| 16 | 1.1.2.2.3 | OPG Order queueing tests W_MAIN | 6h | 2006-10-05 16:49 | 2006-10-06 14:49 | 15 |  |  |  | 0d |  |  |  |
| 17 | 1.1.2.2.4 | OPG Order queueing tests ONE_MAIN | 6h | 2006-10-06 14:49 | 2006-10-09 11:49 | 16 |  |  |  | 0d |  |  |  |
| 18 | 1.1.2.2.5 | IOC and MOC Orders test | 8h | 2006-10-09 11:49 | 2006-10-10 11:49 | 17 |  |  |  | 0d |  |  |  |
| 19 | 1.2 | **Install GC A Side, User Login and Failover Tests** | 1.18d | 2006-10-10 11:49 | 2006-10-11 14:14 | 2 |  |  |  | 0d |  | Cognizant | 28.25h |
| 20 | 1.2.1 | **Install GC "A" side with new release** | 0.52d | 2006-10-10 11:49 | 2006-10-10 16:59 | 3 |  |  |  | 0d |  | Cognizant | 8.33h |
| 21 | 1.2.1.1 | OHX GC Installation steps | 1h | 2006-10-10 11:49 | 2006-10-10 13:49 | 15 |  |  |  | 0d | start no earlier than 2006-05-11 08:00 | Cognizant | 1h |
| 22 | 1.2.1.2 | Server Side Full Cleanup | 2h | 2006-10-10 13:49 | 2006-10-10 15:49 | 21 |  |  |  | 0d |  | Cognizant | 2h |
| 23 | 1.2.1.3 | Time server full startup after cleanup (See Server Startup Timing Page) | 30min | 2006-10-10 15:49 | 2006-10-10 16:19 | 22 |  |  |  | 0d |  | Cognizant | 0.5h |
| 24 | 1.2.1.4 | Backup for server Timings | 20min | 2006-10-10 16:19 | 2006-10-10 16:39 | 23 |  |  |  | 0d |  | Cognizant | 0.33h |
| 25 | 1.2.1.5 | Check: Sign off on Server Timings | 20min | 2006-10-10 16:39 | 2006-10-10 16:59 | 24 |  |  |  | 0d |  | CBOE | 0.33h |

| ID | WBS | Task | Duration | Start | Finish | Predecessors | Baseline start | Baseline finish | Baseline duration | Total slack | Resources | Work |
| --- | --- | --- | --- | --- | --- | --- | --- | --- | --- | --- | --- | --- |
| 26 | 1.2.2 | **ITG Checkout Script** | 0.15d | 2006-10-10 16:59 | 2006-10-11 09:09 | 20 |  |  |  | 0d | Cognizant | 2.33h |
| 27 | 1.2.1 | ITG Checkout script (W_MAIN, ONE_MAIN) | 30min | 2006-10-10 16:59 | 2006-10-11 08:29 | 25 |  |  |  | 0d | Cognizant | 0.5h |
| 28 | 1.2.5 | Backup and Reporting | 20min | 2006-10-11 08:29 | 2006-10-11 08:49 | 27 |  |  |  | 0d | Cognizant | 0.33h |
| 29 | 1.2.2.3 | Check: Sign off on Checkout Scripts | 20min | 2006-10-11 08:49 | 2006-10-11 09:09 | 28 |  |  |  | 0d | CBOE | 0.33h |
| 30 | 1.2.3 | **User Login test** | 0.2d | 2006-10-11 09:09 | 2006-10-11 10:44 | 26 |  |  |  | 0d | Cognizant | 3.17h |
| 31 | 1.2.3.1 | Initial setup like bouncing Global Server and SACAS. | 30min | 2006-10-11 09:09 | 2006-10-11 09:39 | 29 |  |  |  | 0d | Cognizant | 0.5h |
| 32 | 1.2.3.2 | Login Test for 1 and 2 Users | 15min | 2006-10-11 09:39 | 2006-10-11 09:54 | 31 |  |  |  | 0d | Cognizant | 0.25h |
| 33 | 1.2.3.3 | Product State Update to CLOSE on VLO (visually timing Single class CLOSED with SAGUI) | 10min | 2006-10-11 09:54 | 2006-10-11 10:04 | 32 |  |  |  | 0d | Cognizant | 0.17h |
| 34 | 1.2.3.4 | Backup for Login User Test and Product state Update through SAGUI | 20min | 2006-10-11 10:04 | 2006-10-11 10:24 | 33 |  |  |  | 0d | Cognizant | 0.33h |
| 35 | 1.2.3.5 | Check: Sign Off on Logs and Results | 20min | 2006-10-11 10:24 | 2006-10-11 10:44 | 34 |  |  |  | 0d | CBOE | 0.33h |
| 36 | 1.2.4 | **GC failover to "B" side** | 0.31d | 2006-10-11 10:44 | 2006-10-11 14:14 | 30 |  |  |  | 0d | Cognizant | 5h |
| 37 | 1.2.4.1 | Initial setup for test Drivers (starting processes on GC Slave.) | 30min | 2006-10-11 10:44 | 2006-10-11 11:14 | 35 |  |  |  | 0d | Cognizant | 0.5h |
| 38 | 1.2.4.2 | Quote/Order BC20 Hybrid and ONE_MAIN traffic going before/during/after failover. Should not hang to verify no Global Dependency introduced. Test Execution | 30min | 2006-10-11 11:14 | 2006-10-11 11:44 | 37 |  |  |  | 0d | Cognizant | 0.5h |
| 39 | 1.2.4.3 | ITG Checkout script (for W_MAIN and ONE_MAIN Session) | 30min | 2006-10-11 11:44 | 2006-10-11 13:14 | 38 |  |  |  | 0d | Cognizant | 0.5h |
| 40 | 1.2.4.4 | Backup for Failover and ITG Checkout | 20min | 2006-10-11 13:14 | 2006-10-11 13:34 | 39 |  |  |  | 0d | Cognizant | 0.33h |
| 41 | 1.2.4.5 | Generate Report for Failover Timings for all GC Processes (taking time from log files) | 20min | 2006-10-11 13:34 | 2006-10-11 13:54 | 40 |  |  |  | 0d | Cognizant | 0.33h |
| 42 | 1.2.4.6 | Check: Sign Off on Checkout Scripts, Logs and Results | 20min | 2006-10-11 13:54 | 2006-10-11 14:14 | 41 |  |  |  | 0d | CBOE | 0.33h |
| 43 | 1.3 | **Install GC B Side , Failover and Perf Tests** | 1.67d | 2006-10-11 14:14 | 2006-10-13 10:34 | 19 | 2006-03-27 14:00 | 2006-03-31 10:15 | 3.66d? | 0d | Cognizant | 39h |
| 44 | 1.3.1 | **Install GC "B" side** | 0.4d | 2006-10-11 14:14 | 2006-10-12 08:24 | 36 | 2006-03-27 14:00 | 2006-03-27 17:00 | 0.38d | 0d | Cognizant | 6.33h |
| 45 | 1.3.1.1 | Cleanup, createCurrentBusinessDay,starting all GC Processes on B side | 2h | 2006-10-11 14:14 | 2006-10-11 16:14 | 42 | 2006-03-27 14:00 | 2006-03-27 16:00 | 2h | 0d | Cognizant | 2h |
| 46 | 1.3.1.2 | ITG Checkout script (for W_MAIN, ONE_MAIN Session) | 30min | 2006-10-11 16:14 | 2006-10-11 16:44 | 45 | 2006-03-27 16:00 | 2006-03-27 16:40 | 40min | 0d | Cognizant | 0.5h |
| 47 | 1.3.1.3 | Backup for GC Upgrade and ITG Checkout | 20min | 2006-10-11 16:44 | 2006-10-12 08:04 | 46 | 2006-03-27 16:40 | 2006-03-27 17:00 | 20min | 0d | Cognizant | 0.33h |
| 48 | 1.3.1.4 | Check: Sign Off on Checkout Scripts, Logs and Results | 20min | 2006-10-12 08:04 | 2006-10-12 08:24 | 47 |  |  |  | 0d | CBOE | 0.33h |
| 49 | 1.3.2 | Install SAGUI | 1h | 2006-10-12 08:24 | 2006-10-12 09:24 | 44 | 2006-03-28 09:40 | 2006-03-29 11:20 | 1.21d? | 0d | Cognizant | 1h |

| ID | WBS | Task | Duration | Start | Finish | Predecessors | Baseline start | Baseline finish | Baseline duration | Total slack | Resources | Work |
| --- | --- | --- | --- | --- | --- | --- | --- | --- | --- | --- | --- | --- |
| 50 | 1.3.3 | **ITG Checkout Script** | 0.15d | 2006-10-12 09:24 | 2006-10-12 10:34 | 49 |  |  |  | 0d | Cognizant | 2.33h |
| 51 | 1.2.1 | ITG Checkout script (W_MAIN, ONE_MAIN) | 30min | 2006-10-12 09:24 | 2006-10-12 09:54 | 49 |  |  |  | 0d | Cognizant | 0.5h |
| 52 | 1.2.5 | Backup and Reporting | 20min | 2006-10-12 09:54 | 2006-10-12 10:14 | 51 |  |  |  | 0d | Cognizant | 0.33h |
| 53 | 1.3.3.3 | Check: Sign off on Checkout Scripts | 20min | 2006-10-12 10:14 | 2006-10-12 10:34 | 52 |  |  |  | 0d | CBOE | 0.33h |
| 54 | 1.3.4 | **GC fail over to "A" side** | 0.31d | 2006-10-12 10:34 | 2006-10-12 14:04 | 49 | 2006-03-29 11:20 | 2006-03-30 11:20 | 1d? | 0d | Cognizant | 5h |
| 55 | 1.3.4.1 | Initial setup for test Drivers (starting processes on GC Slave.) | 30min | 2006-10-12 10:34 | 2006-10-12 11:04 | 53 | 2006-03-29 11:20 | 2006-03-29 11:50 | 30min | 0d | Cognizant | 0.5h |
| 56 | 1.3.4.2 | Quote/Order BC20 Hybrid and ONE_MAIN traffic going before/during/after failover. Should not hang to verify no Global Dependency introduced. Test Execution | 30min | 2006-10-12 11:04 | 2006-10-12 11:34 | 55 | 2006-03-29 11:50 | 2006-03-29 13:20 | 30min | 0d | Cognizant | 0.5h |
| 57 | 1.3.4.3 | ITG Checkout script (for W_MAIN and ONE_MAIN Session) | 30min | 2006-10-12 11:34 | 2006-10-12 13:04 | 56 | 2006-03-29 13:20 | 2006-03-29 14:00 | 40min | 0d | Cognizant | 0.5h |
| 58 | 1.3.4.4 | Backup for Failover and ITG Checkout | 20min | 2006-10-12 13:04 | 2006-10-12 13:24 | 57 | 2006-03-29 14:00 | 2006-03-29 14:20 | 20min | 0d | Cognizant | 0.33h |
| 59 | 1.3.4.5 | Generate Report for Failover Timings for all GC Processes (taking time from log files) | 20min | 2006-10-12 13:24 | 2006-10-12 13:44 | 58 | 2006-03-29 14:20 | 2006-03-29 14:40 | 20min | 0d | Cognizant | 0.33h |
| 60 | 1.3.4.6 | Check: Sign off on Checkout Scripts | 20min | 2006-10-12 13:44 | 2006-10-12 14:04 | 59 |  |  |  | 0d | CBOE | 0.33h |
| 61 | 1.3.5 | **60 User Login Test** | 0.19d | 2006-10-12 14:04 | 2006-10-12 15:34 | 54 | 2006-03-30 11:20 | 2006-03-30 13:45 | 0.18d | 0d | Cognizant | 3h |
| 62 | 1.3.5.1 | bouncing Global Server process, SACAS and all other CASes for 60 User login Test and SAGUI login test | 30min | 2006-10-12 14:04 | 2006-10-12 14:34 | 60 | 2006-03-30 11:20 | 2006-03-30 11:45 | 25min | 0d | Cognizant | 0.5h |
| 63 | 1.3.5.2 | User login test and 60 user login test, test execution | 20min | 2006-10-12 14:34 | 2006-10-12 14:54 | 62 | 2006-03-30 11:45 | 2006-03-30 13:15 | 30min | 0d | Cognizant | 0.33h |
| 64 | 1.3.5.3 | Backup and Reporting | 20min | 2006-10-12 14:54 | 2006-10-12 15:14 | 63 | 2006-03-30 13:15 | 2006-03-30 13:45 | 30min | 0d | Cognizant | 0.33h |
| 65 | 1.3.5.4 | Check: Sign Off on Checkout Scripts, Logs and Results | 20min | 2006-10-12 15:14 | 2006-10-12 15:34 | 64 |  |  |  | 0d | CBOE | 0.33h |
| 66 | 1.3.6 | **Hybrid Performance test Scenario_3 Multi-class Quote Step-up with BOTR/EI/OT/LS/MDHQ/QQ session: W_MAIN** | 0.27d | 2006-10-12 15:34 | 2006-10-13 08:44 | 61 | 2006-03-30 13:45 | 2006-03-30 16:55 | 0.4d | 0d | Cognizant | 4.33h |
| 67 | 1.3.6.1 | BC Cleanup, Initial Driver Setup, | 20min | 2006-10-12 15:34 | 2006-10-12 15:54 | 65 | 2006-03-30 13:45 | 2006-03-30 14:05 | 20min | 0d | Cognizant | 0.33h |
| 68 | 1.3.6.2 | Test Execution | 1h | 2006-10-12 15:54 | 2006-10-12 16:54 | 67 | 2006-03-30 14:05 | 2006-03-30 15:05 | 1h | 0d | Cognizant | 1h |
| 69 | 1.3.6.3 | endOfPerformance and Backup | 20min | 2006-10-12 16:54 | 2006-10-13 08:14 | 68 | 2006-03-30 15:55 | 2006-03-30 16:25 | 30min | 0d | Cognizant | 0.33h |
| 70 | 1.3.6.4 | Reporting through KR site | 10min | 2006-10-13 08:14 | 2006-10-13 08:24 | 69 | 2006-03-30 16:25 | 2006-03-30 16:55 | 30min | 0d | Cognizant | 0.17h |
| 71 | 1.3.6.5 | Check: Sign off on Checkout Scripts | 20min | 2006-10-13 08:24 | 2006-10-13 08:44 | 70 |  |  |  | 0d | CBOE | 0.33h |
| 72 | 1.14 | **Multi-class Order step-up test** | 0.23d | 2006-10-13 08:44 | 2006-10-13 10:34 | 66 | 2006-04-04 08:35 | 2006-04-04 10:05 | 0.19d | 0d | Cognizant | 3.67h |
| 73 | 1.14.1 | BC Cleanup, Initial Driver Setup, | 20min | 2006-10-13 08:44 | 2006-10-13 09:04 |  | 2006-04-04 08:35 | 2006-04-04 08:55 | 20min | 0d | Cognizant | 0.33h |
| 74 | 1.14.2 | Test Execution for No BOTR | 40min | 2006-10-13 09:04 | 2006-10-13 09:44 | 73 | 2006-04-04 08:55 | 2006-04-04 09:35 | 40min | 0d | Cognizant | 0.67h |
| 75 | 1.14.3 | endOfPerformance and Backup | 20min | 2006-10-13 09:44 | 2006-10-13 10:04 | 74 | 2006-04-04 09:35 | 2006-04-04 09:55 | 20min | 0d | Cognizant | 0.33h |
| 76 | 1.14.4 | Reporting through KR site | 10min | 2006-10-13 10:04 | 2006-10-13 10:14 | 75 | 2006-04-04 09:55 | 2006-04-04 10:05 | 10min | 0d | Cognizant | 0.17h |
| 77 | 1.3.7.5 | Check: Sign off on Checkout Scripts | 20min | 2006-10-13 10:14 | 2006-10-13 10:34 | 76 |  |  |  | 0d | CBOE | 0.33h |

| ID | WBS | Task | Duration | Start | Finish | Predecessors | Baseline start | Baseline finish | Baseline duration | Total slack | Resources | Work |
| --- | --- | --- | --- | --- | --- | --- | --- | --- | --- | --- | --- | --- |
| 78 | 1.4 | **Install W_STOCK on A and B Side** | 0.42d | 2006-10-13 10:34 | 2006-10-13 14:54 | 43 |  |  |  | 0d | Cognizant | 10h |
| 79 | 1.4.1 | **ITG Checkout Script** | 0.15d | 2006-10-13 10:34 | 2006-10-13 11:44 | 72 |  |  |  | 0d | Cognizant | 2.33h |
| 80 | 1.4.1.1 | ITG Checkout script (W_MAIN, ONE_MAIN) | 30min | 2006-10-13 10:34 | 2006-10-13 11:04 | 77 |  |  |  | 0d | Cognizant | 0.5h |
| 81 | 1.4.1.2 | Backup and Reporting | 20min | 2006-10-13 11:04 | 2006-10-13 11:24 | 80 |  |  |  | 0d | Cognizant | 0.33h |
| 82 | 1.4.1.3 | Check: Sign off on Checkout Scripts | 20min | 2006-10-13 11:24 | 2006-10-13 11:44 | 81 |  |  |  | 0d | CBOE | 0.33h |
| 83 | 1.4.2 | **Hybrid Performance test Scenario_3 Multi-class Quote Step-up with BOTR/EI/OT/LS/MDHQ/QQ session: W_MAIN** | 0.27d | 2006-10-13 11:44 | 2006-10-13 14:54 | 79 | 2006-03-30 13:45 | 2006-03-30 16:55 | 0.4d | 0d | Cognizant | 4.33h |
| 84 | 1.4.2.1 | BC Cleanup, Initial Driver Setup, | 20min | 2006-10-13 11:44 | 2006-10-13 13:04 | 82 | 2006-03-30 13:45 | 2006-03-30 14:05 | 20min | 0d | Cognizant | 0.33h |
| 85 | 1.4.2.2 | Test Execution | 1h | 2006-10-13 13:04 | 2006-10-13 14:04 | 84 | 2006-03-30 14:05 | 2006-03-30 15:05 | 1h | 0d | Cognizant | 1h |
| 86 | 1.4.2.3 | endOfPerformance and Backup | 20min | 2006-10-13 14:04 | 2006-10-13 14:24 | 85 | 2006-03-30 15:55 | 2006-03-30 16:25 | 30min | 0d | Cognizant | 0.33h |
| 87 | 1.4.2.4 | Reporting through KR site | 10min | 2006-10-13 14:24 | 2006-10-13 14:34 | 86 | 2006-03-30 16:25 | 2006-03-30 16:55 | 30min | 0d | Cognizant | 0.17h |
| 88 | 1.4.2.5 | Check: Sign off on Checkout Scripts | 20min | 2006-10-13 14:34 | 2006-10-13 14:54 | 87 |  |  |  | 0d | CBOE | 0.33h |
| 89 | 1.5 | **Install Hybrid BC A Side** | 1.88d | 2006-10-13 14:54 | 2006-10-17 13:54 |  | 2006-03-31 10:15 | 2006-04-04 13:20 | 2.26d? | 0d | Cognizant | 43h |
| 90 | 1.10 | **Install Hybrid BC (A)** | 0.21d | 2006-10-13 14:54 | 2006-10-13 16:34 | 72 | 2006-03-31 10:15 | 2006-03-31 13:15 | 0.25d | 0d | Cognizant | 3.33h |
| 91 | 1.10.1 | Configuration and starting processes | 45min | 2006-10-13 14:54 | 2006-10-13 15:39 | 88 | 2006-03-31 10:15 | 2006-03-31 11:15 | 1h | 0d | Cognizant | 0.75h |
| 92 | 1.10.2 | ITG Checkout script (W_MAIN Session) | 15min | 2006-10-13 15:39 | 2006-10-13 15:54 | 91 | 2006-03-31 11:15 | 2006-03-31 11:55 | 40min | 0d | Cognizant | 0.25h |
| 93 | 1.10.3 | Backup and Reporting | 20min | 2006-10-13 15:54 | 2006-10-13 16:14 | 92 | 2006-03-31 11:55 | 2006-03-31 13:15 | 20min | 0d | Cognizant | 0.33h |
| 94 | 1.5.1.4 | Check: Sign off on Checkout Scripts | 20min | 2006-10-13 16:14 | 2006-10-13 16:34 | 93 |  |  |  | 0d | CBOE | 0.33h |
| 95 | 1.5.2 | FIX Strategy Order Test | 2h | 2006-10-13 16:34 | 2006-10-16 09:34 | 90 |  |  |  | 0d | Cognizant | 2h |
| 96 | 1.12 | **Multi-class Quote step-up test with NO BOTR and Single User Logout** | 0.25d | 2006-10-16 09:34 | 2006-10-16 11:34 | 95 | 2006-04-03 10:15 | 2006-04-03 14:25 | 0.4d | 0d | Cognizant | 4h |
| 97 | 1.12.1 | BC Cleanup, Initial Driver Setup, | 20min | 2006-10-16 09:34 | 2006-10-16 09:54 | 95 | 2006-04-03 10:15 | 2006-04-03 10:35 | 20min | 0d | Cognizant | 0.33h |
| 98 | 1.12.2 | Test Execution for No BOTR with single user logout | 45min | 2006-10-16 09:54 | 2006-10-16 10:39 | 97 | 2006-04-03 10:35 | 2006-04-03 11:35 | 1h | 0d | Cognizant | 0.75h |
| 99 | 1.12.4 | endOfPerformance and Backup | 20min | 2006-10-16 10:39 | 2006-10-16 10:59 | 98 | 2006-04-03 13:25 | 2006-04-03 13:55 | 30min | 0d | Cognizant | 0.33h |
| 100 | 1.12.5 | Reporting through KR site | 15min | 2006-10-16 10:59 | 2006-10-16 11:14 | 99 | 2006-04-03 13:55 | 2006-04-03 14:25 | 30min | 0d | Cognizant | 0.25h |
| 101 | 1.5.3.5 | Check: Sign off on Checkout Scripts | 20min | 2006-10-16 11:14 | 2006-10-16 11:34 | 100 |  |  |  | 0d | CBOE | 0.33h |

| ID | WBS | Task | Duration | Start | Finish | Predecessors | Baseline start | Baseline finish | Baseline duration | Total slack | Resources | Work |
| --- | --- | --- | --- | --- | --- | --- | --- | --- | --- | --- | --- | --- |
| 102 | 1.5.4 | **Hybrid Performance test Scenario_3 Multi-class Step-up with BOTR/EI/OT/LS/MDHQ/QQ session: W_MAIN** | 0.27d | 2006-10-16 11:34 | 2006-10-16 14:44 | 96 | 2006-03-30 13:45 | 2006-03-30 16:55 | 0.4d | 0d | Cognizant | 4.33h |
| 103 | 1.5.4.1 | BC Cleanup, Initial Driver Setup, | 20min | 2006-10-16 11:34 | 2006-10-16 11:54 | 101 | 2006-03-30 13:45 | 2006-03-30 14:05 | 20min | 0d | Cognizant | 0.33h |
| 104 | 1.5.4.2 | Test Execution | 1h | 2006-10-16 11:54 | 2006-10-16 13:54 | 103 | 2006-03-30 14:05 | 2006-03-30 15:05 | 1h | 0d | Cognizant | 1h |
| 105 | 1.5.4.3 | endOfPerformance and Backup | 20min | 2006-10-16 13:54 | 2006-10-16 14:14 | 104 | 2006-03-30 15:55 | 2006-03-30 16:25 | 30min | 0d | Cognizant | 0.33h |
| 106 | 1.5.4.4 | Reporting through KR site | 10min | 2006-10-16 14:14 | 2006-10-16 14:24 | 105 | 2006-03-30 16:25 | 2006-03-30 16:55 | 30min | 0d | Cognizant | 0.17h |
| 107 | 1.5.4.5 | Check: Sign off on Checkout Scripts | 20min | 2006-10-16 14:24 | 2006-10-16 14:44 | 106 |  |  |  | 0d | CBOE | 0.33h |
| 108 | 1.13 | **Single-class Quote step-up test with BOTR** | 0.27d | 2006-10-16 14:44 | 2006-10-16 16:54 | 102 | 2006-04-03 14:25 | 2006-04-04 08:35 | 0.4d | 0d | Cognizant | 4.33h |
| 109 | 1.13.1 | BC Cleanup, Initial Driver Setup, | 20min | 2006-10-16 14:44 | 2006-10-16 15:04 | 101 | 2006-04-03 14:25 | 2006-04-03 14:45 | 20min | 0d | Cognizant | 0.33h |
| 110 | 1.13.2 | Test Execution | 1h | 2006-10-16 15:04 | 2006-10-16 16:04 | 109 | 2006-04-03 14:45 | 2006-04-03 15:45 | 1h | 0d | Cognizant | 1h |
| 111 | 1.13.4 | endOfPerformance and Backup | 20min | 2006-10-16 16:04 | 2006-10-16 16:24 | 110 | 2006-04-03 16:35 | 2006-04-04 08:05 | 30min | 0d | Cognizant | 0.33h |
| 112 | 1.13.5 | Reporting through KR site | 10min | 2006-10-16 16:24 | 2006-10-16 16:34 | 111 | 2006-04-04 08:05 | 2006-04-04 08:35 | 30min | 0d | Cognizant | 0.17h |
| 113 | 1.5.5.5 | Check: Sign off on Checkout Scripts | 20min | 2006-10-16 16:34 | 2006-10-16 16:54 | 112 |  |  |  | 0d | CBOE | 0.33h |
| 114 | 1.14 | **Multi-class Order step-up test** | 0.23d | 2006-10-16 16:54 | 2006-10-17 09:44 | 108 | 2006-04-04 08:35 | 2006-04-04 10:05 | 0.19d | 0d | Cognizant | 3.67h |
| 115 | 1.14.1 | BC Cleanup, Initial Driver Setup, | 20min | 2006-10-16 16:54 | 2006-10-17 08:14 | 113 | 2006-04-04 08:35 | 2006-04-04 08:55 | 20min | 0d | Cognizant | 0.33h |
| 116 | 1.14.2 | Test Execution for No BOTR | 40min | 2006-10-17 08:14 | 2006-10-17 08:54 | 115 | 2006-04-04 08:55 | 2006-04-04 09:35 | 40min | 0d | Cognizant | 0.67h |
| 117 | 1.14.3 | endOfPerformance and Backup | 20min | 2006-10-17 08:54 | 2006-10-17 09:14 | 116 | 2006-04-04 09:35 | 2006-04-04 09:55 | 20min | 0d | Cognizant | 0.33h |
| 118 | 1.14.4 | Reporting through KR site | 10min | 2006-10-17 09:14 | 2006-10-17 09:24 | 117 | 2006-04-04 09:55 | 2006-04-04 10:05 | 10min | 0d | Cognizant | 0.17h |
| 119 | 1.5.6.5 | Check: Sign off on Checkout Scripts | 20min | 2006-10-17 09:24 | 2006-10-17 09:44 | 118 |  |  |  | 0d | CBOE | 0.33h |
| 120 | 1.5.7 | **Hybrid test scenario 5 (Product State Change Test)** | 0.23d | 2006-10-17 09:44 | 2006-10-17 11:34 | 114 | 2006-03-21 14:50 | 2006-03-21 16:20 | 0.19d | 0d | Cognizant | 3.67h |
| 121 | 1.5.7.1 | BC Cleanup, Initial Driver Setup, | 20min | 2006-10-17 09:44 | 2006-10-17 10:04 | 119 | 2006-03-21 14:50 | 2006-03-21 15:10 | 20min | 0d | Cognizant | 0.33h |
| 122 | 1.5.7.2 | Test Execution - Global Server Bounce | 40min | 2006-10-17 10:04 | 2006-10-17 10:44 | 121 | 2006-03-21 15:10 | 2006-03-21 15:50 | 40min | 0d | Cognizant | 0.67h |
| 123 | 1.5.7.3 | Monitor and Backup logs | 20min | 2006-10-17 10:44 | 2006-10-17 11:04 | 122 | 2006-03-21 15:50 | 2006-03-21 16:10 | 20min | 0d | Cognizant | 0.33h |
| 124 | 1.5.7.4 | Reporting through KR site | 10min | 2006-10-17 11:04 | 2006-10-17 11:14 | 123 | 2006-03-21 16:10 | 2006-03-21 16:20 | 10min | 0d | Cognizant | 0.17h |
| 125 | 1.5.7.5 | Check: Sign Off on Logs and Results | 20min | 2006-10-17 11:14 | 2006-10-17 11:34 | 124 | 2006-03-21 16:20 | 2006-03-21 16:20 | 0h | 0d | CBOE | 0.33h |

| ID | WBS | Task | Duration | Start | Finish | Predecessors | Baseline start | Baseline finish | Baseline duration | Total slack | Free slack | Resources | Work |
| --- | --- | --- | --- | --- | --- | --- | --- | --- | --- | --- | --- | --- | --- |
| 126 | 1.5.8 | **History Server Failure Test** | 0.17d | 2006-10-17 11:34 | 2006-10-17 13:54 | 120 |  |  |  | 0d |  | Cognizant | 2.67h |
| 127 | 1.14.1 | BC Cleanup, Initial Driver Setup, | 20min | 2006-10-17 11:34 | 2006-10-17 11:54 | 125 | 2006-04-04 08:35 | 2006-04-04 08:55 | 20min | 0d |  | Cognizant | 0.33h |
| 128 | 1.14.2 | Test Execution | 40min | 2006-10-17 11:54 | 2006-10-17 13:34 | 127 | 2006-04-04 08:55 | 2006-04-04 09:35 | 40min | 0d |  | Cognizant | 0.67h |
| 129 | 1.5.8.3 | Check: Sign off on Checkout Scripts | 20min | 2006-10-17 13:34 | 2006-10-17 13:54 | 128 |  |  |  | 0d |  | CBOE | 0.33h |
| 130 | 1.15 | **Hybrid BC failover (new release to old release)** | 0.25d | 2006-10-17 09:44 | 2006-10-17 11:44 |  | 2006-04-04 10:05 | 2006-04-04 13:20 | 0.28d | 0.15d |  | Cognizant | 4h |
| 131 | 1.15.1 | Initial setup for test Drivers (starting processes on BC Slave.) | 25min | 2006-10-17 09:44 | 2006-10-17 10:09 | 119 | 2006-04-04 10:05 | 2006-04-04 10:30 | 25min | 0.15d | 0d | Cognizant | 0.42h |
| 132 | 1.15.2 | Quote/Order BC20 Hybrid traffic going before/during/after failover. Test Execution | 20min | 2006-10-17 10:09 | 2006-10-17 10:29 | 131 | 2006-04-04 10:30 | 2006-04-04 11:00 | 30min | 0.15d | 0d | Cognizant | 0.33h |
| 133 | 1.15.3 | ITG Checkout script (for W_MAIN Session) | 15min | 2006-10-17 10:29 | 2006-10-17 10:44 | 132 | 2006-04-04 11:00 | 2006-04-04 11:40 | 40min | 0.15d | 0d | Cognizant | 0.25h |
| 134 | 1.15.4 | Backup for Failover and ITG Checkout | 20min | 2006-10-17 10:44 | 2006-10-17 11:04 | 133 | 2006-04-04 11:40 | 2006-04-04 12:00 | 20min | 0.15d | 0d | Cognizant | 0.33h |
| 135 | 1.15.5 | Generate Report for Failover Timings for all BC Processes (taking time from log files) | 20min | 2006-10-17 11:04 | 2006-10-17 11:24 | 134 | 2006-04-04 13:00 | 2006-04-04 13:20 | 20min | 0.15d | 0d | Cognizant | 0.33h |
| 136 | 1.6.6 | Check: Sign off on Checkout Scripts | 20min | 2006-10-17 11:24 | 2006-10-17 11:44 | 135 |  |  |  | 0.15d |  | CBOE | 0.33h |
| 137 | 1.7 | **Install Hybrid BC B Side** | 1.73d | 2006-10-17 13:54 | 2006-10-19 10:44 | 89 | 2006-04-03 10:15 | 2006-04-04 15:20 | 1.51d | 0d |  | Cognizant | 37.5h |
| 138 | 1.16 | **Install Hybrid BC "B" side** | 0.21d | 2006-10-17 13:54 | 2006-10-17 15:34 | 130 | 2006-04-03 10:15 | 2006-04-03 13:15 | 0.25d | 0d |  | Cognizant | 3.33h |
| 139 | 1.16.1 | Configuration and starting processes | 45min | 2006-10-17 13:54 | 2006-10-17 14:39 | 136 | 2006-04-03 10:15 | 2006-04-03 11:15 | 1h | 0d |  | Cognizant | 0.75h |
| 140 | 1.16.2 | ITG Checkout script (W_MAIN Session) | 15min | 2006-10-17 14:39 | 2006-10-17 14:54 | 139 | 2006-04-03 11:15 | 2006-04-03 11:55 | 40min | 0d |  | Cognizant | 0.25h |
| 141 | 1.16.3 | Backup and Reporting | 20min | 2006-10-17 14:54 | 2006-10-17 15:14 | 140 | 2006-04-03 11:55 | 2006-04-03 13:15 | 20min | 0d |  | Cognizant | 0.33h |
| 142 | 1.7.1.4 | Check: Sign off on Checkout Scripts | 20min | 2006-10-17 15:14 | 2006-10-17 15:34 | 141 |  |  |  | 0d |  | CBOE | 0.33h |
| 143 | 1.17 | **Hybrid BC failover (new release to new release)** | 0.25d | 2006-10-17 15:34 | 2006-10-18 08:34 | 138 | 2006-04-03 13:15 | 2006-04-03 15:30 | 0.28d | 0d |  | Cognizant | 4h |
| 144 | 1.17.1 | Initial setup for test Drivers (starting processes on BC Slave.) | 25min | 2006-10-17 15:34 | 2006-10-17 15:59 | 142 | 2006-04-03 13:15 | 2006-04-03 13:40 | 25min | 0d |  | Cognizant | 0.42h |
| 145 | 1.17.2 | Quote/Order BC20 Hybrid traffic going before/during/after failover. Test Execution | 20min | 2006-10-17 15:59 | 2006-10-17 16:19 | 144 | 2006-04-03 13:40 | 2006-04-03 14:10 | 30min | 0d |  | Cognizant | 0.33h |
| 146 | 1.17.3 | ITG Checkout script (for W_MAIN Session) | 15min | 2006-10-17 16:19 | 2006-10-17 16:34 | 145 | 2006-04-03 14:10 | 2006-04-03 14:50 | 40min | 0d |  | Cognizant | 0.25h |
| 147 | 1.17.4 | Backup for Failover and ITG Checkout | 20min | 2006-10-17 16:34 | 2006-10-17 16:54 | 146 | 2006-04-03 14:50 | 2006-04-03 15:10 | 20min | 0d |  | Cognizant | 0.33h |
| 148 | 1.17.5 | Generate Report for Failover Timings | 20min | 2006-10-17 16:54 | 2006-10-18 08:14 | 147 | 2006-04-03 15:10 | 2006-04-03 15:30 | 20min | 0d |  | Cognizant | 0.33h |
| 149 | 1.7.2.6 | Check: Sign off on Checkout Scripts | 20min | 2006-10-18 08:14 | 2006-10-18 08:34 | 148 |  |  |  | 0d |  | CBOE | 0.33h |

| ID | WBS | Task | Duration | Start | Finish | Predecessors | Baseline start | Baseline finish | Baseline duration | Total slack | Resources | Work |
| --- | --- | --- | --- | --- | --- | --- | --- | --- | --- | --- | --- | --- |
| 150 | 1.7.3 | **Hybrid Performance test Scenario_3 Multi-class Step-up with BOTR/EI/OT/LS/MDHQ/QQ session: W_MAIN** | 0.27d | 2006-10-18 08:34 | 2006-10-18 10:44 | 143 | 2006-03-30 13:45 | 2006-03-30 16:55 | 0.4d | 0d | Cognizant | 4.33h |
| 151 | 1.7.3.1 | BC Cleanup, Initial Driver Setup, | 20min | 2006-10-18 08:34 | 2006-10-18 08:54 | 149 | 2006-03-30 13:45 | 2006-03-30 14:05 | 20min | 0d | Cognizant | 0.33h |
| 152 | 1.7.3.2 | Test Execution | 1h | 2006-10-18 08:54 | 2006-10-18 09:54 | 151 | 2006-03-30 14:05 | 2006-03-30 15:05 | 1h | 0d | Cognizant | 1h |
| 153 | 1.7.3.3 | endOfPerformance and Backup | 20min | 2006-10-18 09:54 | 2006-10-18 10:14 | 152 | 2006-03-30 15:55 | 2006-03-30 16:25 | 30min | 0d | Cognizant | 0.33h |
| 154 | 1.7.3.4 | Reporting through KR site | 10min | 2006-10-18 10:14 | 2006-10-18 10:24 | 153 | 2006-03-30 16:25 | 2006-03-30 16:55 | 30min | 0d | Cognizant | 0.17h |
| 155 | 1.7.3.5 | Check: Sign off on Checkout Scripts | 20min | 2006-10-18 10:24 | 2006-10-18 10:44 | 154 |  |  |  | 0d | CBOE | 0.33h |
| 156 | 1.7.4 | **Single-class Quote step-up test with BOTR** | 0.27d | 2006-10-18 10:44 | 2006-10-18 13:54 | 150 |  |  |  | 0d | Cognizant | 4.33h |
| 157 | 1.7.4.1 | BC Cleanup, Initial Driver Setup, | 20min | 2006-10-18 10:44 | 2006-10-18 11:04 | 155 |  |  |  | 0d | Cognizant | 0.33h |
| 158 | 1.7.4.2 | Test Execution | 1h | 2006-10-18 11:04 | 2006-10-18 13:04 | 157 |  |  |  | 0d | Cognizant | 1h |
| 159 | 1.7.4.3 | endOfPerformance and Backup | 20min | 2006-10-18 13:04 | 2006-10-18 13:24 | 158 |  |  |  | 0d | Cognizant | 0.33h |
| 160 | 1.7.4.4 | Reporting through KR site | 10min | 2006-10-18 13:24 | 2006-10-18 13:34 | 159 |  |  |  | 0d | Cognizant | 0.17h |
| 161 | 1.7.4.5 | Check: Sign off on Checkout Scripts | 20min | 2006-10-18 13:34 | 2006-10-18 13:54 | 160 |  |  |  | 0d | Cognizant | 0.33h |
| 162 | 1.7.5 | **Multi-class Order step-up test** | 0.23d | 2006-10-18 13:54 | 2006-10-18 15:44 | 156 |  |  |  | 0d | Cognizant | 3.67h |
| 163 | 1.7.5.1 | BC Cleanup, Initial Driver Setup, | 20min | 2006-10-18 13:54 | 2006-10-18 14:14 | 161 |  |  |  | 0d | Cognizant | 0.33h |
| 164 | 1.7.5.2 | Test Execution for No BOTR | 40min | 2006-10-18 14:14 | 2006-10-18 14:54 | 163 |  |  |  | 0d | Cognizant | 0.67h |
| 165 | 1.7.5.3 | endOfPerformance and Backup | 20min | 2006-10-18 14:54 | 2006-10-18 15:14 | 164 |  |  |  | 0d | Cognizant | 0.33h |
| 166 | 1.7.5.4 | Reporting through KR site | 10min | 2006-10-18 15:14 | 2006-10-18 15:24 | 165 |  |  |  | 0d | Cognizant | 0.17h |
| 167 | 1.7.5.5 | Check: Sign off on Checkout Scripts | 20min | 2006-10-18 15:24 | 2006-10-18 15:44 | 166 |  |  |  | 0d | Cognizant | 0.33h |
| 168 | 1.7.6 | Price Fly Weights Test | 4h | 2006-10-18 15:44 | 2006-10-19 10:44 | 162 |  |  |  | 0d | Cognizant | 4h |
| 169 | 1.6 | **Install & perform tests on ONE_MAIN BC A Side** | 0.99d | 2006-10-19 10:44 | 2006-10-20 10:39 | 137 | 2006-03-24 15:35 | 2006-03-27 16:20 | 1.09d | 0d | Cognizant | 23.75h |
| 170 | 1.26 | **Install ONE_MAIN BC (A)** | 0.21d | 2006-10-19 10:44 | 2006-10-19 13:24 | 168 | 2006-03-24 15:35 | 2006-03-27 08:35 | 0.25d | 0d | Cognizant | 3.33h |
| 171 | 1.26.1 | Configuration and starting processes | 45min | 2006-10-19 10:44 | 2006-10-19 11:29 |  | 2006-03-24 15:35 | 2006-03-24 16:35 | 1h | 0d | Cognizant | 0.75h |
| 172 | 1.26.2 | ITG Checkout script (ONE_MAIN Session) | 15min | 2006-10-19 11:29 | 2006-10-19 11:44 | 171 | 2006-03-24 16:35 | 2006-03-27 08:15 | 40min | 0d | Cognizant | 0.25h |
| 173 | 1.26.3 | Backup and Reporting | 20min | 2006-10-19 11:44 | 2006-10-19 13:04 | 172 | 2006-03-27 08:15 | 2006-03-27 08:35 | 20min | 0d | Cognizant | 0.33h |
| 174 | 1.8.1.4 | Check: Sign Off on Checkout Scripts, Logs and Results | 20min | 2006-10-19 13:04 | 2006-10-19 13:24 | 173 | 2006-03-27 08:35 | 2006-03-27 08:35 | 0h | 0d | CBOE | 0.33h |

| ID | WBS | Task | Duration | Start | Finish | Predecessors | Baseline start | Baseline finish | Baseline duration | Total slack | Resources | Work |
| --- | --- | --- | --- | --- | --- | --- | --- | --- | --- | --- | --- | --- |
| 175 | 1.27 | **Multi-class Order step-up test for ONE_MAIN [Scenario 2]** | 0.22d | 2006-10-19 13:24 | 2006-10-19 15:09 | 170 | 2006-03-27 08:35 | 2006-03-27 10:25 | 0.23d | 0d | Cognizant | 3.5h |
| 176 | 1.27.1 | BC Cleanup, Initial Driver Setup, | 20min | 2006-10-19 13:24 | 2006-10-19 13:44 | 174 | 2006-03-27 08:35 | 2006-03-27 08:55 | 20min | 0d | Cognizant | 0.33h |
| 177 | 1.27.2 | Test Execution for No BOTR | 40min | 2006-10-19 13:44 | 2006-10-19 14:24 | 176 | 2006-03-27 08:55 | 2006-03-27 09:55 | 1h | 0d | Cognizant | 0.67h |
| 178 | 1.27.3 | endOfPerformance and Backup | 15min | 2006-10-19 14:24 | 2006-10-19 14:39 | 177 | 2006-03-27 09:55 | 2006-03-27 10:10 | 15min | 0d | Cognizant | 0.25h |
| 179 | 1.27.4 | Reporting through KR site | 10min | 2006-10-19 14:39 | 2006-10-19 14:49 | 178 | 2006-03-27 10:10 | 2006-03-27 10:25 | 15min | 0d | Cognizant | 0.17h |
| 180 | 1.8.2.5 | Check: Sign Off on Logs and Results | 20min | 2006-10-19 14:49 | 2006-10-19 15:09 | 179 | 2006-03-27 10:25 | 2006-03-27 10:25 | 0h | 0d | CBOE | 0.33h |
| 181 | 1.28 | **Multi-class Quote step-up test [Scenario 1]** | 0.27d | 2006-10-19 15:09 | 2006-10-20 08:19 | 175 | 2006-03-27 10:25 | 2006-03-27 13:35 | 0.27d | 0d | Cognizant | 4.33h |
| 182 | 1.28.1 | BC Cleanup, Initial Driver Setup, | 20min | 2006-10-19 15:09 | 2006-10-19 15:29 | 180 | 2006-03-27 10:25 | 2006-03-27 10:45 | 20min | 0d | Cognizant | 0.33h |
| 183 | 1.28.2 | Test Execution for No BOTR | 1h | 2006-10-19 15:29 | 2006-10-19 16:29 | 182 | 2006-03-27 10:45 | 2006-03-27 11:45 | 1h | 0d | Cognizant | 1h |
| 184 | 1.28.3 | endOfPerformance and Backup | 20min | 2006-10-19 16:29 | 2006-10-19 16:49 | 183 | 2006-03-27 11:45 | 2006-03-27 13:15 | 30min | 0d | Cognizant | 0.33h |
| 185 | 1.28.4 | Reporting through KR site | 10min | 2006-10-19 16:49 | 2006-10-19 16:59 | 184 | 2006-03-27 13:15 | 2006-03-27 13:35 | 20min | 0d | Cognizant | 0.17h |
| 186 | 1.8.3.5 | Check: Sign Off on Logs and Results | 20min | 2006-10-19 16:59 | 2006-10-20 08:19 | 185 | 2006-03-27 13:35 | 2006-03-27 13:35 | 0h | 0d | CBOE | 0.33h |
| 187 | 1.30 | **Failover ONE_MAIN BC (New to Old)** | 0.29d | 2006-10-20 08:19 | 2006-10-20 10:39 | 181 | 2006-03-27 13:35 | 2006-03-27 16:20 | 0.34d | 0d | Cognizant | 4.67h |
| 188 | 1.8.4.1 | Cleanup | 20min | 2006-10-20 08:19 | 2006-10-20 08:39 | 186 | 2006-03-27 13:35 | 2006-03-27 13:55 | 20min | 0d | Cognizant | 0.33h |
| 189 | 1.30.1 | Initial setup for test Drivers (starting processes on BC Slave.) | 20min | 2006-10-20 08:39 | 2006-10-20 08:59 | 188 | 2006-03-27 13:55 | 2006-03-27 14:20 | 25min | 0d | Cognizant | 0.33h |
| 190 | 1.30.2 | Quote/Order ONE_MAIN traffic going before/during/after failover. Test Execution | 20min | 2006-10-20 08:59 | 2006-10-20 09:19 | 189 | 2006-03-27 14:20 | 2006-03-27 14:50 | 30min | 0d | Cognizant | 0.33h |
| 191 | 1.30.3 | ITG Checkout script (for ONE_MAIN Session) | 20min | 2006-10-20 09:19 | 2006-10-20 09:39 | 190 | 2006-03-27 14:50 | 2006-03-27 15:30 | 40min | 0d | Cognizant | 0.33h |
| 192 | 1.30.4 | Backup for Failover and ITG Checkout | 20min | 2006-10-20 09:39 | 2006-10-20 09:59 | 191 | 2006-03-27 15:30 | 2006-03-27 15:50 | 20min | 0d | Cognizant | 0.33h |
| 193 | 1.30.5 | Generate Report for Failover Timings for all BC Processes (taking time from log files) | 20min | 2006-10-20 09:59 | 2006-10-20 10:19 | 192 | 2006-03-27 15:50 | 2006-03-27 16:20 | 30min | 0d | Cognizant | 0.33h |
| 194 | 1.8.4.7 | Check: Sign Off on Checkout Scripts,Logs and Results | 20min | 2006-10-20 10:19 | 2006-10-20 10:39 | 193 | 2006-03-27 16:20 | 2006-03-27 16:20 | 0h | 0d | CBOE | 0.33h |
| 195 | 1.11 | **4 Hour Endurance Test** | 0.75d | 2006-10-20 10:39 | 2006-10-23 08:39 | 187 | 2006-03-31 13:15 | 2006-04-03 10:15 | 0.75d | 0d | Cognizant | 12h |
| 196 | 1.11.1 | Cleanup for W_MAIN and ONE_MAIN BC and Driver setup and CAS Bounce | 40min | 2006-10-20 10:39 | 2006-10-20 11:19 | 194 | 2006-03-31 13:15 | 2006-03-31 14:15 | 1h | 0d | Cognizant | 0.67h |
| 197 | 1.11.2 | 4 hour Sanity Check | 4h | 2006-10-20 11:19 | 2006-10-20 16:19 | 196 | 2006-03-31 14:15 | 2006-04-03 09:15 | 4h | 0d | Cognizant | 4h |
| 198 | 1.11.3 | endOfPerformance and Backup and Reporting | 1h | 2006-10-20 16:19 | 2006-10-23 08:19 | 197 | 2006-04-03 09:15 | 2006-04-03 10:15 | 1h | 0d | Cognizant | 1h |
| 199 | 1.9.4 | Check: Sign off on Checkout Scripts | 20min | 2006-10-23 08:19 | 2006-10-23 08:39 | 198 |  |  |  | 0d | CBOE | 0.33h |

| ID | WBS | Task | Duration | Start | Finish | Predecessors | Baseline start | Baseline finish | Baseline duration | Total slack | Resources | Work |
| --- | --- | --- | --- | --- | --- | --- | --- | --- | --- | --- | --- | --- |
| 200 | 1.7 | **Install & perform tests on ONE_MAIN BC B Side** | 0.52d | 2006-10-23 08:39 | 2006-10-23 13:49 | 169 | 2006-03-27 16:20 | 2006-03-28 13:05 | 0.59d | 0d | Cognizant | 12.5h |
| 201 | 1.31 | **Install ONE_MAIN BC (B)** | 0.21d | 2006-10-23 08:39 | 2006-10-23 10:19 | 195 | 2006-03-27 16:20 | 2006-03-28 09:20 | 0.25d | 0d | Cognizant | 3.33h |
| 202 | 1.31.1 | Configuration and starting processes | 45min | 2006-10-23 08:39 | 2006-10-23 09:24 | 199 | 2006-03-27 16:20 | 2006-03-28 08:20 | 1h | 0d | Cognizant | 0.75h |
| 203 | 1.31.2 | ITG Checkout script (ONE_MAIN Session) | 15min | 2006-10-23 09:24 | 2006-10-23 09:39 | 202 | 2006-03-28 08:20 | 2006-03-28 09:00 | 40min | 0d | Cognizant | 0.25h |
| 204 | 1.31.3 | Backup and Reporting | 20min | 2006-10-23 09:39 | 2006-10-23 09:59 | 203 | 2006-03-28 09:00 | 2006-03-28 09:20 | 20min | 0d | Cognizant | 0.33h |
| 205 | 1.10.1.4 | Check: Sign Off on Checkout Scripts, Logs and Results | 20min | 2006-10-23 09:59 | 2006-10-23 10:19 | 204 | 2006-03-28 09:20 | 2006-03-28 09:20 | 0h | 0d | CBOE | 0.33h |
| 206 | 1.10.2 | **Failover ONE_MAIN BC (New to New)** | 0.31d | 2006-10-23 10:19 | 2006-10-23 13:49 | 201 | 2006-03-28 09:20 | 2006-03-28 13:05 | 0.34d | 0d | Cognizant | 5h |
| 207 | 1.10.2.1 | Cleanup | 20min | 2006-10-23 10:19 | 2006-10-23 10:39 | 205 | 2006-03-28 09:20 | 2006-03-28 09:40 | 20min | 0d | Cognizant | 0.33h |
| 208 | 1.10.2.2 | Initial setup for test Drivers (starting processes on BC Slave.) | 20min | 2006-10-23 10:39 | 2006-10-23 10:59 | 207 | 2006-03-28 09:40 | 2006-03-28 10:05 | 25min | 0d | Cognizant | 0.33h |
| 209 | 1.10.2.3 | Quote/Order ONE_MAIN traffic going before/during/after failover. Test Execution | 20min | 2006-10-23 10:59 | 2006-10-23 11:19 | 208 | 2006-03-28 10:05 | 2006-03-28 10:35 | 30min | 0d | Cognizant | 0.33h |
| 210 | 1.10.2.4 | ITG Checkout script (ONE_MAIN Session) | 20min | 2006-10-23 11:19 | 2006-10-23 11:39 | 209 | 2006-03-28 10:35 | 2006-03-28 11:15 | 40min | 0d | Cognizant | 0.33h |
| 211 | 1.10.2.5 | Backup for Failover and ITG Checkout | 20min | 2006-10-23 11:39 | 2006-10-23 11:59 | 210 | 2006-03-28 11:15 | 2006-03-28 11:35 | 20min | 0d | Cognizant | 0.33h |
| 212 | 1.10.2.6 | Generate Report for Failover Timings for all BC Processes (taking time from log files) | 30min | 2006-10-23 11:59 | 2006-10-23 13:29 | 211 | 2006-03-28 11:35 | 2006-03-28 13:05 | 30min | 0d | Cognizant | 0.5h |
| 213 | 1.10.2.7 | Check: Sign Off on Checkout Scripts,Logs and Results | 20min | 2006-10-23 13:29 | 2006-10-23 13:49 | 212 | 2006-03-28 13:05 | 2006-03-28 13:05 | 0h | 0d | CBOE | 0.33h |
| 214 | 1.11 | **Install A Side FE, Failover and Perf test** | 0.69d | 2006-10-23 13:49 | 2006-10-24 10:19 | 200 | 2006-04-10 08:10 | 2006-04-10 16:15 | 0.89d | 0d | Cognizant | 16.5h |
| 215 | 1.32 | **Install 1 FE** | 0.21d | 2006-10-23 13:49 | 2006-10-23 15:29 | 206 | 2006-04-10 08:10 | 2006-04-10 10:10 | 0.25d | 0d | Cognizant | 3.33h |
| 216 | 1.32.1 | Configuration and starting processes | 30min | 2006-10-23 13:49 | 2006-10-23 14:19 | 213 | 2006-04-10 08:10 | 2006-04-10 09:10 | 1h | 0d | Cognizant | 0.5h |
| 217 | 1.32.2 | ITG Checkout script (W_MAIN and ONE_MAIN Session) | 30min | 2006-10-23 14:19 | 2006-10-23 14:49 | 216 | 2006-04-10 09:10 | 2006-04-10 09:50 | 40min | 0d | Cognizant | 0.5h |
| 218 | 1.32.3 | Backup and Reporting | 20min | 2006-10-23 14:49 | 2006-10-23 15:09 | 217 | 2006-04-10 09:50 | 2006-04-10 10:10 | 20min | 0d | Cognizant | 0.33h |
| 219 | 1.11.1.4 | Check: Sign Off on Checkout Scripts,Logs and Results | 20min | 2006-10-23 15:09 | 2006-10-23 15:29 | 218 | 2006-03-28 13:05 | 2006-03-28 13:05 | 0h | 0d | CBOE | 0.33h |
| 220 | 1.11.2 | **Hybrid Performance test Scenario_3 Multi-class Step-up with BOTR/EI/OT/LS/MDHQ/QQ session: W_MAIN** | 0.27d | 2006-10-23 15:29 | 2006-10-24 08:39 | 219 | 2006-03-30 13:45 | 2006-03-30 16:55 | 0.4d | 0d | Cognizant | 4.33h |
| 221 | 1.11.2.1 | BC Cleanup, Initial Driver Setup, | 20min | 2006-10-23 15:29 | 2006-10-23 15:49 | 219 | 2006-03-30 13:45 | 2006-03-30 14:05 | 20min | 0d | Cognizant | 0.33h |
| 222 | 1.11.2.2 | Test Execution | 1h | 2006-10-23 15:49 | 2006-10-23 16:49 | 221 | 2006-03-30 14:05 | 2006-03-30 15:05 | 1h | 0d | Cognizant | 1h |
| 223 | 1.11.2.3 | endOfPerformance and Backup | 20min | 2006-10-23 16:49 | 2006-10-24 08:09 | 222 | 2006-03-30 15:55 | 2006-03-30 16:25 | 30min | 0d | Cognizant | 0.33h |
| 224 | 1.11.2.4 | Reporting through KR site | 10min | 2006-10-24 08:09 | 2006-10-24 08:19 | 223 | 2006-03-30 16:25 | 2006-03-30 16:55 | 30min | 0d | Cognizant | 0.17h |
| 225 | 1.11.2.5 | Check: Sign off on Checkout Scripts | 20min | 2006-10-24 08:19 | 2006-10-24 08:39 | 224 |  |  |  | 0d | CBOE | 0.33h |

| ID | WBS | Task | Duration | Start | Finish | Predecessors | Baseline start | Baseline finish | Baseline duration | Total slack | Resources | Work |
| --- | --- | --- | --- | --- | --- | --- | --- | --- | --- | --- | --- | --- |
| 226 | 1.34 | **FE Failover** | 0.21d | 2006-10-24 08:39 | 2006-10-24 10:19 | 220 | 2006-04-10 14:20 | 2006-04-10 16:15 | 0.24d | 0d | Cognizant | 3.33h |
| 227 | 1.34.2 | Failover to FE2 side,Without restarting CAS, restart FE2 kill FE1 | 30min | 2006-10-24 08:39 | 2006-10-24 09:09 | 225 | 2006-04-10 14:45 | 2006-04-10 15:15 | 30min | 0d | Cognizant | 0.5h |
| 228 | 1.34.3 | ITG Checkout script after FE New to Old Failover | 30min | 2006-10-24 09:09 | 2006-10-24 09:39 | 227 | 2006-04-10 15:15 | 2006-04-10 15:55 | 40min | 0d | Cognizant | 0.5h |
| 229 | 1.34.4 | Backup for Failover | 20min | 2006-10-24 09:39 | 2006-10-24 09:59 | 228 | 2006-04-10 15:55 | 2006-04-10 16:15 | 20min | 0d | Cognizant | 0.33h |
| 230 | 1.11.3.4 | Check: Sign off on Checkout Scripts | 20min | 2006-10-24 09:59 | 2006-10-24 10:19 | 229 |  |  |  | 0d | CBOE | 0.33h |
| 231 | 1.12 | **Install B Side FE and Failover Test** | 0.44d | 2006-10-24 10:19 | 2006-10-24 14:49 | 214 | 2006-04-10 16:15 | 2006-04-11 11:10 | 0.49d | 0d | Cognizant | 10.5h |
| 232 | 1.35 | **Install FE2(Kill A side FE to make sure using B side)** | 0.21d | 2006-10-24 10:19 | 2006-10-24 11:59 | 215 | 2006-04-10 16:15 | 2006-04-11 09:15 | 0.25d | 0d | Cognizant | 3.33h |
| 233 | 1.35.1 | Configuration and starting processes | 30min | 2006-10-24 10:19 | 2006-10-24 10:49 | 230 | 2006-04-10 16:15 | 2006-04-11 08:15 | 1h | 0d | Cognizant | 0.5h |
| 234 | 1.35.2 | ITG Checkout script (W_MAIN and ONE_MAIN Session) | 30min | 2006-10-24 10:49 | 2006-10-24 11:19 | 233 | 2006-04-11 08:15 | 2006-04-11 08:55 | 40min | 0d | Cognizant | 0.5h |
| 235 | 1.35.3 | Backup and Reporting | 20min | 2006-10-24 11:19 | 2006-10-24 11:39 | 234 | 2006-04-11 08:55 | 2006-04-11 09:15 | 20min | 0d | Cognizant | 0.33h |
| 236 | 1.12.1.4 | Check: Sign Off on Checkout Scripts,Logs and Results | 20min | 2006-10-24 11:39 | 2006-10-24 11:59 | 235 | 2006-03-28 13:05 | 2006-03-28 13:05 | 0h | 0d | CBOE | 0.33h |
| 237 | 1.34 | **FE Failover** | 0.23d | 2006-10-24 11:59 | 2006-10-24 14:49 | 232 | 2006-04-10 14:20 | 2006-04-10 16:15 | 0.24d | 0d | Cognizant | 3.67h |
| 238 | 1.34.2 | Failover to FE2 side,Without restarting CAS, restart FE2 kill FE1 | 30min | 2006-10-24 11:59 | 2006-10-24 13:29 | 236 | 2006-04-10 14:45 | 2006-04-10 15:15 | 30min | 0d | Cognizant | 0.5h |
| 239 | 1.34.3 | ITG Checkout script after FE New to New Failover | 30min | 2006-10-24 13:29 | 2006-10-24 13:59 | 238 | 2006-04-10 15:15 | 2006-04-10 15:55 | 40min | 0d | Cognizant | 0.5h |
| 240 | 1.34.4 | Backup for Failover | 20min | 2006-10-24 13:59 | 2006-10-24 14:19 | 239 | 2006-04-10 15:55 | 2006-04-10 16:15 | 20min | 0d | Cognizant | 0.33h |
| 241 | 1.12.2.4 | Check: Sign off on Checkout Scripts | 30min | 2006-10-24 14:19 | 2006-10-24 14:49 | 240 |  |  |  | 0d | CBOE | 0.5h |
| 242 | 1.13 | **Server Side Full Cleanup** | 0.33d | 2006-10-24 14:49 | 2006-10-25 08:29 | 231 |  |  |  | 0d | Cognizant | 5.33h |
| 243 | 1.13.1 | Time server full startup after cleanup (See Server Startup Timing Page) | 2h | 2006-10-24 14:49 | 2006-10-24 16:49 | 241 |  |  |  | 0d | Cognizant | 2h |
| 244 | 1.13.2 | Backup for server Timings | 20min | 2006-10-24 16:49 | 2006-10-25 08:09 | 243 |  |  |  | 0d | Cognizant | 0.33h |
| 245 | 1.13.3 | Check: Sign off on Server Timings | 20min | 2006-10-25 08:09 | 2006-10-25 08:29 | 244 |  |  |  | 0d | CBOE | 0.33h |
| 246 | 1.14 | **Install MDGC A Side** | 0.47d | 2006-10-25 08:29 | 2006-10-25 13:14 | 242 | 2006-04-11 11:10 | 2006-04-12 14:45 | 1.32d | 0d | Cognizant | 11.25h |
| 247 | 1.37 | **Install MDGCA side (perf driver install if needed)** | 0.24d | 2006-10-25 08:29 | 2006-10-25 10:24 | 242 | 2006-04-11 11:10 | 2006-04-11 14:10 | 0.25d | 0d | Cognizant | 3.83h |
| 248 | 1.37.1 | Configuration and starting processes | 45min | 2006-10-25 08:29 | 2006-10-25 09:14 | 245 | 2006-04-11 11:10 | 2006-04-11 13:10 | 1h | 0d | Cognizant | 0.75h |
| 249 | 1.37.2 | ITG Checkout script (W_MAIN and ONE_MAIN Session) | 30min | 2006-10-25 09:14 | 2006-10-25 09:44 | 248 | 2006-04-11 13:10 | 2006-04-11 13:50 | 40min | 0d | Cognizant | 0.5h |
| 250 | 1.37.3 | Backup and Reporting | 20min | 2006-10-25 09:44 | 2006-10-25 10:04 | 249 | 2006-04-11 13:50 | 2006-04-11 14:10 | 20min | 0d | Cognizant | 0.33h |
| 251 | 1.14.1.4 | Check: Sign Off on Checkout Scripts,Logs and Results | 20min | 2006-10-25 10:04 | 2006-10-25 10:24 | 250 | 2006-03-28 13:05 | 2006-03-28 13:05 | 0h | 0d | CBOE | 0.33h |

| ID | WBS | Task | Duration | Start | Finish | Predecessors | Baseline start | Baseline finish | Baseline duration | Total slack | Resources | Work |
| --- | --- | --- | --- | --- | --- | --- | --- | --- | --- | --- | --- | --- |
| 252 | 1.14.2 | **Hybrid test scenario 5 (Product State Change Test)** | 0.23d | 2006-10-25 10:24 | 2006-10-25 13:14 | 251 |  |  |  | 0d | Cognizant | 3.67h |
| 253 | 1.14.2.1 | BC Cleanup, Initial Driver Setup, | 20min | 2006-10-25 10:24 | 2006-10-25 10:44 | 251 |  |  |  | 0d | Cognizant | 0.33h |
| 254 | 1.14.2.2 | Test Execution - Global Server Bounce | 40min | 2006-10-25 10:44 | 2006-10-25 11:24 | 253 |  |  |  | 0d | Cognizant | 0.67h |
| 255 | 1.14.2.3 | Monitor and Backup logs | 20min | 2006-10-25 11:24 | 2006-10-25 11:44 | 254 |  |  |  | 0d | Cognizant | 0.33h |
| 256 | 1.14.2.4 | Reporting through KR site | 10min | 2006-10-25 11:44 | 2006-10-25 11:54 | 255 |  |  |  | 0d | Cognizant | 0.17h |
| 257 | 1.14.2.5 | Check: Sign Off on Logs and Results | 20min | 2006-10-25 11:54 | 2006-10-25 13:14 | 256 |  |  |  | 0d | CBOE | 0.33h |
| 258 | 1.15 | **Install MDGC B Side** | 0.51d | 2006-10-25 13:14 | 2006-10-26 08:19 | 246 | 2006-04-12 14:45 | 2006-04-12 16:45 | 0.25d | 0d | Cognizant | 12.25h |
| 259 | 1.41 | **Install MDGCB side and failover** | 0.24d | 2006-10-25 13:14 | 2006-10-25 15:09 | 247 | 2006-04-12 14:45 | 2006-04-12 16:45 | 0.25d | 0d | Cognizant | 3.83h |
| 260 | 1.41.1 | Configuration and starting processes | 45min | 2006-10-25 13:14 | 2006-10-25 13:59 | 257 | 2006-04-12 14:45 | 2006-04-12 15:45 | 1h | 0d | Cognizant | 0.75h |
| 261 | 1.41.2 | ITG Checkout script (W_MAIN and ONE_MAIN Session) | 30min | 2006-10-25 13:59 | 2006-10-25 14:29 | 260 | 2006-04-12 15:45 | 2006-04-12 16:25 | 40min | 0d | Cognizant | 0.5h |
| 262 | 1.41.3 | Backup and Reporting | 20min | 2006-10-25 14:29 | 2006-10-25 14:49 | 261 | 2006-04-12 16:25 | 2006-04-12 16:45 | 20min | 0d | Cognizant | 0.33h |
| 263 | 1.15.1.4 | Check: Sign Off on Checkout Scripts,Logs and Results | 20min | 2006-10-25 14:49 | 2006-10-25 15:09 | 262 | 2006-03-28 13:05 | 2006-03-28 13:05 | 0h | 0d | CBOE | 0.33h |
| 264 | 1.15.2 | **Hybrid Performance test Scenario_3 Multi-class Step-up with BOTR/EI/OT/LS/MDHQ/QQ session: W_MAIN** | 0.27d | 2006-10-25 15:09 | 2006-10-26 08:19 | 259 | 2006-03-30 13:45 | 2006-03-30 16:55 | 0.4d | 0d | Cognizant | 4.33h |
| 265 | 1.15.2.1 | BC Cleanup, Initial Driver Setup, | 20min | 2006-10-25 15:09 | 2006-10-25 15:29 | 263 | 2006-03-30 13:45 | 2006-03-30 14:05 | 20min | 0d | Cognizant | 0.33h |
| 266 | 1.15.2.2 | Test Execution | 1h | 2006-10-25 15:29 | 2006-10-25 16:29 | 265 | 2006-03-30 14:05 | 2006-03-30 15:05 | 1h | 0d | Cognizant | 1h |
| 267 | 1.15.2.3 | endOfPerformance and Backup | 20min | 2006-10-25 16:29 | 2006-10-25 16:49 | 266 | 2006-03-30 15:55 | 2006-03-30 16:25 | 30min | 0d | Cognizant | 0.33h |
| 268 | 1.15.2.4 | Reporting through KR site | 10min | 2006-10-25 16:49 | 2006-10-25 16:59 | 267 | 2006-03-30 16:25 | 2006-03-30 16:55 | 30min | 0d | Cognizant | 0.17h |
| 269 | 1.15.2.5 | Check: Sign off on Checkout Scripts | 20min | 2006-10-25 16:59 | 2006-10-26 08:19 | 268 |  |  |  | 0d | CBOE | 0.33h |
| 270 | 1.16 | **OHX Specific Tests** | 3.75d | 2006-10-26 08:19 | 2006-10-31 15:19 | 258 |  |  |  | 0d | Cognizant | 82h |
| 271 | 1.16.1 | **HAL+BOTR Tests** | 1.25d | 2006-10-26 08:19 | 2006-10-27 10:19 | 264 |  |  |  | 0d | Cognizant | 20h |
| 272 | 1.16.1.1 | Scenario1 | 2.5h | 2006-10-26 08:19 | 2006-10-26 10:49 | 269 |  |  |  | 0d | Cognizant | 2.5h |
| 273 | 1.16.1.2 | Scenario2 | 2.5h | 2006-10-26 10:49 | 2006-10-26 14:19 | 272 |  |  |  | 0d | Cognizant | 2.5h |
| 274 | 1.16.1.3 | Scenario3 | 2.5h | 2006-10-26 14:19 | 2006-10-26 16:49 | 273 |  |  |  | 0d | Cognizant | 2.5h |
| 275 | 1.16.1.4 | Scenario4 | 2.5h | 2006-10-26 16:49 | 2006-10-27 10:19 | 274 |  |  |  | 0d | Cognizant | 2.5h |

| ID | WBS | Task | Duration | Start | Finish | Predecessors | Total slack | Resources | Work |
| --- | --- | --- | --- | --- | --- | --- | --- | --- | --- |
| 276 | 1.16.2 | **W_MAIN OPG Orders Opening Test** | 0.75d | 2006-10-27 10:19 | 2006-10-30 08:19 | 271 | 0d | Cognizant | 12h |
| 277 | 1.16.2.1 | Opening Test , Block Size=1, Parallel=False | 2h | 2006-10-27 10:19 | 2006-10-27 13:19 | 275 | 0d | Cognizant | 2h |
| 278 | 1.16.2.2 | Opening Test , Block Size=20, Parallel=False | 2h | 2006-10-27 13:19 | 2006-10-27 15:19 | 277 | 0d | Cognizant | 2h |
| 279 | 1.16.2.3 | Opening Test , Block Size=20, Parallel=True | 2h | 2006-10-27 15:19 | 2006-10-30 08:19 | 278 | 0d | Cognizant | 2h |
| 280 | 1.16.3 | W_MAIN I (Quote like) IOC test | 2h | 2006-10-30 08:19 | 2006-10-30 10:19 | 276 | 0d | Cognizant | 2h |
| 281 | 1.16.4 | W_MAIN IOC Order Test | 2h | 2006-10-30 10:19 | 2006-10-30 13:19 | 280 | 0d | Cognizant | 2h |
| 282 | 1.16.5 | W_MAIN MOC Test | 2h | 2006-10-30 13:19 | 2006-10-30 15:19 | 281 | 0d | Cognizant | 2h |
| 283 | 1.16.6 | MOC Triggered at n seconds after Close | 2h | 2006-10-30 15:19 | 2006-10-31 08:19 | 282 | 0d | Cognizant | 2h |
| 284 | 1.16.7 | **ONE_MAIN OPG Order Test** | 0.75d | 2006-10-31 08:19 | 2006-10-31 15:19 | 276 | 0d | Cognizant | 12h |
| 285 | 1.16.7.1 | Opening Test , Block Size=1, Parallel=False | 2h | 2006-10-31 08:19 | 2006-10-31 10:19 | 283 | 0d | Cognizant | 2h |
| 286 | 1.16.7.2 | Opening Test , Block Size=20, Parallel=False | 2h | 2006-10-31 10:19 | 2006-10-31 13:19 | 285 | 0d | Cognizant | 2h |
| 287 | 1.16.7.3 | Opening Test , Block Size=20, Parallel=True | 2h | 2006-10-31 13:19 | 2006-10-31 15:19 | 286 | 0d | Cognizant | 2h |
