# CBOE Stock System(Main)-98

Schedule from MS Project, 2002-10-08 to 2003-11-05, A marks actual dates.
CBOE

## Calendars

- Standard: Mon-Fri 08:00-12:00, 13:00-17:00; Sat-Sun off. Exceptions (off unless hours are given): 2002-12-25, 2003-01-01.

## Resources

| Resource |
| --- |
| Brad |
| SBT |
| Sandip |
| Carol |
| Nyoman |
| rad |
| Eva |
| \ |
| SBT Server Group |
| DOS |
| Infra Group |
| Mark Woyna |
| SBT staff |
| Mmark Woyna |
| Murali Yellpeddy |
| Stock Staff |
| DBA Group |
| Mei Wu |
| Stock |
| DB |
| Hardware |
| DBA |
| John Wickberg |
| Jeff Illian |
| 55 |
| Sandip Chat |
| Consultant |
| Matt |
| Crystal |
| Chrystal |
| Stella |
| <att |
| Sadip |
| 6.4.7 |
| Membership |
| Regulatory |
| Unknown |
| Staff |
| All |
| Resource |
| Mike N |

## Schedule

| ID | WBS | Task | Type | Duration | Start | Finish | Predecessors | Complete | Remaining | Baseline start | Baseline finish | Baseline duration | Total slack | Constraint | Resources | Work | Actual work | Text1 |
| --- | --- | --- | --- | --- | --- | --- | --- | --- | --- | --- | --- | --- | --- | --- | --- | --- | --- | --- |
| 1 | 1 | **CBOEdirect Stock System** |  | 280d | 2002-10-08 A | 2003-11-05 |  | 53% | 132.61d | 2002-10-08 | 2003-06-04 | 170d | 0d |  |  | 11037.6h | 6819.85h |  |
| 3 | 1.1 | **Requirements Gathering and Definition** |  | 62d | 2002-11-25 A | 2003-02-20 A |  | 100% |  | 2002-11-25 | 2003-02-20 | 62d |  |  |  | 1024h | 1024h |  |
| 4 | 1.1.1 | Requirements Member document |  | 60d | 2002-11-25 A | 2003-02-20 A |  | 100% |  | 2002-11-25 | 2003-02-20 | 60d |  |  | Brad | 480h | 480h |  |
| 5 | 1.1.2 | Use Case Comparism |  | 31d | 2002-11-25 A | 2003-01-10 A |  | 100% |  | 2002-11-25 | 2003-01-10 | 31d |  |  | Brad | 248h | 248h | Brad |
| 6 | 1.1.3 | **SBT Code Analysis** |  | 43d | 2002-11-25 A | 2003-01-24 A |  | 100% |  | 2002-11-25 | 2003-01-24 | 43d |  |  |  | 136h | 136h |  |
| 7 | 1.1.3.1 | Order Handling Service |  | 5d | 2002-11-25 A | 2002-11-29 A |  | 100% |  | 2002-11-25 | 2002-11-29 | 5d |  |  | Sandip | 40h | 40h | Sandip |
| 8 | 1.1.3.2 | Market Data Service |  | 5d | 2002-12-02 A | 2002-12-06 A | 7 | 100% |  | 2002-12-02 | 2002-12-06 | 5d |  |  | Sandip | 40h | 40h | Sandip |
| 9 | 1.1.3.3 | Broker Service |  | 7d | 2002-12-09 A | 2002-12-17 A | 8 | 100% |  | 2002-12-09 | 2002-12-17 | 7d |  |  | Sandip | 56h | 56h | Sandip |
| 10 | 1.1.3.4 | Presentation to group | milestone | 0d | 2002-12-17 A | 2002-12-17 A | 9 | 100% |  | 2002-12-17 | 2002-12-17 | 0d |  |  | Sandip |  |  | Sandip |
| 11 | 1.1.3.5 | CATS Support |  | 26d | 2002-12-18 A | 2003-01-24 A | 10 | 100% |  | 2002-12-18 | 2003-01-24 | 26d |  |  |  |  |  |  |
| 12 | 1.1.4 | **Use Case Document** |  | 20d | 2003-01-20 A | 2003-02-14 A |  | 100% |  | 2003-01-20 | 2003-02-17 | 21d |  |  |  | 160h | 160h |  |
| 13 | 1.1.4.1 | Allocate Trade |  | 2d | 2003-01-20 A | 2003-01-21 A |  | 100% |  | 2003-01-20 | 2003-01-21 | 2d |  | start no earlier than 2003-01-20 | Brad | 16h | 16h | Brad |
| 14 | 1.1.4.2 | Monitor Sell Short |  | 2d | 2003-01-22 A | 2003-01-23 A | 13 | 100% |  | 2003-01-22 | 2003-01-23 | 2d |  |  | Brad | 16h | 16h | Brad |
| 15 | 1.1.4.3 | Bust Trade |  | 2d | 2003-01-24 A | 2003-01-27 A | 14 | 100% |  | 2003-01-24 | 2003-01-27 | 2d |  |  | Brad | 16h | 16h | Brad |
| 16 | 1.1.4.4 | Submit Customer Sell Short |  | 2d | 2003-01-28 A | 2003-01-29 A | 15 | 100% |  | 2003-01-28 | 2003-01-29 | 2d |  |  | Brad | 16h | 16h | Brad |
| 17 | 1.1.4.5 | Submit Limit Order |  | 2d | 2003-01-30 A | 2003-01-31 A | 16 | 100% |  | 2003-01-30 | 2003-01-31 | 2d |  |  | Brad | 16h | 16h | Brad |
| 18 | 1.1.4.6 | Submit Market Order |  | 2d | 2003-02-03 A | 2003-02-04 A | 17 | 100% |  | 2003-02-03 | 2003-02-04 | 2d |  |  | Brad | 16h | 16h | Brad |
| 19 | 1.1.4.7 | Submit Quote |  | 2d | 2003-02-05 A | 2003-02-06 A | 18 | 100% |  | 2003-02-05 | 2003-02-06 | 2d |  |  | Brad | 16h | 16h | Brad |
| 20 | 1.1.4.8 | Submit Stop/Stop Limit |  | 1d | 2003-02-07 A | 2003-02-07 A | 19 | 100% |  | 2003-02-07 | 2003-02-07 | 1d |  |  | Brad | 8h | 8h | Brad |
| 21 | 1.1.4.9 | Monitor Stop/Stop Limit |  | 1d | 2003-02-10 A | 2003-02-10 A | 20 | 100% |  | 2003-02-10 | 2003-02-10 | 1d |  |  | Brad | 8h | 8h | Brad |
| 22 | 1.1.4.10 | NBBO IPP Protection |  | 1d | 2003-02-11 A | 2003-02-11 A | 21 | 100% |  | 2003-02-11 | 2003-02-11 | 1d |  |  | Brad | 8h | 8h | Brad |
| 23 | 1.1.4.11 | Done Order Entry |  | 1d | 2003-02-12 A | 2003-02-12 A | 22 | 100% |  | 2003-02-12 | 2003-02-12 | 1d |  |  | Brad | 8h | 8h | Brad |
| 24 | 1.1.4.12 | Market Open Rotation |  | 1d | 2003-02-13 A | 2003-02-13 A | 23 | 100% |  | 2003-02-13 | 2003-02-13 | 1d |  |  | Sandip | 8h | 8h | Sandip |
| 25 | 1.1.4.13 | Monitor Trade Through |  | 1d | 2003-02-14 A | 2003-02-14 A | 24 | 100% |  | 2003-02-14 | 2003-02-14 | 1d |  |  | Consultant | 8h | 8h | Consultant |
| 27 | 1.7.7.4 | Detail Design |  | 3d | 2003-04-25 A | 2003-04-30 A | 28 | 100% |  |  |  |  |  |  |  | 24h | 24h |  |

Notes:
- 4: 1/06/03 - Draft 1.01
- 5: Comparism is completed. / The main use cases for Stock will be re-written to follow the Booch Unified process more closely. The goal is to make it reader usable for the business.
- 6: In junction with the Use Case analysis and comparism. The code will be analyzed to determine re-use. Everyone will be involved with step, Brad will maintain the analysis documentation.
- 12: Note - This task will be dependent upon individual coders providing their use-case analysis for their own tasks. Brad will maintain the overall document.
- 14: Changed from requirements meeting with traders on 1/25/02.
- 15: Complete but needs verified with Business. Might be additional fields needed. Very basic bust scenario.
- 20: 1. Unsure of the send held order message. / 2. Use case seems suffient to continue development since we have source code.
- 21: Included as part of Submit Stop/Stop Limit
- 22: Needs research into IPP code. / The use case is vague so research into code will be needed. This is dependent upon the SBT code merge.
- 23: Not complete. Nyoman will need to define this out further.
- 25: Not entirely complete. Sandip might flush this out some more. / 1. The IPP branch after the code merge will contain the code for this. Potentially a updated use case as well.

| ID | WBS | Task | Type | Duration | Start | Finish | Predecessors | Complete | Baseline start | Baseline finish | Baseline duration | Constraint | Resources | Work | Actual work | Text1 |
| --- | --- | --- | --- | --- | --- | --- | --- | --- | --- | --- | --- | --- | --- | --- | --- | --- |
| 28 | 1.3 | **Development Enviroment setup** |  | 109.1d | 2002-11-21 A | 2003-04-25 A |  | 100% | 2002-11-25 | 2003-02-10 | 54d |  |  | 1961.6h | 1961.6h |  |
| 29 | 1.3.1 | **Iteration 1** |  | 50d | 2002-11-21 A | 2003-01-31 A |  | 100% |  |  |  |  |  | 368h | 368h |  |
| 30 | 1.3.1.1 | Meeting to discuss development environment - Haps0a |  | 1d | 2002-11-21 A | 2002-11-21 A |  | 100% | 2002-11-25 | 2002-11-25 | 1d |  | Brad; Mark Woyna; Eva; SBT staff | 32h | 32h | Brad,Mark Woyna,Eva,SBT staff |
| 31 | 1.3.1.2 | Haps0a Configuration Meeting |  | 1d | 2002-12-19 A | 2002-12-19 A |  | 100% |  |  |  | start no earlier than 2002-12-19 | Brad; Mark Woyna; Eva; SBT staff | 24h | 24h | Brad,Mark Woyna,Eva,SBT staff |
| 32 | 1.3.1.3 | Haps0a Request for help |  | 1d | 2002-12-30 A | 2002-12-30 A |  | 100% |  |  |  | start no earlier than 2002-12-30 | Brad; Mmark Woyna | 16h | 16h | Brad,Mmark Woyna |
| 33 | 1.3.1.4 | Haps Infrastructure Installation |  | 3d | 2003-01-06 A | 2003-01-08 A |  | 100% |  |  |  | start no earlier than 2003-01-06 | Murali Yellpeddy; Stock Staff | 48h | 48h | Murali Yellpeddy,Stock Staff |
| 34 | 1.3.1.5 | Contact DB staff to install SBT Database |  | 1d | 2003-01-09 A | 2003-01-09 A | 33 | 100% |  |  |  |  | Brad | 8h | 8h | Brad |
| 35 | 1.3.1.6 | Database Installation Complete |  | 4d | 2003-01-10 A | 2003-01-15 A | 34 | 100% |  |  |  |  | DBA Group | 32h | 32h | DBA Group |
| 36 | 1.3.1.7 | Infrastructure Installlation Complete |  | 5d | 2003-01-16 A | 2003-01-22 A | 35 | 100% |  |  |  |  | Murali Yellpeddy | 40h | 40h | Murali Yellpeddy |
| 37 | 1.3.1.8 | SBT Tradeengine install |  | 7d | 2003-01-23 A | 2003-01-31 A | 36 | 100% |  |  |  |  | Mei Wu; Murali Yellpeddy | 112h | 112h | Mei Wu,Murali Yellpeddy |
| 38 | 1.3.1.9 | CAS install to haps0a |  | 7d | 2003-01-23 A | 2003-01-31 A | 36 | 100% |  |  |  |  | Sandip | 56h | 56h | Sandip |
| 39 | 1.3.1.10 | Could Not complete CAS or Tradeengine Install | milestone | 0d | 2003-01-31 A | 2003-01-31 A | 38 | 100% |  |  |  |  |  |  |  |  |
| 40 | 1.3.2 | **Iteration 2** |  | 66.1d | 2003-01-23 A | 2003-04-25 A |  | 100% |  |  |  |  |  | 1569.6h | 1569.6h |  |
| 41 | 1.3.2.1 | Met with SBT/Hardware/DB for alternative solution |  | 1d | 2003-01-23 A | 2003-01-23 A |  | 100% |  |  |  | start no earlier than 2003-01-23 | SBT; Stock; DB; Hardware | 32h | 32h | SBT,Stock,DB,Hardware |
| 42 | 1.3.2.2 | Development Boxes ready |  | 9d | 2003-01-24 A | 2003-02-05 A | 41 | 100% |  |  |  |  | DOS; DBA | 144h | 144h | DOS,DBA |
| 43 | 1.3.2.3 | Infrastructure Install |  | 3d | 2003-02-06 A | 2003-02-10 A | 42 | 100% |  |  |  |  | Murali Yellpeddy; Sandip | 48h | 48h | Murali Yellpeddy,Sandip |
| 44 | 1.3.2.4 | Meeting to get Stock Dev branch and code |  | 1d | 2003-02-04 A | 2003-02-04 A |  | 100% |  |  |  | start no earlier than 2003-02-04 | Stock; SBT Server Group | 16h | 16h | Stock,SBT Server Group |
| 45 | 1.3.2.5 | SBT Code merge for stock branch |  | 3d | 2003-02-05 A | 2003-02-07 A | 44 | 100% |  |  |  |  | John Wickberg | 24h | 24h | John Wickberg |
| 46 | 1.3.2.6 | SBT Tradeengine and CAS Installation |  | 55d | 2003-02-07 A | 2003-04-25 A | 45 | 100% |  |  |  |  | Sandip; Matt; Brad | 1305.6h | 1305.6h | Sandip |
| 47 | 1.3.3 | **Database Model** |  | 1d | 2003-02-20 A | 2003-02-20 A |  | 100% |  |  |  |  |  | 24h | 24h |  |
| 48 | 1.3.3.1 | Meeting to finalize datamodel changes |  | 1d | 2003-02-20 A | 2003-02-20 A |  | 100% |  |  |  | start no earlier than 2003-02-20 | Eva; Brad; Carol | 24h | 24h | Eva,Brad,Carol |
| 50 | 1.4 | **Consultant Hire and Introduction** |  | 15d | 2003-03-17 A | 2003-04-04 A |  | 100% |  |  |  |  |  | 80h | 80h |  |
| 51 | 1.4.1 | **Matt Sochacki** |  | 5d | 2003-03-17 A | 2003-03-21 A |  | 100% |  |  |  |  |  | 40h | 40h |  |
| 52 | 1.4.1.1 | Overview of System |  | 1d | 2003-03-17 A | 2003-03-17 A |  | 100% |  |  |  | start no earlier than 2003-03-17 | Matt | 8h | 8h | Matt |
| 53 | 1.4.1.2 | Traning/Setup |  | 4d | 2003-03-18 A | 2003-03-21 A | 52 | 100% |  |  |  |  | Matt | 32h | 32h | Matt |

Notes:
- 28: History... / 1. Request initially made in November. / 2. HAPS0a was given in January to test with. / 3. SBT was not able to be successfully installed and brought up. / 4. 2 new machines( sktdev, stkcas ) were requested. / 5. Installation attemping on those.
- 30: 1. Brad will contact QA to install a copy of CBOEDirect( Trade Service, Business Cluster ) onto Haps0a. The infrastructure can be run on another box of Paul Cicora. / 2. Paul Cicora and Brad Samuels will forward the install document to us for us to learn a little about the configuration.
- 31: 1. Attempting to setup HAps0a. Still need documenation from SBT.
- 33: Murali began the haps0a install for infrastructure. He updated the QA install from previous meeting to a more up to date branch. / Detected that Oracle was not configured or the database set up. This was Brad's mistake on not having that setup.
- 37: Contact Mei Wu directly since no response from Samuels. Began trade engine install / Determined that Trade Engine could not be installed on HAPS0a successfully.
- 41: Two boxes dedicated for the stoc development: / stkdev - / E250 - 2GB Memory, 120GB T3 storage, 2 n/w interfaces, .250 and .237 / Oracle 8.1.7 / X.25 card and middlewear and connection to SIAC test X.25 circuit. / Infra - only Sysman Agent(s) will be required (no rtserver needed). / Tradeeng - Tradeeng GC, Tradeeng BC and Tradeeng FE processes / stkcas / 220R - 2GB Memory, 18GB storage / Infra - SysMan Agent(s) / CAS - cas and sacas / Infrastructure needed to support this will be on: / devinfraa (or devinfrab (backup) / This box will host the Infrastructure processes needed by the stoc application including tradeeng and cas. / All these 3 boxes will be the week of Feb 3rd for stoc development. / X.25 card and Middlewear is on order awaiting PO signatures.
- 42: Getting passwords for database still needs to be completed.
- 45: Completed on 2/24/03

| ID | WBS | Task | Type | Duration | Start | Finish | Predecessors | Complete | Remaining | Baseline start | Baseline finish | Baseline duration | Total slack | Constraint | Resources | Work | Actual work | Text1 | Text2 |
| --- | --- | --- | --- | --- | --- | --- | --- | --- | --- | --- | --- | --- | --- | --- | --- | --- | --- | --- | --- |
| 54 | 1.4.2 | **Crystal Chen** |  | 5d | 2003-03-31 A | 2003-04-04 A |  | 100% |  |  |  |  |  |  |  | 40h | 40h |  |  |
| 55 | 1.4.2.1 | Overview of System |  | 1d | 2003-03-31 A | 2003-03-31 A |  | 100% |  |  |  |  |  | start no earlier than 2003-03-31 | Crystal | 8h | 8h | Crystal |  |
| 56 | 1.4.2.2 | Traning/Setup |  | 4d | 2003-04-01 A | 2003-04-04 A | 55 | 100% |  |  |  |  |  |  | Crystal | 32h | 32h | Crystal |  |
| 58 | 1.5 | **Pre-Design** |  | 8d | 2003-03-19 A | 2003-03-28 A |  | 100% |  |  |  |  |  |  |  | 32h | 32h |  |  |
| 59 | 1.5.1 | **Potential Database Changes** |  | 2d | 2003-03-19 A | 2003-03-20 A |  | 100% |  |  |  |  |  |  |  | 16h | 16h |  |  |
| 60 | 1.5.1.1 | Product( Cusip ) |  | 1d | 2003-03-19 A | 2003-03-19 A |  | 100% |  |  |  |  |  | start no earlier than 2003-03-19 | Brad | 8h | 8h |  |  |
| 61 | 1.5.1.2 | Member( Clearing code ) |  | 1d | 2003-03-20 A | 2003-03-20 A | 60 | 100% |  |  |  |  |  |  | Brad | 8h | 8h |  |  |
| 62 | 1.5.2 | **Major Object Changes** |  | 1d | 2003-03-21 A | 2003-03-21 A |  | 100% |  |  |  |  |  |  |  | 8h | 8h |  |  |
| 63 | 1.5.2.1 | Order Side - Sell Short |  | 1d | 2003-03-21 A | 2003-03-21 A | 61 | 100% |  |  |  |  |  |  | Brad | 8h | 8h |  |  |
| 64 | 1.5.3 | **IDL Changes** |  | 1d | 2003-03-27 A | 2003-03-28 A |  | 100% |  |  |  |  |  |  |  | 8h | 8h |  |  |
| 65 | 1.5.3.1 | Imbalance Calculation | milestone | 0d | 2003-03-27 A | 2003-03-27 A | 63 | 100% |  |  |  |  |  |  | Brad |  |  |  |  |
| 66 | 1.5.3.2 | Order Side - Sell Short/Sell Short Exempt |  | 1d | 2003-03-28 A | 2003-03-28 A | 65 | 100% |  |  |  |  |  |  | Brad | 8h | 8h |  |  |
| 68 | 1.6 | **Business Services** |  | 127d | 2003-03-24 A | 2003-09-16 |  | 38% | 78.21d | 2003-02-11 | 2003-06-04 | 82d | 6d |  |  | 2404h | 919.2h |  |  |
| 69 | 1.6.1 | **Allocation Allgorithm Changes** |  | 48d | 2003-03-24 A | 2003-05-28 |  | 96% | 1.92d | 2003-02-11 | 2003-02-25 | 11d | 85d |  |  | 400h | 400h |  | 6.6.5, 6.6.8 |
| 70 | 1.6.1.1 | Detail Design |  | 2d | 2003-03-24 A | 2003-03-25 A | 51 | 100% |  | 2003-02-11 | 2003-02-13 | 3d |  |  | Matt; Sandip | 32h | 32h | Matt |  |
| 71 | 1.6.1.2 | Design Walkthrough | milestone | 0d | 2003-03-25 A | 2003-03-25 A | 70 | 100% |  |  |  |  |  |  | Matt |  |  | Matt |  |
| 72 | 1.6.1.3 | Additional Design and Evaluation of SBT |  | 12d | 2003-03-26 A | 2003-04-10 A | 71 | 100% |  |  |  |  |  |  | Matt | 96h | 96h |  |  |
| 73 | 1.6.1.4 | Walkthrough with Sandip on Algorithms |  | 5d | 2003-04-11 A | 2003-04-17 A | 72 | 100% |  |  |  |  |  |  | Matt | 40h | 40h |  |  |
| 74 | 1.6.1.5 | Configuration Delays |  | 12d | 2003-04-18 A | 2003-05-05 A | 73 | 100% |  |  |  |  |  |  | Matt | 96h | 96h |  |  |
| 75 | 1.6.1.6 | **Iteration 1** |  | 10d | 2003-05-05 A | 2003-05-19 |  | 80% | 2d |  |  |  | 92d |  |  | 64h | 64h |  |  |
| 76 | 1.6.1.6.1 | Odd-Lot | milestone | 0d | 2003-05-05 A | 2003-05-05 A | 74 | 100% |  |  |  |  |  |  | Matt |  |  |  |  |
| 77 | 1.6.1.6.2 | Mixed Lot | milestone | 0d | 2003-05-05 A | 2003-05-05 A | 76 | 100% |  |  |  |  |  |  | Matt |  |  |  |  |
| 78 | 1.6.1.6.3 | Pro-Rata |  | 4d | 2003-05-06 A | 2003-05-09 A | 77 | 100% |  | 2003-02-14 | 2003-02-19 | 4d |  |  | Matt | 32h | 32h | Matt |  |
| 79 | 1.6.1.6.4 | Time-Price |  | 4d | 2003-05-12 A | 2003-05-15 A | 78 | 100% |  | 2003-02-20 | 2003-02-25 | 4d |  |  | Matt | 32h | 32h | Matt |  |
| 80 | 1.6.1.6.5 | Trade Service |  | 2d | 2003-05-16 | 2003-05-19 | 79 |  |  |  |  |  | 86d |  |  |  |  |  |  |

Notes:
- 58: For lack of a better term, pre-design is meant to determine what database fields and what new IDL stock will require as early as possible. / No dependencies are placed on this task and it will not be considered as part of overallocated resources. These tasks are more for reminders as things that need to be completed as soon as possible.
- 60: In the DB meeting earlier we might be ok with this one.
- 61: This item might also be ok in the DB field. From meeting in Jan.
- 65: Removing this requirement.
- 69: 6.6.5 - Evaluate the od/lot mixed lot plus allocations / Use Case Complete

| ID | WBS | Task | Type | Duration | Start | Finish | Predecessors | Complete | Remaining | Baseline start | Baseline finish | Baseline duration | Total slack | Free slack | Constraint | Resources | Work | Actual work | Text1 | Text2 |
| --- | --- | --- | --- | --- | --- | --- | --- | --- | --- | --- | --- | --- | --- | --- | --- | --- | --- | --- | --- | --- |
| 81 | 1.6.1.7 | **Iteration 2** |  | 6d | 2003-05-20 A | 2003-05-27 A |  | 100% |  |  |  |  |  |  |  |  | 56h | 56h |  |  |
| 82 | 1.6.1.7.1 | Trade Service |  | 3d | 2003-05-20 A | 2003-05-22 A | 75 | 100% |  |  |  |  |  |  |  | Matt | 24h | 24h | Matt |  |
| 83 | 1.6.1.7.2 | Trade Envoy |  | 4d | 2003-05-22 A | 2003-05-27 A | 82 | 100% |  |  |  |  |  |  |  | Matt | 32h | 32h | Matt |  |
| 84 | 1.6.1.8 | Test Plan |  | 2d | 2003-05-20 A | 2003-05-28 A | 83 | 100% |  |  |  |  |  |  |  | Matt | 16h | 16h |  |  |
| 85 | 1.6.1.9 | Code Walkthrough | milestone | 0d | 2003-05-28 A | 2003-05-28 A | 84 | 100% |  |  |  |  |  |  |  | Matt |  |  | Matt |  |
| 86 | 1.6.2 | **Allocation Algorithm Testing** |  | 22d | 2003-05-29 A | 2003-06-27 |  | 45% | 12d |  |  |  | 32d | 0d |  |  | 176h | 80h |  |  |
| 87 | 1.6.2.1 | Environment Setup |  | 8d | 2003-05-29 A | 2003-06-09 A | 69 | 100% |  |  |  |  |  |  |  | Matt | 64h | 64h |  |  |
| 88 | 1.6.2.2 | Clearcase Issues |  | 2d | 2003-06-10 A | 2003-06-11 A | 87 | 100% |  |  |  |  |  |  |  | Matt | 16h | 16h |  |  |
| 89 | 1.6.2.3 | **Testing Effort** |  | 12d | 2003-06-12 | 2003-06-27 |  |  |  |  |  |  | 32d | 0d |  |  | 96h |  |  |  |
| 90 | 1.6.2.3.1 | Allocation |  | 7d | 2003-06-12 | 2003-06-20 | 88 |  |  |  |  |  | 26d | 0d |  | Matt | 56h |  |  |  |
| 91 | 1.6.2.3.2 | Quoting |  | 5d | 2003-06-23 | 2003-06-27 | 90 |  |  |  |  |  | 32d |  |  | Matt | 40h |  |  |  |
| 92 | 1.6.3 | **Lot Size Entry and Caching** |  | 7d | 2003-06-30 | 2003-07-08 |  |  |  |  |  |  | 32d | 0d |  |  | 56h |  |  |  |
| 93 | 1.6.3.1 | Analysis |  | 1d | 2003-06-30 | 2003-06-30 | 86 |  |  |  |  |  | 32d | 0d |  | Matt | 8h |  |  |  |
| 94 | 1.6.3.2 | Design |  | 1d | 2003-07-01 | 2003-07-01 | 93 |  |  |  |  |  | 32d | 0d |  | Matt | 8h |  |  |  |
| 95 | 1.6.3.3 | 1st Iteration Coding/Testing |  | 2d | 2003-07-02 | 2003-07-03 | 94 |  |  |  |  |  | 32d | 0d |  | Matt | 16h |  |  |  |
| 96 | 1.6.3.4 | 2nd Iteration Coding/Testing/Configuration |  | 3d | 2003-07-04 | 2003-07-08 | 95 |  |  |  |  |  | 32d |  |  | Matt | 24h |  |  |  |
| 97 | 1.6.4 | **Automated Execution for Marketable Orders** |  | 22d | 2003-04-07 A | 2003-05-06 A |  | 100% |  |  |  |  |  |  |  |  | 40h | 40h |  | 5.2.3 |
| 98 | 1.6.4.1 | Testing |  | 3d | 2003-04-07 A | 2003-04-09 A | 54 | 100% |  |  |  |  |  |  |  | Crystal | 24h | 24h | Crystal |  |
| 99 | 1.6.4.2 | Delay for Merge to SBT 3.0 |  | 12d | 2003-04-17 A | 2003-05-02 A | 98 | 100% |  |  |  |  |  |  | start no earlier than 2003-04-17 |  |  |  |  |  |
| 100 | 1.6.4.3 | Rotue to Manual Handling |  | 2d | 2003-05-05 A | 2003-05-06 A | 99 | 100% |  |  |  |  |  |  |  | Crystal | 16h | 16h | Crystal |  |
| 101 | 1.6.5 | **Trade Bust** |  | 25d | 2003-04-28 A | 2003-05-30 |  | 81% | 4.63d | 2003-04-11 | 2003-04-29 | 13d | 83d |  |  |  | 216h | 176h |  | 6.4.8, 6.6.15.2 |
| 102 | 1.6.5.1 | **Detail Design** |  | 14d | 2003-04-28 A | 2003-05-15 A |  | 100% |  | 2003-04-11 | 2003-04-16 | 4d |  |  |  |  | 112h | 112h |  |  |
| 103 | 1.6.5.1.1 | Use Case |  | 2d | 2003-04-28 A | 2003-04-29 A |  | 100% |  |  |  |  |  |  | start no earlier than 2003-04-28 | Eva | 16h | 16h |  |  |
| 104 | 1.6.5.1.2 | Clearing issues and time frames |  | 1d | 2003-04-30 A | 2003-04-30 A | 103 | 100% |  | 2003-04-11 | 2003-04-11 | 1d |  |  |  | Crystal | 8h | 8h | Crystal |  |
| 105 | 1.6.5.1.3 | Database changes |  | 1d | 2003-05-01 A | 2003-05-01 A | 104 | 100% |  | 2003-04-14 | 2003-04-14 | 1d |  |  |  | Crystal | 8h | 8h | Crystal |  |
| 106 | 1.6.5.1.4 | Detail Design |  | 1d | 2003-05-02 A | 2003-05-02 A | 105 | 100% |  |  |  |  |  |  |  | Crystal | 8h | 8h |  |  |
| 107 | 1.6.5.1.5 | Configuration Delay |  | 9d | 2003-05-05 A | 2003-05-15 A | 106 | 100% |  |  |  |  |  |  |  | Crystal | 72h | 72h |  |  |

Notes:
- 97: 5.2.3 - Marketable against CBOE for inbound orders. / This task should be part of SBT. The project plan reflects testing of this piece and ensuring that after the order is displayed for 1 second, it is routed to manual handling. The system should display for one second the remaining quantity after execution. / Includes testing of contingencies.
- 101: 6.4.8 Trade Bust and Adjustment / This section needs a lot of research and explanation to what we can do and what CBOEdirect already does.

| ID | WBS | Task | Type | Duration | Start | Finish | Predecessors | Complete | Remaining | Baseline start | Baseline finish | Baseline duration | Total slack | Free slack | Resources | Work | Actual work | Text1 | Text2 |
| --- | --- | --- | --- | --- | --- | --- | --- | --- | --- | --- | --- | --- | --- | --- | --- | --- | --- | --- | --- |
| 108 | 1.6.5.2 | **1st Iteration Coding** |  | 4d | 2003-05-16 A | 2003-05-21 |  | 67% | 1.33d | 2003-04-17 | 2003-04-23 | 5d | 90d |  |  | 48h | 32h |  |  |
| 109 | 1.6.5.2.1 | GUI |  | 2d | 2003-05-16 | 2003-05-19 | 107 |  |  | 2003-04-17 | 2003-04-17 | 1d | 86d |  | Crystal | 16h |  | Crystal |  |
| 110 | 1.6.5.2.2 | **Server** |  | 4d | 2003-05-16 A | 2003-05-21 A |  | 100% |  | 2003-04-18 | 2003-04-23 | 4d |  |  |  | 32h | 32h | Crystal |  |
| 111 | 1.6.5.2.2.1 | IDL Changes |  | 1d | 2003-05-16 A | 2003-05-16 A | 107 | 100% |  |  |  |  |  |  | Crystal | 8h | 8h |  |  |
| 112 | 1.6.5.2.2.2 | IDL Affected Code |  | 2d | 2003-05-19 A | 2003-05-20 A | 111 | 100% |  |  |  |  |  |  | Crystal | 16h | 16h |  |  |
| 113 | 1.6.5.2.2.3 | Trade Service |  | 1d | 2003-05-21 A | 2003-05-21 A | 112 | 100% |  |  |  |  |  |  | Crystal | 8h | 8h |  |  |
| 114 | 1.6.5.3 | Detail Design |  | 1d | 2003-05-22 A | 2003-05-22 A | 110 | 100% |  | 2003-04-24 | 2003-04-24 | 1d |  |  | Crystal | 8h | 8h | Crystal |  |
| 115 | 1.6.5.4 | **2nd Iteration Coding** |  | 5d | 2003-05-23 A | 2003-05-29 |  | 60% | 2d | 2003-04-24 | 2003-04-29 | 4d | 84d |  |  | 40h | 24h |  |  |
| 116 | 1.6.5.4.1 | GUI |  | 2d | 2003-05-23 | 2003-05-26 | 114 |  |  | 2003-04-24 | 2003-04-24 | 1d | 81d |  | Crystal | 16h |  | Crystal |  |
| 117 | 1.6.5.4.2 | Server |  | 3d | 2003-05-27 A | 2003-05-29 A | 116 | 100% |  | 2003-04-25 | 2003-04-29 | 3d |  |  | Crystal | 24h | 24h | Crystal |  |
| 118 | 1.6.5.5 | Test Plan |  | 1d | 2003-05-30 | 2003-05-30 | 117 |  |  |  |  |  | 77d | 0d | Crystal | 8h |  |  |  |
| 119 | 1.6.5.6 | Code Walkthrough | milestone | 0d | 2003-05-30 | 2003-05-30 | 118 |  |  |  |  |  | 77d |  | Crystal |  |  | Crystal |  |
| 120 | 1.6.6 | **NBBO( IPP ) Protection - NBBO Stepup** |  | 43d | 2003-04-17 A | 2003-06-16 |  | 93% | 2.87d | 2003-04-15 | 2003-05-02 | 14d | 72d |  |  | 120h | 112h |  | 5.2.1, 5.2.2, 5.2.4 |
| 121 | 1.6.6.1 | **Detail Design** |  | 17d | 2003-04-17 A | 2003-05-09 A |  | 100% |  | 2003-04-15 | 2003-04-18 | 4d |  |  |  | 32h | 32h |  |  |
| 122 | 1.6.6.1.1 | Plug point for penny rule for ITS |  | 2d | 2003-05-08 A | 2003-05-09 A | 97 | 100% |  | 2003-04-15 | 2003-04-16 | 2d |  |  | Crystal | 16h | 16h | Crystal |  |
| 123 | 1.6.6.1.2 | Server |  | 2d | 2003-04-17 A | 2003-04-18 A | 122 | 100% |  | 2003-04-17 | 2003-04-18 | 2d |  |  | Crystal | 16h | 16h | Crystal |  |
| 124 | 1.6.6.2 | Design Walkthrough | milestone | 0d | 2003-04-18 A | 2003-04-18 A | 121 | 100% |  |  |  |  |  |  | Crystal |  |  | Crystal |  |
| 125 | 1.6.6.3 | **First Iteration Coding** |  | 5d | 2003-06-02 A | 2003-06-06 A |  | 100% |  | 2003-04-21 | 2003-04-25 | 5d |  |  |  | 40h | 40h |  |  |
| 126 | 1.6.6.3.1 | **Server** |  | 5d | 2003-06-02 A | 2003-06-06 A |  | 100% |  | 2003-04-21 | 2003-04-25 | 5d |  |  |  | 40h | 40h | Crystal |  |
| 127 | 1.6.6.3.1.1 | ITS Strategies |  | 5d | 2003-06-02 A | 2003-06-06 A | 101 | 100% |  |  |  |  |  |  | Crystal | 40h | 40h |  |  |
| 128 | 1.6.6.4 | Detail Design |  | 2d | 2003-06-09 A | 2003-06-10 A | 126 | 100% |  | 2003-04-28 | 2003-04-29 | 2d |  |  | Crystal | 16h | 16h | Crystal |  |
| 129 | 1.6.6.5 | **Second Iteration Coding** |  | 3d | 2003-06-11 A | 2003-06-13 A |  | 100% |  | 2003-04-30 | 2003-05-02 | 3d |  |  |  | 24h | 24h |  |  |
| 130 | 1.6.6.5.1 | Server |  | 3d | 2003-06-11 A | 2003-06-13 A | 128 | 100% |  | 2003-04-30 | 2003-05-02 | 3d |  |  | Crystal | 24h | 24h | Crystal |  |
| 131 | 1.6.6.6 | Test Plan |  | 1d | 2003-06-16 | 2003-06-16 | 130 |  |  |  |  |  | 23.4d | 0d | Crystal | 8h |  |  |  |
| 132 | 1.6.6.7 | Code Walkthrough | milestone | 0d | 2003-06-16 | 2003-06-16 | 131 |  |  |  |  |  | 23.4d |  | Crystal |  |  | Crystal |  |

Notes:
- 120: 5.2.1 - NBBO Step-Up / 5.2.2 - Manual Handling - When re-routed with NBBO protection flag off/on. / 5.2.4 - Unmarketable against CBOE but marketable again NBBO. / This task could potentially have some dependencies on the manual handling agent.
- 122: Not implemented

| ID | WBS | Task | Type | Duration | Start | Finish | Predecessors | Complete | Remaining | Baseline start | Baseline finish | Baseline duration | Total slack | Free slack | Resources | Work | Actual work | Text2 | Text1 |
| --- | --- | --- | --- | --- | --- | --- | --- | --- | --- | --- | --- | --- | --- | --- | --- | --- | --- | --- | --- |
| 133 | 1.6.7 | **Sell Short** |  | 23d | 2003-06-17 A | 2003-07-17 |  | 24% | 17.48d | 2003-03-12 | 2003-04-03 | 17d | 27d | 0d |  | 144h | 43.2h | 6.6.6 |  |
| 134 | 1.6.7.1 | **Detail Design** |  | 3d | 2003-06-17 A | 2003-06-19 |  | 99% | 0d | 2003-03-12 | 2003-03-14 | 3d | 0d |  | Crystal | 24h | 19.2h |  | Crystal |
| 135 | 1.6.7.1.1 | Determine Event Channel to Monitor Ticks |  | 1d | 2003-06-17 A | 2003-06-17 A | 120 | 100% |  |  |  |  |  |  |  |  |  |  |  |
| 136 | 1.6.7.1.2 | Determine Event Channel to Monitor NBBO |  | 1d | 2003-06-18 A | 2003-06-18 A | 135 | 100% |  |  |  |  |  |  |  |  |  |  |  |
| 137 | 1.6.7.1.3 | Design Service to handle the monitoring of sell short |  | 1d | 2003-06-19 A | 2003-06-19 A | 136 | 100% |  |  |  |  |  |  |  |  |  |  |  |
| 138 | 1.6.7.2 | Deisgn Walkthrough | milestone | 0d | 2003-06-19 A | 2003-06-19 A | 137 | 100% |  |  |  |  |  |  | Crystal |  |  |  | Crystal |
| 139 | 1.6.7.3 | **First Iteration Coding** |  | 10d | 2003-06-20 A | 2003-07-03 |  | 30% | 7d | 2003-03-17 | 2003-03-28 | 10d | 27d |  |  | 24h | 24h |  |  |
| 140 | 1.6.7.3.1 | **Server** |  | 10d | 2003-06-20 A | 2003-07-03 |  | 30% | 7d | 2003-03-17 | 2003-03-28 | 10d | 27d | 0d |  | 24h | 24h |  | Crystal |
| 141 | 1.6.7.3.1.1 | Sell Short Strategy/Factory |  | 3d | 2003-06-20 A | 2003-06-24 A | 134 | 100% |  |  |  |  |  |  | Crystal | 24h | 24h |  |  |
| 142 | 1.6.7.3.1.2 | Order Book helper methods |  | 2d | 2003-06-25 | 2003-06-26 | 141 |  |  |  |  |  | 27d | 0d |  |  |  |  |  |
| 143 | 1.6.7.3.1.3 | Order Helper Methods |  | 3d | 2003-06-27 | 2003-07-01 | 142 |  |  |  |  |  | 27d | 0d |  |  |  |  |  |
| 144 | 1.6.7.3.1.4 | Sell Short Holder |  | 2d | 2003-07-02 | 2003-07-03 | 143 |  |  |  |  |  | 27d |  |  |  |  |  |  |
| 145 | 1.6.7.4 | Detail Design |  | 2d | 2003-07-04 | 2003-07-07 | 140 |  |  | 2003-03-31 | 2003-04-01 | 2d | 27d | 0d | Crystal | 16h |  |  | Crystal |
| 146 | 1.6.7.5 | **2nd Iteration Coding** |  | 3d | 2003-07-08 | 2003-07-10 |  |  |  | 2003-03-31 | 2003-04-03 | 4d | 27d | 0d |  | 24h |  |  |  |
| 147 | 1.6.7.5.1 | Server |  | 3d | 2003-07-08 | 2003-07-10 | 145 |  |  | 2003-03-31 | 2003-04-03 | 4d | 27d | 0d | Crystal | 24h |  |  | Crystal |
| 148 | 1.6.7.6 | Test Plan |  | 2d | 2003-07-11 | 2003-07-14 | 147 |  |  |  |  |  | 30d | 0d | Crystal | 16h |  |  |  |
| 149 | 1.6.7.7 | Code Walkthrough | milestone | 0d | 2003-07-14 | 2003-07-14 | 148 |  |  |  |  |  | 30d |  | Crystal |  |  |  | Crystal |
| 150 | 1.6.7.8 | Testing |  | 5d | 2003-07-11 | 2003-07-17 | 146 |  |  |  |  |  | 27d |  | Crystal | 40h |  |  |  |
| 151 | 1.6.8 | **Stop/Stop Limit** |  | 17d | 2003-07-18 | 2003-08-11 |  |  |  | 2003-04-04 | 2003-04-14 | 7d | 27d | 0d |  | 136h |  | 6.6.7 |  |
| 152 | 1.6.8.1 | Detail Design |  | 5d | 2003-07-18 | 2003-07-24 | 133 |  |  | 2003-04-04 | 2003-04-04 | 1d | 27d | 0d | Crystal | 40h |  |  | Crystal |
| 153 | 1.6.8.2 | Design Walkthrough | milestone | 0d | 2003-07-24 | 2003-07-24 | 152 |  |  |  |  |  | 39d |  | Crystal |  |  |  | Crystal |
| 154 | 1.6.8.3 | **First Iteration Coding** |  | 5d | 2003-07-25 | 2003-07-31 |  |  |  | 2003-04-07 | 2003-04-08 | 2d | 27d |  |  | 40h |  |  |  |
| 155 | 1.6.8.3.1 | Server |  | 5d | 2003-07-25 | 2003-07-31 | 152 |  |  | 2003-04-07 | 2003-04-08 | 2d | 27d | 0d | Crystal | 40h |  |  | Crystal |
| 156 | 1.6.8.4 | Test Plan |  | 2d | 2003-08-01 | 2003-08-04 | 155 |  |  |  |  |  | 27d | 0d | Crystal | 16h |  |  |  |
| 157 | 1.6.8.5 | Code Walkthough | milestone | 0d | 2003-08-04 | 2003-08-04 | 156 |  |  |  |  |  | 27d | 0d | Crystal |  |  |  | Crystal |
| 158 | 1.6.8.6 | Integration Testesting |  | 5d | 2003-08-05 | 2003-08-11 | 157 |  |  |  |  |  | 27d |  | Crystal | 40h |  |  |  |

Notes:
- 133: 6.6.6 / Sell short logic is lightly described in the use case and requirements.
- 134: Lagged set back because design can start before Matt is done.

| ID | WBS | Task | Type | Duration | Start | Finish | Predecessors | Complete | Remaining | Baseline start | Baseline finish | Baseline duration | Total slack | Free slack | Constraint | Resources | Work | Actual work | Text2 | Text1 |
| --- | --- | --- | --- | --- | --- | --- | --- | --- | --- | --- | --- | --- | --- | --- | --- | --- | --- | --- | --- | --- |
| 159 | 1.6.9 | **Done Order Entry** |  | 63d | 2003-04-28 A | 2003-07-23 |  | 17% | 52.4d | 2003-03-19 | 2003-04-10 | 17d | 45d | 0d |  |  | 284h | 44h | 6.4.9 |  |
| 160 | 1.6.9.1 | **Detail Design** |  | 40d | 2003-04-28 A | 2003-06-20 |  | 31% | 27.64d | 2003-03-19 | 2003-03-24 | 4d | 68d |  |  |  | 100h | 44h |  |  |
| 161 | 1.6.9.1.1 | Sale Condition |  | 0.5d | 2003-04-28 A | 2003-04-28 A |  | 100% |  | 2003-03-19 | 2003-03-19 | 0.5d |  |  | start no earlier than 2003-04-28 | Brad | 4h | 4h |  | Crystal |
| 162 | 1.6.9.1.2 | Detail Design for SBT Re-factoring |  | 3d | 2003-04-28 A | 2003-05-01 A | 161 | 100% |  |  |  |  |  |  |  |  |  |  |  |  |
| 163 | 1.6.9.1.3 | Clearing Code Analaysis |  | 2d | 2003-05-01 A | 2003-05-05 A | 162 | 100% |  | 2003-03-19 | 2003-03-19 | 0.5d |  |  |  | Brad | 16h | 16h |  | Crystal |
| 164 | 1.6.9.1.4 | Configuration Delay |  | 12d | 2003-05-05 | 2003-05-21 | 163 |  |  |  |  |  | 90.5d |  |  |  |  |  |  |  |
| 165 | 1.6.9.1.5 | Dependent on Trade idl from Trade Bust | milestone | 0d | 2003-05-21 | 2003-05-21 | 110 |  |  |  |  |  | 88d | 0d |  |  |  |  |  |  |
| 166 | 1.6.9.1.6 | Modification at later time |  | 2d | 2003-05-22 | 2003-05-23 | 165 |  |  | 2003-03-20 | 2003-03-20 | 1d | 88d |  |  | Brad | 16h |  |  | Crystal |
| 167 | 1.6.9.1.7 | **Coding** |  | 33.5d | 2003-05-06 A | 2003-06-20 |  | 38% | 20.94d |  |  |  | 45d | 0d |  |  | 64h | 24h |  |  |
| 168 | 1.6.9.1.7.1 | Re-Factor of SBT Code to allow for stock in same session |  | 3d | 2003-05-06 A | 2003-05-27 A | 166 | 100% |  |  |  |  |  |  |  | Brad | 24h | 24h |  |  |
| 169 | 1.6.9.1.7.2 | Clearing code specifics |  | 3d | 2003-06-16 | 2003-06-18 | 168 |  |  |  |  |  | 45d | 0d | start no earlier than 2003-06-16 | Brad | 24h |  |  |  |
| 170 | 1.6.9.1.7.3 | GUI |  | 2d | 2003-06-19 | 2003-06-20 | 169 |  |  | 2003-03-24 | 2003-03-24 | 1d | 45d | 0d |  | Brad | 16h |  |  | Crystal |
| 171 | 1.6.9.1.8 | Design Walkthrough | milestone | 0d | 2003-06-20 | 2003-06-20 | 170 |  |  |  |  |  | 68d |  |  | Brad |  |  |  | Crystal |
| 172 | 1.6.9.2 | Detail Design |  | 1d | 2003-06-23 | 2003-06-23 | 167 |  |  | 2003-04-02 | 2003-04-02 | 1d | 45d | 0d |  | Brad | 8h |  |  | Crystal |
| 173 | 1.6.9.3 | **2nd Iteration Coding** |  | 16d | 2003-06-24 | 2003-07-15 |  |  |  | 2003-04-03 | 2003-04-10 | 6d | 45d |  |  |  | 128h |  |  |  |
| 174 | 1.6.9.3.1 | **GUI** |  | 6d | 2003-06-24 | 2003-07-01 | 172 |  |  | 2003-04-03 | 2003-04-07 | 3d | 45d | 0d |  |  | 48h |  |  | Crystal |
| 175 | 1.6.9.3.1.1 | Enter the Trade |  | 2d | 2003-06-24 | 2003-06-25 |  |  |  |  |  |  | 45d | 0d |  | Brad | 16h |  |  |  |
| 176 | 1.6.9.3.1.2 | Recall the trade for later updates |  | 4d | 2003-06-26 | 2003-07-01 | 175 |  |  |  |  |  | 45d | 0d |  | Brad | 32h |  |  |  |
| 177 | 1.6.9.3.2 | **Server** |  | 10d | 2003-07-02 | 2003-07-15 | 176 |  |  | 2003-04-08 | 2003-04-10 | 3d | 45d | 0d |  |  | 80h |  |  | Crystal |
| 178 | 1.6.9.3.2.1 | Enter the trade. |  | 2d | 2003-07-02 | 2003-07-03 | 174 |  |  |  |  |  | 45d | 0d |  | Brad | 16h |  |  |  |
| 179 | 1.6.9.3.2.2 | Send to CFN |  | 3d | 2003-07-04 | 2003-07-08 | 178 |  |  |  |  |  | 45d | 0d |  | Brad | 24h |  |  |  |
| 180 | 1.6.9.3.2.3 | Recall and Update the trade at a later time |  | 5d | 2003-07-09 | 2003-07-15 | 179 |  |  |  |  |  | 45d |  |  | Brad | 40h |  |  |  |
| 181 | 1.6.9.4 | Test Plan |  | 1d | 2003-07-16 | 2003-07-16 | 177 |  |  |  |  |  | 45d | 0d |  | Brad | 8h |  |  |  |
| 182 | 1.6.9.5 | Testing |  | 5d | 2003-07-17 | 2003-07-23 | 181 |  |  |  |  |  | 45d | 0d |  | Brad | 40h |  |  |  |
| 183 | 1.6.9.6 | Codewalkthrough | milestone | 0d | 2003-07-23 | 2003-07-23 | 182 |  |  |  |  |  | 45d |  |  | Nyoman; Brad |  |  |  | Nyoman,Crystal |

Notes:
- 159: 6.4.9 / Needs some requirements flushing out and screen design. CBOEdirect might have something now.
- 164: Additional Delay since Done Order Entry is dependent on the Trade Bust

| ID | WBS | Task | Type | Duration | Start | Finish | Predecessors | Complete | Baseline start | Baseline finish | Baseline duration | Total slack | Free slack | Constraint | Resources | Work | Actual work | Text2 | Text1 |
| --- | --- | --- | --- | --- | --- | --- | --- | --- | --- | --- | --- | --- | --- | --- | --- | --- | --- | --- | --- |
| 184 | 1.6.10 | **Dividend and Corportate Action** |  | 5d | 2003-08-12 | 2003-08-18 |  |  | 2003-05-23 | 2003-06-04 | 9d | 27d |  |  |  | 40h |  | 6.7.3 |  |
| 185 | 1.6.10.1 | Detailed Testing |  | 5d | 2003-08-12 | 2003-08-18 | 151 |  |  |  |  | 27d | 0d |  | Crystal | 40h |  |  |  |
| 186 | 1.6.10.2 | Use Case | milestone | 0d | 2003-08-18 | 2003-08-18 | 185 |  |  |  |  | 27d | 0d |  | Crystal |  |  |  |  |
| 187 | 1.6.10.3 | Design | milestone | 0d | 2003-08-18 | 2003-08-18 | 186 |  | 2003-05-23 | 2003-05-28 | 4d | 27d | 0d |  | Crystal |  |  |  | Matt |
| 188 | 1.6.10.4 | Deisgn walktrhough | milestone | 0d | 2003-08-18 | 2003-08-18 | 187 |  |  |  |  | 27d |  |  | Crystal |  |  |  | Matt |
| 189 | 1.6.10.5 | **1st Iteration Coding** |  | 0d | 2003-08-18 | 2003-08-18 |  |  | 2003-05-29 | 2003-06-04 | 5d | 27d |  |  |  |  |  |  |  |
| 190 | 1.6.10.5.1 | Server | milestone | 0d | 2003-08-18 | 2003-08-18 | 187 |  | 2003-05-29 | 2003-05-30 | 2d | 27d | 0d |  | Crystal |  |  |  | Matt |
| 191 | 1.6.10.5.2 | GUI | milestone | 0d | 2003-08-18 | 2003-08-18 | 190 |  | 2003-06-02 | 2003-06-04 | 3d | 27d | 0d |  | Crystal |  |  |  | Matt |
| 192 | 1.6.10.6 | Test Plan | milestone | 0d | 2003-08-18 | 2003-08-18 | 191 |  |  |  |  | 27d | 0d |  | Crystal |  |  |  |  |
| 193 | 1.6.10.7 | Code Walkthrough | milestone | 0d | 2003-08-18 | 2003-08-18 | 192 |  |  |  |  | 27d |  |  | Crystal |  |  |  | Matt |
| 194 | 1.7 | Inbound SIAC Data - Task has been scratched. |  | 111.1d | 2002-12-19 A | 2003-05-23 A |  | 100% |  |  |  |  |  |  |  | 352h | 352h |  |  |
| 195 | 1.6.12 | **Manual Handling( NBBO Agent )** |  | 3d | 2003-05-16 A | 2003-05-21 A |  | 100% | 2003-03-25 | 2003-04-11 | 14d |  |  |  |  | 24h | 24h | 5.2.2 |  |
| 196 | 1.6.12.1 | **Detail Design** |  | 3d | 2003-05-16 A | 2003-05-21 A |  | 100% | 2003-03-25 | 2003-03-31 | 5d |  |  |  |  | 24h | 24h |  |  |
| 197 | 1.6.12.1.1 | Client |  | 2d | 2003-05-16 A | 2003-05-20 A | 194 | 100% | 2003-03-25 | 2003-03-27 | 3d |  |  |  | Crystal | 16h | 16h |  | Sandip |
| 198 | 1.6.12.1.2 | Server |  | 1d | 2003-05-20 A | 2003-05-21 A | 197 | 100% | 2003-03-28 | 2003-03-31 | 2d |  |  |  | Crystal | 8h | 8h |  | Sandip |
| 199 | 1.6.12.1.3 | Design Walkthrough | milestone | 0d | 2003-05-21 A | 2003-05-21 A | 198 | 100% |  |  |  |  |  |  | Crystal |  |  |  | Sandip |
| 200 | 1.6.13 | **Book Depth** |  | 16d | 2003-06-13 | 2003-07-04 |  |  |  |  |  | 6d | 0d |  |  | 152h |  | 6.4.7 |  |
| 201 | 1.6.13.1 | Detail Design |  | 7d | 2003-06-13 | 2003-06-23 | 195 |  |  |  |  | 6d | 0d | start no earlier than 2003-06-13 | Sandip | 56h |  |  |  |
| 202 | 1.6.13.2 | Delay for TIPS Meetings |  | 3d | 2003-06-24 | 2003-06-26 | 201 |  |  |  |  | 12d |  |  | Sandip | 24h |  |  |  |
| 203 | 1.6.13.3 | **1st Iteration Coding** |  | 4d | 2003-06-24 | 2003-06-27 |  |  |  |  |  | 6d | 0d |  |  | 32h |  |  |  |
| 204 | 1.6.13.3.1 | Server |  | 3d | 2003-06-24 | 2003-06-26 | 201 |  |  |  |  | 6d | 0d |  | Sandip | 24h |  |  |  |
| 205 | 1.6.13.3.2 | IDL |  | 1d | 2003-06-27 | 2003-06-27 | 204 |  |  |  |  | 6d |  |  | Sandip | 8h |  |  |  |
| 206 | 1.6.13.4 | **2nd Iteration Coding** |  | 4d | 2003-06-30 | 2003-07-03 |  |  |  |  |  | 6d |  |  |  | 32h |  |  |  |
| 207 | 1.6.13.4.1 | Server |  | 3d | 2003-06-30 | 2003-07-02 | 203 |  |  |  |  | 6d | 0d |  | Sandip | 24h |  |  |  |
| 208 | 1.6.13.4.2 | IDL |  | 1d | 2003-07-03 | 2003-07-03 | 207 |  |  |  |  | 6d | 0d |  | Sandip | 8h |  |  |  |
| 209 | 1.6.13.5 | Test Plan |  | 1d | 2003-07-04 | 2003-07-04 | 208 |  |  |  |  | 6d | 0d |  | Sandip | 8h |  |  |  |
| 210 | 1.6.13.6 | Code Walkthrough | milestone | 0d | 2003-07-04 | 2003-07-04 | 209 |  |  |  |  | 6d |  |  | Sandip |  |  |  |  |

Notes:
- 184: Use case and requirements need to be defined / It has been determined that Divident and Corp Action is correct coded as is. Detailed testing needs to be complete.
- 195: 5.2.2 - DPM Manual Handling for inbound orders / Covers ability to send order to manual and then book to the book to consciensly lock/cross the overall market. / This task has been completed by SBT. We need to simply review.
- 200: 6.4.7 Book depth / Modification needed as part of the market opening. Book Depth needs to return all orders, not just the aggregate

| ID | WBS | Task | Type | Duration | Start | Finish | Predecessors | Baseline start | Baseline finish | Baseline duration | Total slack | Free slack | Resources | Work | Text2 | Text1 |
| --- | --- | --- | --- | --- | --- | --- | --- | --- | --- | --- | --- | --- | --- | --- | --- | --- |
| 211 | 1.6.14 | **Market Open Rotation** |  | 42d | 2003-07-07 | 2003-09-02 |  | 2003-04-30 | 2003-05-22 | 17d | 6d | 0d |  | 344h | 6.6.3, 6.6.4, 6.6.1 |  |
| 212 | 1.6.14.1 | **Detail Design** |  | 13d | 2003-07-07 | 2003-07-23 |  | 2003-04-30 | 2003-05-05 | 4d | 6d | 0d |  | 104h |  |  |
| 213 | 1.6.14.1.1 | Use Case |  | 4d | 2003-07-07 | 2003-07-10 | 195, 200 |  |  |  | 6d | 0d | Sandip | 32h |  |  |
| 214 | 1.6.14.1.2 | Trade Engine Design |  | 9d | 2003-07-11 | 2003-07-23 | 213 | 2003-04-30 | 2003-05-05 | 4d | 6d | 0d | Sandip | 72h |  | Sandip |
| 215 | 1.6.14.1.3 | Design Walkthrough | milestone | 0d | 2003-07-23 | 2003-07-23 | 214 |  |  |  | 6d |  | Sandip |  |  | Sandip |
| 216 | 1.6.14.2 | **1st Iteration Coding** |  | 10d | 2003-07-24 | 2003-08-06 |  | 2003-05-06 | 2003-05-12 | 5d | 6d | 0d |  | 80h |  |  |
| 217 | 1.6.14.2.1 | Server |  | 10d | 2003-07-24 | 2003-08-06 | 212 | 2003-05-06 | 2003-05-12 | 5d | 6d |  | Sandip | 80h |  | Sandip |
| 218 | 1.6.14.3 | Detail Design |  | 3d | 2003-08-07 | 2003-08-11 | 216 | 2003-05-13 | 2003-05-15 | 3d | 6d | 0d | Sandip | 24h |  | Sandip |
| 219 | 1.6.14.4 | **2nd Iteration Coding** |  | 6d | 2003-08-12 | 2003-08-19 |  | 2003-05-16 | 2003-05-22 | 5d | 6d | 0d |  | 48h |  |  |
| 220 | 1.6.14.4.1 | Server |  | 6d | 2003-08-12 | 2003-08-19 | 218 | 2003-05-16 | 2003-05-22 | 5d | 6d | 0d | Sandip | 48h |  | Sandip |
| 221 | 1.6.14.5 | Test Plan |  | 1d | 2003-08-20 | 2003-08-20 | 220 |  |  |  | 15d |  | Sandip | 8h |  |  |
| 222 | 1.6.14.6 | Code Walkthrough | milestone | 0d | 2003-08-19 | 2003-08-19 | 220 |  |  |  | 16d |  | Sandip |  |  | Sandip |
| 223 | 1.6.14.7 | Testing |  | 10d | 2003-08-20 | 2003-09-02 | 219 |  |  |  | 6d |  | Sandip | 80h |  |  |
| 224 | 1.6.15 | **At the Open Contingency** |  | 10d | 2003-09-03 | 2003-09-16 |  |  |  |  | 6d |  |  | 80h | 6.3.2, 6.6.7 |  |
| 225 | 1.6.15.1 | Detail Design |  | 2d | 2003-09-03 | 2003-09-04 | 211 |  |  |  | 6d | 0d | Sandip | 16h |  |  |
| 226 | 1.6.15.2 | Use Case |  | 1d | 2003-09-05 | 2003-09-05 | 225 |  |  |  | 6d | 0d | Sandip | 8h |  |  |
| 227 | 1.6.15.3 | **Iteration 1** |  | 5d | 2003-09-08 | 2003-09-12 |  |  |  |  | 6d | 0d |  | 40h |  |  |
| 228 | 1.6.15.3.1 | Coding |  | 5d | 2003-09-08 | 2003-09-12 | 226 |  |  |  | 6d |  | Sandip | 40h |  |  |
| 229 | 1.6.15.4 | Testing |  | 2d | 2003-09-15 | 2003-09-16 | 227 |  |  |  | 6d |  | Sandip | 16h |  |  |
| 230 | 1.6.16 | **Member Participant Quoting** |  | 0d | 2003-06-27 | 2003-06-27 |  | 2003-04-14 | 2003-04-16 | 3d | 63d | 0d |  |  | 5.2.5 |  |
| 231 | 1.6.16.1 | Detail Design | milestone | 0d | 2003-06-27 | 2003-06-27 | 89 | 2003-04-14 | 2003-04-15 | 2d | 63d | 0d | Matt |  |  | Sandip |
| 232 | 1.6.16.2 | Design Walkthrough | milestone | 0d | 2003-06-27 | 2003-06-27 | 231 |  |  |  | 63d | 0d | Matt |  |  | Sandip |
| 233 | 1.6.16.3 | **1st Iteration Coding** |  | 0d | 2003-06-27 | 2003-06-27 |  | 2003-04-16 | 2003-04-16 | 1d | 63d |  |  |  |  |  |
| 234 | 1.6.16.3.1 | Server | milestone | 0d | 2003-06-27 | 2003-06-27 | 232 | 2003-04-16 | 2003-04-16 | 1d | 63d | 0d | Matt |  |  | Sandip |
| 235 | 1.6.16.4 | Test Plan | milestone | 0d | 2003-06-27 | 2003-06-27 | 234 |  |  |  | 63d | 0d | Matt |  |  |  |
| 236 | 1.6.16.5 | Code Walkthrough | milestone | 0d | 2003-06-27 | 2003-06-27 | 235 |  |  |  | 63d |  | Matt |  |  | Sandip |

Notes:
- 211: 6.6.3 - CBOE Not the Primary
- 224: 6.3.2 Order Attributes - At the Open contigency
- 230: 5.2.5 - Market Participant Quoting / Involves testing of quoting to ensure functionality is correct. Includes execution outside of NBBO. / This task includes handling of mixed lots and odd lots in the quoting logic. / Already taken care of in Allocations. Making tasks 0 days.

| ID | WBS | Task | Type | Duration | Start | Finish | Predecessors | Complete | Baseline start | Baseline finish | Baseline duration | Total slack | Free slack | Resources | Work | Text2 | Text1 |
| --- | --- | --- | --- | --- | --- | --- | --- | --- | --- | --- | --- | --- | --- | --- | --- | --- | --- |
| 237 | 1.6.17 | **Order Cancel/Cancel Replace** |  | 6d | 2003-09-03 | 2003-09-10 |  |  | 2003-05-05 | 2003-05-09 | 5d | 10d | 0d |  | 48h | 6.3.7 |  |
| 238 | 1.6.17.1 | Design |  | 3d | 2003-09-03 | 2003-09-05 | 92, 211, 250, 257 |  | 2003-05-05 | 2003-05-07 | 3d | 10d | 0d | Matt | 24h |  | Matt |
| 239 | 1.6.17.2 | Design Walktrhough | milestone | 0d | 2003-09-05 | 2003-09-05 | 238 |  |  |  |  | 13d |  | Matt |  |  | Matt |
| 240 | 1.6.17.3 | **1st Iteration Coding** |  | 2d | 2003-09-08 | 2003-09-09 |  |  | 2003-05-08 | 2003-05-09 | 2d | 10d | 0d |  | 16h |  |  |
| 241 | 1.6.17.3.1 | Server |  | 2d | 2003-09-08 | 2003-09-09 | 238 |  | 2003-05-08 | 2003-05-09 | 2d | 10d |  | Matt | 16h |  | Matt |
| 242 | 1.6.17.4 | Test Plan |  | 1d | 2003-09-10 | 2003-09-10 | 240 |  |  |  |  | 10d | 0d | Matt | 8h |  |  |
| 243 | 1.6.17.5 | Code Walkthrough | milestone | 0d | 2003-09-10 | 2003-09-10 | 242 |  |  |  |  | 10d |  | Matt |  |  | Matt |
| 244 | 1.6.18 | **Order Book Priority** |  | 0d | 2003-06-25 A | 2003-06-25 A |  | 100% | 2003-05-12 | 2003-05-15 | 4d |  |  |  |  | 6.3.6 |  |
| 245 | 1.6.18.1 | Design | milestone | 0d | 2003-06-25 A | 2003-06-25 A | 89 | 100% | 2003-05-12 | 2003-05-15 | 4d |  |  | Matt |  |  | Matt |
| 246 | 1.6.18.2 | Design Walkthrough | milestone | 0d | 2003-06-25 A | 2003-06-25 A | 245 | 100% |  |  |  |  |  | Matt |  |  | Matt |
| 247 | 1.6.19 | **Market Display** |  | 0d | 2003-06-27 | 2003-06-27 |  |  | 2003-05-14 | 2003-05-28 | 11d | 63d |  |  |  | 6.4.6, 6.6.11 |  |
| 248 | 1.6.19.1 | Design | milestone | 0d | 2003-06-27 | 2003-06-27 | 230 |  | 2003-05-14 | 2003-05-15 | 2d | 63d | 0d | Mike N |  |  | Sandip |
| 249 | 1.6.19.2 | Design Walkthrough | milestone | 0d | 2003-06-27 | 2003-06-27 | 248 |  |  |  |  | 63d |  | Mike N |  |  | Sandip |
| 250 | 1.6.20 | **Trade History Changes** |  | 5d | 2003-07-09 | 2003-07-15 |  |  | 2003-04-22 | 2003-04-28 | 5d | 32d | 0d |  | 40h | 6.6.15.2, 6.6.15.3 |  |
| 251 | 1.6.20.1 | Detail Design |  | 2d | 2003-07-09 | 2003-07-10 | 244, 92 |  | 2003-04-22 | 2003-04-23 | 2d | 32d | 0d | Matt | 16h |  | Matt |
| 252 | 1.6.20.2 | Design Walkthrough | milestone | 0d | 2003-07-10 | 2003-07-10 | 251 |  |  |  |  | 35d |  | Matt |  |  | Matt |
| 253 | 1.6.20.3 | **1st Iteration Coding** |  | 2d | 2003-07-11 | 2003-07-14 |  |  | 2003-04-24 | 2003-04-28 | 3d | 32d | 0d |  | 16h |  |  |
| 254 | 1.6.20.3.1 | Server |  | 2d | 2003-07-11 | 2003-07-14 | 251 |  | 2003-04-24 | 2003-04-28 | 3d | 32d | 0d | Matt | 16h |  | Matt |
| 255 | 1.6.20.4 | Test Plan |  | 1d | 2003-07-15 | 2003-07-15 | 253 |  |  |  |  | 32d |  | Matt | 8h |  |  |
| 256 | 1.6.20.5 | Code Walkthrough | milestone | 0d | 2003-07-14 | 2003-07-14 | 254 |  |  |  |  | 33d |  | Matt |  |  | Matt |
| 257 | 1.6.21 | **Trade Through Monitoring Service** |  | 13d | 2003-07-16 | 2003-08-01 |  |  | 2003-02-28 | 2003-03-24 | 17d | 32d | 22d |  | 104h |  |  |
| 258 | 1.6.21.1 | **Detail Design** |  | 2d | 2003-07-16 | 2003-07-17 |  |  | 2003-02-28 | 2003-03-06 | 5d | 32d |  |  | 16h |  |  |
| 259 | 1.6.21.1.1 | Server |  | 2d | 2003-07-16 | 2003-07-17 | 250 |  | 2003-02-28 | 2003-03-06 | 5d | 32d | 0d | Matt | 16h |  | Matt |
| 260 | 1.6.21.1.2 | Design Walkthrough | milestone | 0d | 2003-07-17 | 2003-07-17 | 259 |  |  |  |  | 32d | 0d | Matt |  |  | Matt |

Notes:
- 237: 6.3.7 - Order Cancel and Cancel/Replace / Ensure this functionality works. NBBO Agent will also need to be tested with this. / Ensure this logic works with market open and locked book
- 244: 6.3.6 - Order Book Priority / Completed as part of Allocations.
- 247: 6.4.6 Market Display / 6.6.11 - Market Data Dissemination / THis will use the market data service to send montage information through CMI 2.0 - Proposed... / This task is moved to the External Adapter Task....
- 250: This task might be rolled into the Trade Bust task.

| ID | WBS | Task | Type | Duration | Start | Finish | Predecessors | Baseline start | Baseline finish | Baseline duration | Total slack | Free slack | Resources | Work | Text1 | Text2 |
| --- | --- | --- | --- | --- | --- | --- | --- | --- | --- | --- | --- | --- | --- | --- | --- | --- |
| 261 | 1.6.21.2 | **1st Iteration Coding** |  | 4d | 2003-07-18 | 2003-07-23 |  | 2003-03-07 | 2003-03-13 | 5d | 32d |  |  | 32h |  |  |
| 262 | 1.6.21.2.1 | Server |  | 4d | 2003-07-18 | 2003-07-23 | 260 | 2003-03-07 | 2003-03-13 | 5d | 32d | 0d | Matt | 32h | Matt |  |
| 263 | 1.6.21.3 | Detail Design |  | 2d | 2003-07-24 | 2003-07-25 | 262 | 2003-03-14 | 2003-03-18 | 3d | 32d | 0d | Matt | 16h | Matt |  |
| 264 | 1.6.21.4 | **2nd Iteration Coding** |  | 4d | 2003-07-28 | 2003-07-31 |  | 2003-03-14 | 2003-03-24 | 7d | 32d | 0d |  | 32h |  |  |
| 265 | 1.6.21.4.1 | Server |  | 4d | 2003-07-28 | 2003-07-31 | 263 | 2003-03-14 | 2003-03-24 | 7d | 32d |  | Matt | 32h | Matt |  |
| 266 | 1.6.21.5 | Test Plan |  | 1d | 2003-08-01 | 2003-08-01 | 264 |  |  |  | 32d | 0d | Matt | 8h |  |  |
| 267 | 1.6.21.6 | Code Walkthrough | milestone | 0d | 2003-08-01 | 2003-08-01 | 266 |  |  |  | 32d |  | Matt |  | Matt |  |
| 269 | 1.7 | **Supporting Services** |  | 72d | 2003-07-01 | 2003-10-08 |  |  |  |  | 20d |  |  | 240h |  |  |
| 270 | 1.7.1 | **Equity Maintanance - CUSIP** |  | 7d | 2003-07-24 | 2003-08-01 |  | 2003-04-29 | 2003-05-12 | 10d | 68d |  |  | 56h |  | 6.7.1,6.7 |
| 271 | 1.7.1.1 | Use Case Changes |  | 2d | 2003-07-24 | 2003-07-25 | 159 |  |  |  | 68d | 0d | Brad | 16h |  |  |
| 272 | 1.7.1.2 | Design |  | 1d | 2003-07-28 | 2003-07-28 | 271 |  |  |  | 68d | 0d | Brad | 8h |  |  |
| 273 | 1.7.1.3 | Design Walkthrough | milestone | 0d | 2003-07-28 | 2003-07-28 | 272 |  |  |  | 68d | 0d | Brad |  |  |  |
| 274 | 1.7.1.4 | **Iteration 1** |  | 4d | 2003-07-29 | 2003-08-01 |  |  |  |  | 68d |  |  | 32h |  |  |
| 275 | 1.7.1.4.1 | Client |  | 1d | 2003-07-29 | 2003-07-29 | 273 |  |  |  | 68d | 0d | Brad | 8h |  |  |
| 276 | 1.7.1.4.2 | IDL Change |  | 2d | 2003-07-30 | 2003-07-31 | 275 |  |  |  | 68d | 0d | Brad | 16h |  |  |
| 277 | 1.7.1.4.3 | Server |  | 1d | 2003-08-01 | 2003-08-01 | 276 |  |  |  | 68d |  | Brad | 8h |  |  |
| 278 | 1.7.2 | **Settlement Changes** |  | 13d | 2003-09-11 | 2003-09-29 |  | 2003-04-03 | 2003-04-21 | 13d | 20d | 0d |  | 104h |  |  |
| 279 | 1.7.2.1 | Detailed Design |  | 5d | 2003-09-11 | 2003-09-17 | 237 | 2003-04-03 | 2003-04-09 | 5d | 20d | 0d | Matt | 40h | Matt |  |
| 280 | 1.7.2.2 | Database Analysis |  | 3d | 2003-09-18 | 2003-09-22 | 279 | 2003-04-10 | 2003-04-14 | 3d | 20d | 0d | Matt | 24h | Matt |  |
| 281 | 1.7.2.3 | Report Coding |  | 5d | 2003-09-23 | 2003-09-29 | 280 | 2003-04-15 | 2003-04-21 | 5d | 20d | 0d | Matt | 40h | Matt |  |
| 282 | 1.7.2.4 | Code Walkthrough | milestone | 0d | 2003-09-29 | 2003-09-29 | 281 |  |  |  | 20d |  | Matt |  | Matt |  |
| 283 | 1.7.3 | **NSCC Clearing File Creation** |  | 7d | 2003-09-30 | 2003-10-08 |  |  |  |  | 20d |  |  | 64h |  | 4.1.1 |
| 284 | 1.7.3.1 | File creation |  | 3d | 2003-09-30 | 2003-10-02 | 278 |  |  |  | 20d | 0d | Matt | 24h | Sandip |  |
| 285 | 1.7.3.2 | FTP Process |  | 2d | 2003-10-03 | 2003-10-06 | 284 |  |  |  | 20d | 0d | Matt | 16h | Sandip |  |
| 286 | 1.7.3.3 | Intranet Development |  | 1d | 2003-10-07 | 2003-10-07 | 285 |  |  |  | 21d |  | Matt | 8h | Sandip |  |
| 287 | 1.7.3.4 | Viewable report |  | 2d | 2003-10-07 | 2003-10-08 | 285 |  |  |  | 20d |  | Matt | 16h | Sandip |  |

Notes:
- 270: Includes adding new issues - CUSIP, etc.
- 283: 4.1.1 - Clearing - NSCC File Creation / This is a development idea of using J2EE to create a report for NSCC clearing information for regulatory. The time for this can vary. No one has been assigned currently until the idea is flushed out.

| ID | WBS | Task | Type | Duration | Start | Finish | Predecessors | Total slack | Free slack | Constraint | Resources | Work | Text2 | Text1 |
| --- | --- | --- | --- | --- | --- | --- | --- | --- | --- | --- | --- | --- | --- | --- |
| 288 | 1.7.4 | **ISG End of Day File** |  | 2d | 2003-07-01 | 2003-07-02 |  | 90d |  |  |  | 16h | 4.1.1 |  |
| 289 | 1.7.4.1 | File creation |  | 1d | 2003-07-01 | 2003-07-01 |  | 90d | 0d | start no earlier than 2003-07-01 | Stella | 8h |  | Stella |
| 290 | 1.7.4.2 | FTP Process |  | 1d | 2003-07-02 | 2003-07-02 | 289 | 90d |  |  | Stella | 8h |  | Stella |
| 292 | 1.8 | **Linkage Service** |  | 23d | 2002-11-25 | 2002-12-26 |  | 223d |  |  |  |  |  |  |
| 293 | 1.8.1 | Design/Review of Linkage Service |  | 5d | 2002-11-25 | 2002-11-29 |  | 223d | 0d |  |  |  |  |  |
| 294 | 1.8.2 | **CMI Changes for ITS** |  | 4d | 2002-12-02 | 2002-12-05 |  | 223d | 0d |  |  |  |  |  |
| 295 | 1.8.2.1 | Outbound PoI |  | 2d | 2002-12-02 | 2002-12-03 | 293 | 223d | 0d |  |  |  |  |  |
| 296 | 1.8.2.2 | Outbound PoR |  | 2d | 2002-12-04 | 2002-12-05 | 295 | 223d |  |  |  |  |  |  |
| 297 | 1.8.3 | Design Walktrhough | milestone | 0d | 2002-12-05 | 2002-12-05 | 294 | 223d | 0d |  |  |  |  |  |
| 298 | 1.8.4 | **Inbound Committement Processing** |  | 7d | 2002-12-06 | 2002-12-16 |  | 223d | 0d |  |  |  |  |  |
| 299 | 1.8.4.1 | Design |  | 2d | 2002-12-06 | 2002-12-09 | 297 | 223d | 0d |  |  |  |  |  |
| 300 | 1.8.4.2 | Coding |  | 5d | 2002-12-10 | 2002-12-16 | 299 | 223d |  |  |  |  |  |  |
| 301 | 1.8.5 | **Outbound ITS Commitment** |  | 7d | 2002-12-17 | 2002-12-26 |  | 223d |  |  |  |  |  |  |
| 302 | 1.8.5.1 | CMI Message Coding |  | 2d | 2002-12-17 | 2002-12-18 | 298 | 223d | 0d |  |  |  |  |  |
| 303 | 1.8.5.2 | Integration to ITS Adapter |  | 5d | 2002-12-19 | 2002-12-26 | 302 | 223d |  |  |  |  |  |  |
| 304 | 1.8.6 | **Inbound ITS Fill Report** |  | 3d | 2002-11-25 | 2002-11-27 |  | 243d |  |  |  |  |  |  |
| 305 | 1.8.6.1 | ITS Integration |  | 2d | 2002-11-25 | 2002-11-26 |  | 244d |  |  |  |  |  |  |
| 306 | 1.8.6.2 | Trade Server Integration |  | 3d | 2002-11-25 | 2002-11-27 |  | 243d |  |  |  |  |  |  |
| 307 | 1.8.7 | **Outbound POI Message** |  | 3d | 2002-11-25 | 2002-11-27 |  | 243d |  |  |  |  |  |  |
| 308 | 1.8.7.1 | CMI Testing |  | 2d | 2002-11-25 | 2002-11-26 |  | 244d |  |  |  |  |  |  |
| 309 | 1.8.7.2 | Integration to ITS Adapater |  | 3d | 2002-11-25 | 2002-11-27 |  | 243d |  |  |  |  |  |  |
| 310 | 1.8.8 | **Outbound POR Message** |  | 2d | 2002-11-25 | 2002-11-26 |  | 244d |  |  |  |  |  |  |
| 311 | 1.8.8.1 | CMI Testing |  | 2d | 2002-11-25 | 2002-11-26 |  | 244d |  |  |  |  |  |  |
| 312 | 1.8.8.2 | Integration to ITS Adapter |  | 2d | 2002-11-25 | 2002-11-26 |  | 244d |  |  |  |  |  |  |

Notes:
- 288: 4.1.1 - Clearing ( ISG File Format )

| ID | WBS | Task | Duration | Start | Finish | Predecessors | Complete | Remaining | Baseline start | Baseline finish | Baseline duration | Total slack | Constraint | Resources | Work | Actual work | Text2 | Text1 |
| --- | --- | --- | --- | --- | --- | --- | --- | --- | --- | --- | --- | --- | --- | --- | --- | --- | --- | --- |
| 313 | 1.8.9 | **Outbound Complaint Message** | 2d | 2002-11-25 | 2002-11-26 |  |  |  |  |  |  | 244d |  |  |  |  |  |  |
| 314 | 1.8.9.1 | CMI Testing | 2d | 2002-11-25 | 2002-11-26 |  |  |  |  |  |  | 244d |  |  |  |  |  |  |
| 315 | 1.8.9.2 | Integration to ITS Adapter | 2d | 2002-11-25 | 2002-11-26 |  |  |  |  |  |  | 244d |  |  |  |  |  |  |
| 316 | 1.8.10 | **Inbound ITS Complaint** | 2d | 2002-11-25 | 2002-11-26 |  |  |  |  |  |  | 244d |  |  |  |  |  |  |
| 317 | 1.8.10.1 | CMI Testing | 2d | 2002-11-25 | 2002-11-26 |  |  |  |  |  |  | 244d |  |  |  |  |  |  |
| 318 | 1.8.10.2 | Integration to ITS Adapter | 2d | 2002-11-25 | 2002-11-26 |  |  |  |  |  |  | 244d |  |  |  |  |  |  |
| 319 | 1.8.11 | **Inbound POI Message** | 2d | 2002-11-25 | 2002-11-26 |  |  |  |  |  |  | 244d |  |  |  |  |  |  |
| 320 | 1.8.11.1 | CMI Testing | 2d | 2002-11-25 | 2002-11-26 |  |  |  |  |  |  | 244d |  |  |  |  |  |  |
| 321 | 1.8.11.2 | Integration to ITS Adapater | 2d | 2002-11-25 | 2002-11-26 |  |  |  |  |  |  | 244d |  |  |  |  |  |  |
| 322 | 1.8.12 | **Inbound POR Message** | 2d | 2002-11-25 | 2002-11-26 |  |  |  |  |  |  | 244d |  |  |  |  |  |  |
| 323 | 1.8.12.1 | CMI Testing | 2d | 2002-11-25 | 2002-11-26 |  |  |  |  |  |  | 244d |  |  |  |  |  |  |
| 324 | 1.8.12.2 | Integration to ITS Adapter | 2d | 2002-11-25 | 2002-11-26 |  |  |  |  |  |  | 244d |  |  |  |  |  |  |
| 325 | 1.8.13 | **Creation of New Order in book** | 4d | 2002-11-25 | 2002-11-28 |  |  |  |  |  |  | 242d |  |  |  |  |  |  |
| 326 | 1.8.13.1 | CMI Changes | 3d | 2002-11-25 | 2002-11-27 |  |  |  |  |  |  | 243d |  |  |  |  |  |  |
| 327 | 1.8.13.2 | GUI Changes | 2d | 2002-11-25 | 2002-11-26 |  |  |  |  |  |  | 244d |  |  |  |  |  |  |
| 328 | 1.8.13.3 | Execution Report back to requester | 4d | 2002-11-25 | 2002-11-28 |  |  |  |  |  |  | 242d |  |  |  |  |  |  |
| 330 | 1.9 | **Trading Operation Support** | 10d | 2003-05-26 | 2003-06-06 |  |  |  | 2003-05-26 | 2003-05-27 | 2d | 108d |  |  | 80h |  | 6.6.15.5 |  |
| 331 | 1.9.1 | Readable HTML Format of NSCC File | 10d | 2003-05-26 | 2003-06-06 |  |  |  | 2003-05-26 | 2003-05-27 | 2d | 108d | start no earlier than 2003-05-26 | Unknown | 80h |  |  | Eva |
| 332 | 1.10 | **Workstation/Testing GUI** | 216d | 2002-11-25 A | 2003-09-24 |  | 58% | 90.39d |  |  |  | 0d |  |  | 1496h | 888h |  |  |
| 333 | 1.10.1 | Review of SBT GUI and Architecture | 10d | 2003-03-03 | 2003-03-14 |  |  |  |  |  |  | 138d | start no earlier than 2003-03-03 | Nyoman | 80h |  |  |  |
| 334 | 1.10.2 | **Screen Design and Layouts** | 19d | 2003-03-17 A | 2003-04-10 A |  | 100% |  |  |  |  |  |  |  | 152h | 152h |  |  |
| 335 | 1.10.2.1 | Login | 1d | 2003-03-17 A | 2003-03-17 A | 333 | 100% |  |  |  |  |  |  | Nyoman | 8h | 8h |  |  |
| 336 | 1.10.2.2 | Logout | 1d | 2003-03-18 A | 2003-03-18 A | 335 | 100% |  |  |  |  |  |  | Nyoman | 8h | 8h |  |  |
| 337 | 1.10.2.3 | Main Market Data Screen | 1d | 2003-03-19 A | 2003-03-19 A | 336 | 100% |  |  |  |  |  |  | Nyoman | 8h | 8h |  |  |
| 338 | 1.10.2.4 | Update/Send Quote | 1d | 2003-03-20 A | 2003-03-20 A | 337 | 100% |  |  |  |  |  |  | Nyoman | 8h | 8h |  |  |
| 339 | 1.10.2.5 | Cancel Quote | 1d | 2003-03-21 A | 2003-03-21 A | 338 | 100% |  |  |  |  |  |  | Nyoman | 8h | 8h |  |  |
| 340 | 1.10.2.6 | Send Text Message | 1d | 2003-03-24 A | 2003-03-24 A | 339 | 100% |  |  |  |  |  |  | Nyoman | 8h | 8h |  |  |
| 341 | 1.10.2.7 | Respond to RFQ | 1d | 2003-03-25 A | 2003-03-25 A | 340 | 100% |  |  |  |  |  |  | Nyoman | 8h | 8h |  |  |
| 342 | 1.10.2.8 | Enter a new order | 1d | 2003-03-26 A | 2003-03-26 A | 341 | 100% |  |  |  |  |  |  | Nyoman | 8h | 8h |  |  |
| 343 | 1.10.2.9 | ITS Takeout | 1d | 2003-03-27 A | 2003-03-27 A | 342 | 100% |  |  |  |  |  |  | Nyoman | 8h | 8h |  |  |
| 344 | 1.10.2.10 | Hit the bid/Take the Offer | 1d | 2003-03-28 A | 2003-03-28 A | 343 | 100% |  |  |  |  |  |  | Nyoman | 8h | 8h |  |  |
| 345 | 1.10.2.11 | Cancel/Replace Order | 1d | 2003-03-31 A | 2003-03-31 A | 344 | 100% |  |  |  |  |  |  | Nyoman | 8h | 8h |  |  |
| 346 | 1.10.2.12 | Cancel Order | 1d | 2003-04-01 A | 2003-04-01 A | 345 | 100% |  |  |  |  |  |  | Nyoman | 8h | 8h |  |  |
| 347 | 1.10.2.13 | See Order History | 1d | 2003-04-02 A | 2003-04-02 A | 346 | 100% |  |  |  |  |  |  | Nyoman | 8h | 8h |  |  |
| 348 | 1.10.2.14 | Edit Trading Preferences | 1d | 2003-04-03 A | 2003-04-03 A | 347 | 100% |  |  |  |  |  |  | Nyoman | 8h | 8h |  |  |
| 349 | 1.10.2.15 | See Trade History | 1d | 2003-04-04 A | 2003-04-04 A | 348 | 100% |  |  |  |  |  |  | Nyoman | 8h | 8h |  |  |
| 350 | 1.10.2.16 | Edit User Prefernces | 1d | 2003-04-07 A | 2003-04-07 A | 349 | 100% |  |  |  |  |  |  | Nyoman | 8h | 8h |  |  |
| 351 | 1.10.2.17 | View Order Book | 1d | 2003-04-08 A | 2003-04-08 A | 350 | 100% |  |  |  |  |  |  | Nyoman | 8h | 8h |  |  |
| 352 | 1.10.2.18 | Pre-Opening Screen | 1d | 2003-04-09 A | 2003-04-09 A | 351 | 100% |  |  |  |  |  |  | Nyoman | 8h | 8h |  |  |
| 353 | 1.10.2.19 | Manual Handling Screen | 1d | 2003-04-10 A | 2003-04-10 A | 352 | 100% |  |  |  |  |  |  | Nyoman | 8h | 8h |  |  |
| 354 | 1.10.3 | Screen Review | 1d | 2003-04-11 A | 2003-04-11 A | 334 | 100% |  |  |  |  |  |  | All | 8h | 8h |  |  |

Notes:
- 332: Integration with Trade is assumed where needed. Most of the GUI can be tested by running the current SBT trade engine. There are some dependencies on stock tasks however...

| ID | WBS | Task | Type | Duration | Start | Finish | Predecessors | Complete | Remaining | Total slack | Constraint | Resources | Work | Actual work |
| --- | --- | --- | --- | --- | --- | --- | --- | --- | --- | --- | --- | --- | --- | --- |
| 355 | 1.10.4 | **Screen Construction** |  | 216d | 2002-11-25 A | 2003-09-24 |  | 56% | 93.97d | 0d |  |  | 1256h | 728h |
| 356 | 1.10.4.1 | **Login/Logout Screen** |  | 3d | 2003-04-14 A | 2003-04-16 A |  | 100% |  |  |  |  | 24h | 24h |
| 357 | 1.10.4.1.1 | Design |  | 1d | 2003-04-14 A | 2003-04-14 A | 354 | 100% |  |  |  | Nyoman | 8h | 8h |
| 358 | 1.10.4.1.2 | Coding |  | 2d | 2003-04-15 A | 2003-04-16 A | 357 | 100% |  |  |  | Nyoman | 16h | 16h |
| 359 | 1.10.4.2 | **Main Market Data Screen** |  | 52d | 2003-04-17 A | 2003-06-27 |  | 83% | 8.67d | 0d |  |  | 184h | 160h |
| 360 | 1.10.4.2.1 | Design |  | 5d | 2003-04-17 A | 2003-04-23 A | 356 | 100% |  |  |  | Nyoman | 40h | 40h |
| 361 | 1.10.4.2.2 | Walkthrough | milestone | 0d | 2003-04-23 A | 2003-04-23 A | 360 | 100% |  |  |  | Nyoman |  |  |
| 362 | 1.10.4.2.3 | **Iteration 1** |  | 4d | 2003-04-24 A | 2003-04-29 A |  | 100% |  |  |  |  | 32h | 32h |
| 363 | 1.10.4.2.3.1 | Coding |  | 4d | 2003-04-24 A | 2003-04-29 A | 361 | 100% |  |  |  | Nyoman | 32h | 32h |
| 364 | 1.10.4.2.4 | Design |  | 2d | 2003-04-30 A | 2003-05-01 A | 363 | 100% |  |  |  | Nyoman | 16h | 16h |
| 365 | 1.10.4.2.5 | **Iteration 2** |  | 5d | 2003-04-30 A | 2003-05-06 A |  | 100% |  |  |  |  | 40h | 40h |
| 366 | 1.10.4.2.5.1 | Coding |  | 5d | 2003-04-30 A | 2003-05-06 A | 362 | 100% |  |  |  | Nyoman | 40h | 40h |
| 367 | 1.10.4.2.6 | Code Walkthrough | milestone | 0d | 2003-05-06 A | 2003-05-06 A | 365 | 100% |  |  |  | Nyoman |  |  |
| 368 | 1.10.4.2.7 | **Iteration 3** |  | 5d | 2003-06-19 A | 2003-06-25 |  | 80% | 1d | 2d |  |  | 32h | 32h |
| 369 | 1.10.4.2.7.1 | Market Data Info Panel |  | 4d | 2003-06-19 A | 2003-06-24 A | 365 | 100% |  |  | start no earlier than 2003-06-19 | Nyoman | 32h | 32h |
| 370 | 1.10.4.2.7.2 | Market Data Model |  | 1d | 2003-06-25 | 2003-06-25 | 369 |  |  | 2d |  |  |  |  |
| 371 | 1.10.4.2.8 | Testing |  | 3d | 2003-06-25 | 2003-06-27 | 369 |  |  | 0d |  | Nyoman | 24h |  |
| 372 | 1.10.4.3 | **Update/Send Quote** |  | 5d | 2003-05-07 A | 2003-05-13 A |  | 100% |  |  |  |  | 40h | 40h |
| 373 | 1.10.4.3.1 | Design |  | 2d | 2003-05-07 A | 2003-05-08 A | 359 | 100% |  |  |  | Nyoman | 16h | 16h |
| 374 | 1.10.4.3.2 | Walkthough | milestone | 0d | 2003-05-08 A | 2003-05-08 A | 373 | 100% |  |  |  | Nyoman |  |  |
| 375 | 1.10.4.3.3 | Coding |  | 3d | 2003-05-09 A | 2003-05-13 A | 374 | 100% |  |  |  | Nyoman | 24h | 24h |
| 376 | 1.10.4.4 | **Cancel Quote** |  | 4d | 2003-05-14 A | 2003-05-19 A |  | 100% |  |  |  | Nyoman | 64h | 64h |
| 377 | 1.10.4.4.1 | Design |  | 1d | 2003-05-14 A | 2003-05-14 A | 372 | 100% |  |  |  | Nyoman | 8h | 8h |
| 378 | 1.10.4.4.2 | Coding |  | 3d | 2003-05-15 A | 2003-05-19 A | 377 | 100% |  |  |  | Nyoman | 24h | 24h |

| ID | WBS | Task | Duration | Start | Finish | Predecessors | Complete | Remaining | Total slack | Resources | Work | Actual work |
| --- | --- | --- | --- | --- | --- | --- | --- | --- | --- | --- | --- | --- |
| 379 | 1.10.4.5 | **Respond to RFQ** | 7d | 2002-11-25 A | 2002-12-03 A |  | 100% |  |  |  | 56h | 56h |
| 380 | 1.10.4.5.1 | Design | 2d | 2002-11-25 A | 2002-11-26 A |  | 100% |  |  | Nyoman | 16h | 16h |
| 381 | 1.10.4.5.2 | Coding | 5d | 2002-11-27 A | 2002-12-03 A | 380 | 100% |  |  | Nyoman | 40h | 40h |
| 382 | 1.10.4.6 | **Enter a new Order** | 23d | 2003-06-05 A | 2003-07-07 |  | 54% | 10.62d | 0d |  | 104h | 56h |
| 383 | 1.10.4.6.1 | Deisgn | 2d | 2003-06-05 A | 2003-06-06 A | 372 | 100% |  |  | Nyoman | 16h | 16h |
| 384 | 1.10.4.6.2 | **Iteration 1** | 5d | 2003-06-09 A | 2003-06-13 A | 383 | 100% |  |  |  | 40h | 40h |
| 385 | 1.10.4.6.2.1 | Coding | 5d | 2003-06-09 A | 2003-06-13 A |  | 100% |  |  | Nyoman | 40h | 40h |
| 386 | 1.10.4.6.3 | **Iteration 2** | 3d | 2003-06-30 | 2003-07-02 |  |  |  | 0d |  | 24h |  |
| 387 | 1.10.4.6.3.1 | Sell Short | 3d | 2003-06-30 | 2003-07-02 | 359 |  |  | 0d | Nyoman | 24h |  |
| 388 | 1.10.4.6.4 | Testing | 3d | 2003-07-03 | 2003-07-07 | 387 |  |  | 0d | Nyoman | 24h |  |
| 390 | 1.10.4.7 | **Montage Screen** | 23d | 2003-06-16 A | 2003-07-16 |  | 36% | 14.64d | 0d |  | 88h | 32h |
| 391 | 1.10.4.7.1 | Design | 4d | 2003-06-16 A | 2003-06-19 A | 382 | 100% |  |  | Nyoman | 32h | 32h |
| 392 | 1.10.4.7.2 | **Iteration 1** | 4d | 2003-07-08 | 2003-07-11 |  |  |  | 0d |  | 32h |  |
| 393 | 1.10.4.7.2.1 | Market Data Model | 3d | 2003-07-08 | 2003-07-10 | 382 |  |  | 0d | Nyoman | 24h |  |
| 394 | 1.10.4.7.2.2 | Screen Updates | 1d | 2003-07-11 | 2003-07-11 | 393 |  |  | 0d | Nyoman | 8h |  |
| 395 | 1.10.4.7.3 | Testing | 3d | 2003-07-14 | 2003-07-16 | 392 |  |  | 0d | Nyoman | 24h |  |
| 397 | 1.10.4.8 | **Hit the bid/Take the Offer** | 3d | 2003-06-09 A | 2003-06-11 A |  | 100% |  |  |  | 24h | 24h |
| 398 | 1.10.4.8.1 | Design | 1d | 2003-06-09 A | 2003-06-09 A | 390 | 100% |  |  | Nyoman | 8h | 8h |
| 399 | 1.10.4.8.2 | Coding | 2d | 2003-06-10 A | 2003-06-11 A | 398 | 100% |  |  | Nyoman | 16h | 16h |
| 400 | 1.10.4.9 | **Refactoring and combination with SBT Code** | 6d | 2003-06-12 A | 2003-06-19 A |  | 100% |  |  |  | 48h | 48h |
| 401 | 1.10.4.9.1 | Design | 2d | 2003-06-12 A | 2003-06-13 A | 397 | 100% |  |  | Nyoman | 16h | 16h |
| 402 | 1.10.4.9.2 | Coding | 4d | 2003-06-16 A | 2003-06-19 A | 401 | 100% |  |  | Nyoman | 32h | 32h |
| 403 | 1.10.4.10 | **Cancel/Replace Order** | 3d | 2003-06-20 A | 2003-06-24 A |  | 100% |  |  |  | 24h | 24h |
| 404 | 1.10.4.10.1 | Design | 1d | 2003-06-20 A | 2003-06-20 A | 400 | 100% |  |  | Nyoman | 8h | 8h |
| 405 | 1.10.4.10.2 | Coding | 2d | 2003-06-23 A | 2003-06-24 A | 404 | 100% |  |  | Nyoman | 16h | 16h |

| ID | WBS | Task | Duration | Start | Finish | Predecessors | Complete | Total slack | Resources | Work | Actual work |
| --- | --- | --- | --- | --- | --- | --- | --- | --- | --- | --- | --- |
| 406 | 1.10.4.11 | **Cancel Order** | 3d | 2003-06-25 A | 2003-06-27 A |  | 100% |  |  | 24h | 24h |
| 407 | 1.10.4.11.1 | Design | 1d | 2003-06-25 A | 2003-06-25 A | 403 | 100% |  | Nyoman | 8h | 8h |
| 408 | 1.10.4.11.2 | Coding | 2d | 2003-06-26 A | 2003-06-27 A | 407 | 100% |  | Nyoman | 16h | 16h |
| 409 | 1.10.4.12 | **See Order History** | 4d | 2003-07-07 A | 2003-07-10 A |  | 100% |  |  | 32h | 32h |
| 410 | 1.10.4.12.1 | Design | 2d | 2003-07-07 A | 2003-07-08 A | 406 | 100% |  | Nyoman | 16h | 16h |
| 411 | 1.10.4.12.2 | Coding | 2d | 2003-07-09 A | 2003-07-10 A | 410 | 100% |  | Nyoman | 16h | 16h |
| 412 | 1.10.4.13 | **Edit Trading Preferences** | 4d | 2003-07-17 | 2003-07-22 |  |  | 0d |  | 32h |  |
| 413 | 1.10.4.13.1 | Design | 1d | 2003-07-17 | 2003-07-17 | 390 |  | 0d | Nyoman | 8h |  |
| 414 | 1.10.4.13.2 | Coding | 3d | 2003-07-18 | 2003-07-22 | 413 |  | 0d | Nyoman | 24h |  |
| 415 | 1.10.4.14 | **See Trade History** | 3d | 2003-07-17 A | 2003-07-21 A |  | 100% |  |  | 24h | 24h |
| 416 | 1.10.4.14.1 | Design | 1d | 2003-07-17 A | 2003-07-17 A | 412 | 100% |  | Nyoman | 8h | 8h |
| 417 | 1.10.4.14.2 | Coding | 2d | 2003-07-18 A | 2003-07-21 A | 416 | 100% |  | Nyoman | 16h | 16h |
| 418 | 1.10.4.15 | **Edit User Prefernces** | 4d | 2003-07-23 | 2003-07-28 |  |  | 0d |  | 32h |  |
| 419 | 1.10.4.15.1 | Design | 1d | 2003-07-23 | 2003-07-23 | 412 |  | 0d | Nyoman | 8h |  |
| 420 | 1.10.4.15.2 | Coding | 3d | 2003-07-24 | 2003-07-28 | 419 |  | 0d | Nyoman | 24h |  |
| 421 | 1.10.4.16 | **Normal Book Depth** | 13d | 2003-07-02 A | 2003-07-18 A |  | 100% |  |  | 104h | 104h |
| 422 | 1.10.4.16.1 | Design | 3d | 2003-07-02 A | 2003-07-04 A | 418 | 100% |  | Nyoman | 24h | 24h |
| 423 | 1.10.4.16.2 | Coding | 10d | 2003-07-07 A | 2003-07-18 A | 422 | 100% |  | Nyoman | 80h | 80h |
| 424 | 1.10.4.17 | **Pre-Opening Screen** | 15d | 2003-07-29 | 2003-08-18 |  |  | 0d |  | 120h |  |
| 425 | 1.10.4.17.1 | Design | 5d | 2003-07-29 | 2003-08-04 | 418 |  | 0d | Nyoman | 40h |  |
| 426 | 1.10.4.17.2 | Coding | 10d | 2003-08-05 | 2003-08-18 | 425 |  | 0d | Nyoman | 80h |  |
| 427 | 1.10.4.18 | **Pre Open Manual Handling Screen** | 7d | 2003-08-19 | 2003-08-27 |  |  | 0d |  | 56h |  |
| 428 | 1.10.4.18.1 | Design | 2d | 2003-08-19 | 2003-08-20 | 424 |  | 0d | Nyoman | 16h |  |
| 429 | 1.10.4.18.2 | Coding | 5d | 2003-08-21 | 2003-08-27 | 428 |  | 0d | Nyoman | 40h |  |

| ID | WBS | Task | Duration | Start | Finish | Predecessors | Complete | Remaining | Actual start | Baseline start | Baseline finish | Baseline duration | Total slack | Free slack | Constraint | Resources | Work | Actual work | Text2 |
| --- | --- | --- | --- | --- | --- | --- | --- | --- | --- | --- | --- | --- | --- | --- | --- | --- | --- | --- | --- |
| 430 | 1.10.4.19 | **Held Order Screeen** | 1d | 2002-11-25 A | 2002-11-25 A |  | 100% |  |  |  |  |  |  |  |  |  | 16h | 16h |  |
| 431 | 1.10.4.19.1 | Design | 1d | 2002-11-25 A | 2002-11-25 A |  | 100% |  |  |  |  |  |  |  |  | Nyoman | 8h | 8h |  |
| 432 | 1.10.4.19.2 | Coding | 1d | 2002-11-25 A | 2002-11-25 A |  | 100% |  |  |  |  |  |  |  |  | Nyoman | 8h | 8h |  |
| 433 | 1.10.4.20 | **Simulator Support for Screens** | 20d | 2003-08-28 | 2003-09-24 |  |  |  |  |  |  |  | 0d |  |  |  | 160h |  |  |
| 434 | 1.10.4.20.1 | Design | 3d | 2003-08-28 | 2003-09-01 | 427 |  |  |  |  |  |  | 0d |  |  | Nyoman | 24h |  |  |
| 435 | 1.10.4.20.2 | Coding | 17d | 2003-09-02 | 2003-09-24 | 434 |  |  |  |  |  |  | 0d |  |  | Nyoman | 136h |  |  |
| 437 | 1.11 | **External Team Depencies** | 119d | 2002-11-25 | 2003-05-12 |  |  |  |  |  |  |  | 127d |  |  |  | 256h |  |  |
| 438 | 1.11.1 | **Membership System** | 30d | 2003-04-01 | 2003-05-12 |  |  |  |  |  |  |  | 127d |  |  |  | 240h |  | 6.6.15.1 |
| 439 | 1.11.1.1 | Clearing Code | 15d | 2003-04-01 | 2003-04-21 |  |  |  |  |  |  |  | 127d | 0d | start no earlier than 2003-04-01 | Membership | 120h |  |  |
| 440 | 1.11.1.2 | SBT Feed | 15d | 2003-04-22 | 2003-05-12 | 439 |  |  |  |  |  |  | 127d |  |  | Membership | 120h |  |  |
| 441 | 1.11.2 | **Regulatory** | 1d | 2002-11-25 | 2002-11-25 |  |  |  |  |  |  |  | 245d |  |  |  | 16h |  | 6.6.15.4 |
| 442 | 1.11.2.1 | Reports | 1d | 2002-11-25 | 2002-11-25 |  |  |  |  |  |  |  | 245d |  |  | Regulatory | 8h |  |  |
| 443 | 1.11.2.2 | Order Disclosure | 1d | 2002-11-25 | 2002-11-25 |  |  |  |  |  |  |  | 245d |  |  | Regulatory | 8h |  |  |
| 445 | 1.12 | External Intefaces Project | 248d | 2002-10-08 | 2003-09-18 |  | 51% | 122.03d | 2002-11-21 | 2002-10-08 | 2003-04-02 | 127d | 0d |  |  |  | 3464h | 1915.05h |  |
| 446 | 1.13 | Stock Team internal integration testing | 30d | 2003-09-25 | 2003-11-05 | 68, 332, 445 |  |  |  |  |  |  | 0d |  |  |  |  |  |  |

Notes:
- 445: This included project covers all external interface estimates. Included in the project are / SIAC - Inbound Market Data / SIAC - Outbound Market Data / ITS - Inbound/'Outbound messaging.
