# CBOE Stock System(Main)

Schedule from MS Project, 2002-11-21 to 2003-10-27, A marks actual dates.
CBOE

## Calendars

- Standard: Mon-Fri 08:00-12:00, 13:00-17:00; Sat-Sun off. Exceptions (off unless hours are given): 2002-12-25, 2003-01-01.

## Resources

| Resource |
| --- |
| Mei Wu |
| SBT |
| Sandip |
| Carol |
| Nyoman |
| rad |
| Eva |
| \ |
| SBT Server Group |
| DOS |
| Infra Group |
| Mark Woyna |
| SBT staff |
| Mmark Woyna |
| Murali Yellpeddy |
| Stock Staff |
| DBA Group |
| Mei Wu |
| Stock |
| DB |
| Hardware |
| DBA |
| John Wickberg |
| Jeff Illian |
| 55 |
| Sandip Chat |
| Consultant |
| Matt |
| Crystal |
| Chrystal |
| Stella |
| <att |
| Sadip |
| 6.4.7 |
| Membership |
| Regulatory |
| Unknown |
| Staff |
| All |
| Resource |
| Mike N |
| Mei |
| Sandp |
| Me Wu |
| Carl |
| att |
| Mei/Nyoman |

## Schedule

| ID | WBS | Task | Type | Duration | Start | Finish | Predecessors | Complete | Remaining | Baseline start | Baseline finish | Baseline duration | Total slack | Constraint | Resources | Work | Actual work | Text1 |
| --- | --- | --- | --- | --- | --- | --- | --- | --- | --- | --- | --- | --- | --- | --- | --- | --- | --- | --- |
| 1 | 1 | **CBOEdirect Stock System** |  | 241d? | 2002-11-21 A | 2003-10-27 |  | 78% | 53d? | 2002-10-08 | 2003-06-04 | 170d | 0d |  |  | 10249.6h | 8930.4h |  |
| 3 | 1.1 | **Requirements Gathering and Definition** |  | 62d | 2002-11-25 A | 2003-02-20 A |  | 100% |  | 2002-11-25 | 2003-02-20 | 62d |  |  |  | 1024h | 1024h |  |
| 4 | 1.1.1 | Requirements Member document |  | 60d | 2002-11-25 A | 2003-02-20 A |  | 100% |  | 2002-11-25 | 2003-02-20 | 60d |  |  | Mei Wu | 480h | 480h |  |
| 5 | 1.1.2 | Use Case Comparism |  | 31d | 2002-11-25 A | 2003-01-10 A |  | 100% |  | 2002-11-25 | 2003-01-10 | 31d |  |  | Mei Wu | 248h | 248h | Brad |
| 6 | 1.1.3 | **SBT Code Analysis** |  | 43d | 2002-11-25 A | 2003-01-24 A |  | 100% |  | 2002-11-25 | 2003-01-24 | 43d |  |  |  | 136h | 136h |  |
| 7 | 1.1.3.1 | Order Handling Service |  | 5d | 2002-11-25 A | 2002-11-29 A |  | 100% |  | 2002-11-25 | 2002-11-29 | 5d |  |  | Sandip | 40h | 40h | Sandip |
| 8 | 1.1.3.2 | Market Data Service |  | 5d | 2002-12-02 A | 2002-12-06 A | 7 | 100% |  | 2002-12-02 | 2002-12-06 | 5d |  |  | Sandip | 40h | 40h | Sandip |
| 9 | 1.1.3.3 | Broker Service |  | 7d | 2002-12-09 A | 2002-12-17 A | 8 | 100% |  | 2002-12-09 | 2002-12-17 | 7d |  |  | Sandip | 56h | 56h | Sandip |
| 10 | 1.1.3.4 | Presentation to group | milestone | 0d | 2002-12-17 A | 2002-12-17 A | 9 | 100% |  | 2002-12-17 | 2002-12-17 | 0d |  |  | Sandip |  |  | Sandip |
| 11 | 1.1.3.5 | CATS Support |  | 26d | 2002-12-18 A | 2003-01-24 A | 10 | 100% |  | 2002-12-18 | 2003-01-24 | 26d |  |  |  |  |  |  |
| 12 | 1.1.4 | **Use Case Document** |  | 20d | 2003-01-20 A | 2003-02-14 A |  | 100% |  | 2003-01-20 | 2003-02-17 | 21d |  |  |  | 160h | 160h |  |
| 13 | 1.1.4.1 | Allocate Trade |  | 2d | 2003-01-20 A | 2003-01-21 A |  | 100% |  | 2003-01-20 | 2003-01-21 | 2d |  | start no earlier than 2003-01-20 | Mei Wu | 16h | 16h | Brad |
| 14 | 1.1.4.2 | Monitor Sell Short |  | 2d | 2003-01-22 A | 2003-01-23 A | 13 | 100% |  | 2003-01-22 | 2003-01-23 | 2d |  |  | Mei Wu | 16h | 16h | Brad |
| 15 | 1.1.4.3 | Bust Trade |  | 2d | 2003-01-24 A | 2003-01-27 A | 14 | 100% |  | 2003-01-24 | 2003-01-27 | 2d |  |  | Mei Wu | 16h | 16h | Brad |
| 16 | 1.1.4.4 | Submit Customer Sell Short |  | 2d | 2003-01-28 A | 2003-01-29 A | 15 | 100% |  | 2003-01-28 | 2003-01-29 | 2d |  |  | Mei Wu | 16h | 16h | Brad |
| 17 | 1.1.4.5 | Submit Limit Order |  | 2d | 2003-01-30 A | 2003-01-31 A | 16 | 100% |  | 2003-01-30 | 2003-01-31 | 2d |  |  | Mei Wu | 16h | 16h | Brad |
| 18 | 1.1.4.6 | Submit Market Order |  | 2d | 2003-02-03 A | 2003-02-04 A | 17 | 100% |  | 2003-02-03 | 2003-02-04 | 2d |  |  | Mei Wu | 16h | 16h | Brad |
| 19 | 1.1.4.7 | Submit Quote |  | 2d | 2003-02-05 A | 2003-02-06 A | 18 | 100% |  | 2003-02-05 | 2003-02-06 | 2d |  |  | Mei Wu | 16h | 16h | Brad |
| 20 | 1.1.4.8 | Submit Stop/Stop Limit |  | 1d | 2003-02-07 A | 2003-02-07 A | 19 | 100% |  | 2003-02-07 | 2003-02-07 | 1d |  |  | Mei Wu | 8h | 8h | Brad |
| 21 | 1.1.4.9 | Monitor Stop/Stop Limit |  | 1d | 2003-02-10 A | 2003-02-10 A | 20 | 100% |  | 2003-02-10 | 2003-02-10 | 1d |  |  | Mei Wu | 8h | 8h | Brad |
| 22 | 1.1.4.10 | NBBO IPP Protection |  | 1d | 2003-02-11 A | 2003-02-11 A | 21 | 100% |  | 2003-02-11 | 2003-02-11 | 1d |  |  | Mei Wu | 8h | 8h | Brad |
| 23 | 1.1.4.11 | Done Order Entry |  | 1d | 2003-02-12 A | 2003-02-12 A | 22 | 100% |  | 2003-02-12 | 2003-02-12 | 1d |  |  | Mei Wu | 8h | 8h | Brad |
| 24 | 1.1.4.12 | Market Open Rotation |  | 1d | 2003-02-13 A | 2003-02-13 A | 23 | 100% |  | 2003-02-13 | 2003-02-13 | 1d |  |  | Sandip | 8h | 8h | Sandip |
| 25 | 1.1.4.13 | Monitor Trade Through |  | 1d | 2003-02-14 A | 2003-02-14 A | 24 | 100% |  | 2003-02-14 | 2003-02-14 | 1d |  |  | Consultant | 8h | 8h | Consultant |
| 27 | 1.6.7.6 | Detail Design |  | 3d | 2003-04-25 A | 2003-04-30 A | 28 | 100% |  |  |  |  |  |  |  | 24h | 24h |  |

Notes:
- 4: 1/06/03 - Draft 1.01
- 5: Comparism is completed. / The main use cases for Stock will be re-written to follow the Booch Unified process more closely. The goal is to make it reader usable for the business.
- 6: In junction with the Use Case analysis and comparism. The code will be analyzed to determine re-use. Everyone will be involved with step, Brad will maintain the analysis documentation.
- 12: Note - This task will be dependent upon individual coders providing their use-case analysis for their own tasks. Brad will maintain the overall document.
- 14: Changed from requirements meeting with traders on 1/25/02.
- 15: Complete but needs verified with Business. Might be additional fields needed. Very basic bust scenario.
- 20: 1. Unsure of the send held order message. / 2. Use case seems suffient to continue development since we have source code.
- 21: Included as part of Submit Stop/Stop Limit
- 22: Needs research into IPP code. / The use case is vague so research into code will be needed. This is dependent upon the SBT code merge.
- 23: Not complete. Nyoman will need to define this out further.
- 25: Not entirely complete. Sandip might flush this out some more. / 1. The IPP branch after the code merge will contain the code for this. Potentially a updated use case as well.

| ID | WBS | Task | Type | Duration | Start | Finish | Predecessors | Complete | Baseline start | Baseline finish | Baseline duration | Constraint | Resources | Work | Actual work | Text1 |
| --- | --- | --- | --- | --- | --- | --- | --- | --- | --- | --- | --- | --- | --- | --- | --- | --- |
| 28 | 1.3 | **Development Enviroment setup** |  | 109.1d | 2002-11-21 A | 2003-04-25 A |  | 100% | 2002-11-25 | 2003-02-10 | 54d |  |  | 1961.6h | 1961.6h |  |
| 29 | 1.3.1 | **Iteration 1** |  | 50d | 2002-11-21 A | 2003-01-31 A |  | 100% |  |  |  |  |  | 368h | 368h |  |
| 30 | 1.3.1.1 | Meeting to discuss development environment - Haps0a |  | 1d | 2002-11-21 A | 2002-11-21 A |  | 100% | 2002-11-25 | 2002-11-25 | 1d |  | Mei Wu; Mark Woyna; Eva; SBT staff | 32h | 32h | Brad,Mark Woyna,Eva,SBT staff |
| 31 | 1.3.1.2 | Haps0a Configuration Meeting |  | 1d | 2002-12-19 A | 2002-12-19 A |  | 100% |  |  |  | start no earlier than 2002-12-19 | Mei Wu; Mark Woyna; Eva; SBT staff | 24h | 24h | Brad,Mark Woyna,Eva,SBT staff |
| 32 | 1.3.1.3 | Haps0a Request for help |  | 1d | 2002-12-30 A | 2002-12-30 A |  | 100% |  |  |  | start no earlier than 2002-12-30 | Mei Wu; Mmark Woyna | 16h | 16h | Brad,Mmark Woyna |
| 33 | 1.3.1.4 | Haps Infrastructure Installation |  | 3d | 2003-01-06 A | 2003-01-08 A |  | 100% |  |  |  | start no earlier than 2003-01-06 | Murali Yellpeddy; Stock Staff | 48h | 48h | Murali Yellpeddy,Stock Staff |
| 34 | 1.3.1.5 | Contact DB staff to install SBT Database |  | 1d | 2003-01-09 A | 2003-01-09 A | 33 | 100% |  |  |  |  | Mei Wu | 8h | 8h | Brad |
| 35 | 1.3.1.6 | Database Installation Complete |  | 4d | 2003-01-10 A | 2003-01-15 A | 34 | 100% |  |  |  |  | DBA Group | 32h | 32h | DBA Group |
| 36 | 1.3.1.7 | Infrastructure Installlation Complete |  | 5d | 2003-01-16 A | 2003-01-22 A | 35 | 100% |  |  |  |  | Murali Yellpeddy | 40h | 40h | Murali Yellpeddy |
| 37 | 1.3.1.8 | SBT Tradeengine install |  | 7d | 2003-01-23 A | 2003-01-31 A | 36 | 100% |  |  |  |  | Mei Wu; Murali Yellpeddy | 112h | 112h | Mei Wu,Murali Yellpeddy |
| 38 | 1.3.1.9 | CAS install to haps0a |  | 7d | 2003-01-23 A | 2003-01-31 A | 36 | 100% |  |  |  |  | Sandip | 56h | 56h | Sandip |
| 39 | 1.3.1.10 | Could Not complete CAS or Tradeengine Install | milestone | 0d | 2003-01-31 A | 2003-01-31 A | 38 | 100% |  |  |  |  |  |  |  |  |
| 40 | 1.3.2 | **Iteration 2** |  | 66.1d | 2003-01-23 A | 2003-04-25 A |  | 100% |  |  |  |  |  | 1569.6h | 1569.6h |  |
| 41 | 1.3.2.1 | Met with SBT/Hardware/DB for alternative solution |  | 1d | 2003-01-23 A | 2003-01-23 A |  | 100% |  |  |  | start no earlier than 2003-01-23 | SBT; Stock; DB; Hardware | 32h | 32h | SBT,Stock,DB,Hardware |
| 42 | 1.3.2.2 | Development Boxes ready |  | 9d | 2003-01-24 A | 2003-02-05 A | 41 | 100% |  |  |  |  | DOS; DBA | 144h | 144h | DOS,DBA |
| 43 | 1.3.2.3 | Infrastructure Install |  | 3d | 2003-02-06 A | 2003-02-10 A | 42 | 100% |  |  |  |  | Murali Yellpeddy; Sandip | 48h | 48h | Murali Yellpeddy,Sandip |
| 44 | 1.3.2.4 | Meeting to get Stock Dev branch and code |  | 1d | 2003-02-04 A | 2003-02-04 A |  | 100% |  |  |  | start no earlier than 2003-02-04 | Stock; SBT Server Group | 16h | 16h | Stock,SBT Server Group |
| 45 | 1.3.2.5 | SBT Code merge for stock branch |  | 3d | 2003-02-05 A | 2003-02-07 A | 44 | 100% |  |  |  |  | John Wickberg | 24h | 24h | John Wickberg |
| 46 | 1.3.2.6 | SBT Tradeengine and CAS Installation |  | 55d | 2003-02-07 A | 2003-04-25 A | 45 | 100% |  |  |  |  | Sandip; Matt; Mei Wu | 1305.6h | 1305.6h | Sandip |
| 47 | 1.3.3 | **Database Model** |  | 1d | 2003-02-20 A | 2003-02-20 A |  | 100% |  |  |  |  |  | 24h | 24h |  |
| 48 | 1.3.3.1 | Meeting to finalize datamodel changes |  | 1d | 2003-02-20 A | 2003-02-20 A |  | 100% |  |  |  | start no earlier than 2003-02-20 | Eva; Mei Wu; Carol | 24h | 24h | Eva,Brad,Carol |
| 50 | 1.4 | **Consultant Hire and Introduction** |  | 15d | 2003-03-17 A | 2003-04-04 A |  | 100% |  |  |  |  |  | 80h | 80h |  |
| 51 | 1.4.1 | **Matt Sochacki** |  | 5d | 2003-03-17 A | 2003-03-21 A |  | 100% |  |  |  |  |  | 40h | 40h |  |
| 52 | 1.4.1.1 | Overview of System |  | 1d | 2003-03-17 A | 2003-03-17 A |  | 100% |  |  |  | start no earlier than 2003-03-17 | Matt | 8h | 8h | Matt |
| 53 | 1.4.1.2 | Traning/Setup |  | 4d | 2003-03-18 A | 2003-03-21 A | 52 | 100% |  |  |  |  | Matt | 32h | 32h | Matt |

Notes:
- 28: History... / 1. Request initially made in November. / 2. HAPS0a was given in January to test with. / 3. SBT was not able to be successfully installed and brought up. / 4. 2 new machines( sktdev, stkcas ) were requested. / 5. Installation attemping on those.
- 30: 1. Brad will contact QA to install a copy of CBOEDirect( Trade Service, Business Cluster ) onto Haps0a. The infrastructure can be run on another box of Paul Cicora. / 2. Paul Cicora and Brad Samuels will forward the install document to us for us to learn a little about the configuration.
- 31: 1. Attempting to setup HAps0a. Still need documenation from SBT.
- 33: Murali began the haps0a install for infrastructure. He updated the QA install from previous meeting to a more up to date branch. / Detected that Oracle was not configured or the database set up. This was Brad's mistake on not having that setup.
- 37: Contact Mei Wu directly since no response from Samuels. Began trade engine install / Determined that Trade Engine could not be installed on HAPS0a successfully.
- 41: Two boxes dedicated for the stoc development: / stkdev - / E250 - 2GB Memory, 120GB T3 storage, 2 n/w interfaces, .250 and .237 / Oracle 8.1.7 / X.25 card and middlewear and connection to SIAC test X.25 circuit. / Infra - only Sysman Agent(s) will be required (no rtserver needed). / Tradeeng - Tradeeng GC, Tradeeng BC and Tradeeng FE processes / stkcas / 220R - 2GB Memory, 18GB storage / Infra - SysMan Agent(s) / CAS - cas and sacas / Infrastructure needed to support this will be on: / devinfraa (or devinfrab (backup) / This box will host the Infrastructure processes needed by the stoc application including tradeeng and cas. / All these 3 boxes will be the week of Feb 3rd for stoc development. / X.25 card and Middlewear is on order awaiting PO signatures.
- 42: Getting passwords for database still needs to be completed.
- 45: Completed on 2/24/03

| ID | WBS | Task | Type | Duration | Start | Finish | Predecessors | Complete | Remaining | Baseline start | Baseline finish | Baseline duration | Total slack | Constraint | Resources | Work | Actual work | Text1 | Text2 |
| --- | --- | --- | --- | --- | --- | --- | --- | --- | --- | --- | --- | --- | --- | --- | --- | --- | --- | --- | --- |
| 54 | 1.4.2 | **Crystal Chen** |  | 5d | 2003-03-31 A | 2003-04-04 A |  | 100% |  |  |  |  |  |  |  | 40h | 40h |  |  |
| 55 | 1.4.2.1 | Overview of System |  | 1d | 2003-03-31 A | 2003-03-31 A |  | 100% |  |  |  |  |  | start no earlier than 2003-03-31 | Crystal | 8h | 8h | Crystal |  |
| 56 | 1.4.2.2 | Traning/Setup |  | 4d | 2003-04-01 A | 2003-04-04 A | 55 | 100% |  |  |  |  |  |  | Crystal | 32h | 32h | Crystal |  |
| 58 | 1.5 | **Pre-Design** |  | 8d | 2003-03-19 A | 2003-03-28 A |  | 100% |  |  |  |  |  |  |  | 32h | 32h |  |  |
| 59 | 1.5.1 | **Potential Database Changes** |  | 2d | 2003-03-19 A | 2003-03-20 A |  | 100% |  |  |  |  |  |  |  | 16h | 16h |  |  |
| 60 | 1.5.1.1 | Product( Cusip ) |  | 1d | 2003-03-19 A | 2003-03-19 A |  | 100% |  |  |  |  |  | start no earlier than 2003-03-19 | Mei Wu | 8h | 8h |  |  |
| 61 | 1.5.1.2 | Member( Clearing code ) |  | 1d | 2003-03-20 A | 2003-03-20 A | 60 | 100% |  |  |  |  |  |  | Mei Wu | 8h | 8h |  |  |
| 62 | 1.5.2 | **Major Object Changes** |  | 1d | 2003-03-21 A | 2003-03-21 A |  | 100% |  |  |  |  |  |  |  | 8h | 8h |  |  |
| 63 | 1.5.2.1 | Order Side - Sell Short |  | 1d | 2003-03-21 A | 2003-03-21 A | 61 | 100% |  |  |  |  |  |  | Mei Wu | 8h | 8h |  |  |
| 64 | 1.5.3 | **IDL Changes** |  | 1d | 2003-03-27 A | 2003-03-28 A |  | 100% |  |  |  |  |  |  |  | 8h | 8h |  |  |
| 65 | 1.5.3.1 | Imbalance Calculation | milestone | 0d | 2003-03-27 A | 2003-03-27 A | 63 | 100% |  |  |  |  |  |  | Mei Wu |  |  |  |  |
| 66 | 1.5.3.2 | Order Side - Sell Short/Sell Short Exempt |  | 1d | 2003-03-28 A | 2003-03-28 A | 65 | 100% |  |  |  |  |  |  | Mei Wu | 8h | 8h |  |  |
| 68 | 1.6 | **Business Services** |  | 147d | 2003-03-24 A | 2003-10-14 |  | 85% | 22.39d | 2003-02-11 | 2003-06-04 | 82d | 9d |  |  | 3096h | 2640h |  |  |
| 69 | 1.6.1 | **Allocation Allgorithm Changes** |  | 48d | 2003-03-24 A | 2003-05-28 A |  | 100% |  | 2003-02-11 | 2003-02-25 | 11d |  |  |  | 400h | 400h |  | 6.6.5, 6.6.8 |
| 70 | 1.6.1.1 | Detail Design |  | 2d | 2003-03-24 A | 2003-03-25 A | 51 | 100% |  | 2003-02-11 | 2003-02-13 | 3d |  |  | Matt; Sandip | 32h | 32h | Matt |  |
| 71 | 1.6.1.2 | Design Walkthrough | milestone | 0d | 2003-03-25 A | 2003-03-25 A | 70 | 100% |  |  |  |  |  |  | Matt |  |  | Matt |  |
| 72 | 1.6.1.3 | Additional Design and Evaluation of SBT |  | 12d | 2003-03-26 A | 2003-04-10 A | 71 | 100% |  |  |  |  |  |  | Matt | 96h | 96h |  |  |
| 73 | 1.6.1.4 | Walkthrough with Sandip on Algorithms |  | 5d | 2003-04-11 A | 2003-04-17 A | 72 | 100% |  |  |  |  |  |  | Matt | 40h | 40h |  |  |
| 74 | 1.6.1.5 | Configuration Delays |  | 12d | 2003-04-18 A | 2003-05-05 A | 73 | 100% |  |  |  |  |  |  | Matt | 96h | 96h |  |  |
| 75 | 1.6.1.6 | **Iteration 1** |  | 10d | 2003-05-05 A | 2003-05-19 A |  | 100% |  |  |  |  |  |  |  | 64h | 64h |  |  |
| 76 | 1.6.1.6.1 | Odd-Lot | milestone | 0d | 2003-05-05 A | 2003-05-05 A | 74 | 100% |  |  |  |  |  |  | Matt |  |  |  |  |
| 77 | 1.6.1.6.2 | Mixed Lot | milestone | 0d | 2003-05-05 A | 2003-05-05 A | 76 | 100% |  |  |  |  |  |  | Matt |  |  |  |  |
| 78 | 1.6.1.6.3 | Pro-Rata |  | 4d | 2003-05-06 A | 2003-05-09 A | 77 | 100% |  | 2003-02-14 | 2003-02-19 | 4d |  |  | Matt | 32h | 32h | Matt |  |
| 79 | 1.6.1.6.4 | Time-Price |  | 4d | 2003-05-12 A | 2003-05-15 A | 78 | 100% |  | 2003-02-20 | 2003-02-25 | 4d |  |  | Matt | 32h | 32h | Matt |  |
| 80 | 1.6.1.6.5 | Trade Service |  | 2d | 2003-05-16 A | 2003-05-19 A | 79 | 100% |  |  |  |  |  |  |  |  |  |  |  |

Notes:
- 58: For lack of a better term, pre-design is meant to determine what database fields and what new IDL stock will require as early as possible. / No dependencies are placed on this task and it will not be considered as part of overallocated resources. These tasks are more for reminders as things that need to be completed as soon as possible.
- 60: In the DB meeting earlier we might be ok with this one.
- 61: This item might also be ok in the DB field. From meeting in Jan.
- 65: Removing this requirement.
- 69: 6.6.5 - Evaluate the od/lot mixed lot plus allocations / Use Case Complete

| ID | WBS | Task | Type | Duration | Start | Finish | Predecessors | Complete | Baseline start | Baseline finish | Baseline duration | Constraint | Resources | Work | Actual work | Text1 | Text2 |
| --- | --- | --- | --- | --- | --- | --- | --- | --- | --- | --- | --- | --- | --- | --- | --- | --- | --- |
| 81 | 1.6.1.7 | **Iteration 2** |  | 6d | 2003-05-20 A | 2003-05-27 A |  | 100% |  |  |  |  |  | 56h | 56h |  |  |
| 82 | 1.6.1.7.1 | Trade Service |  | 3d | 2003-05-20 A | 2003-05-22 A | 75 | 100% |  |  |  |  | Matt | 24h | 24h | Matt |  |
| 83 | 1.6.1.7.2 | Trade Envoy |  | 4d | 2003-05-22 A | 2003-05-27 A | 82 | 100% |  |  |  |  | Matt | 32h | 32h | Matt |  |
| 84 | 1.6.1.8 | Test Plan |  | 2d | 2003-05-20 A | 2003-05-28 A | 83 | 100% |  |  |  |  | Matt | 16h | 16h |  |  |
| 85 | 1.6.1.9 | Code Walkthrough | milestone | 0d | 2003-05-28 A | 2003-05-28 A | 84 | 100% |  |  |  |  | Matt |  |  | Matt |  |
| 86 | 1.6.2 | **Allocation Algorithm Testing** |  | 22d | 2003-05-29 A | 2003-06-27 A |  | 100% |  |  |  |  |  | 176h | 176h |  |  |
| 87 | 1.6.2.1 | Environment Setup |  | 8d | 2003-05-29 A | 2003-06-09 A | 69 | 100% |  |  |  |  | Matt | 64h | 64h |  |  |
| 88 | 1.6.2.2 | Clearcase Issues |  | 2d | 2003-06-10 A | 2003-06-11 A | 87 | 100% |  |  |  |  | Matt | 16h | 16h |  |  |
| 89 | 1.6.2.3 | **Testing Effort** |  | 12d | 2003-06-12 A | 2003-06-27 A |  | 100% |  |  |  |  |  | 96h | 96h |  |  |
| 90 | 1.6.2.3.1 | Allocation and Quoting |  | 12d | 2003-06-12 A | 2003-06-27 A | 88 | 100% |  |  |  |  | Matt | 96h | 96h |  |  |
| 91 | 1.6.3 | **Lot Size Entry and Caching** |  | 9d | 2003-06-30 A | 2003-07-10 A |  | 100% |  |  |  |  |  | 72h | 72h |  |  |
| 92 | 1.6.3.1 | Analysis |  | 1d | 2003-06-30 A | 2003-06-30 A | 86 | 100% |  |  |  |  | Matt | 8h | 8h |  |  |
| 93 | 1.6.3.2 | Design |  | 1d | 2003-07-01 A | 2003-07-01 A | 92 | 100% |  |  |  |  | Matt | 8h | 8h |  |  |
| 94 | 1.6.3.3 | 1st Iteration Coding/Testing |  | 4d | 2003-07-02 A | 2003-07-07 A | 93 | 100% |  |  |  |  | Matt | 32h | 32h |  |  |
| 95 | 1.6.3.4 | 2nd Iteration Coding/Testing/Configuration |  | 3d | 2003-07-08 A | 2003-07-10 A | 94 | 100% |  |  |  |  | Matt | 24h | 24h |  |  |
| 96 | 1.6.4 | **Automated Execution for Marketable Orders** |  | 22d | 2003-04-07 A | 2003-05-06 A |  | 100% |  |  |  |  |  | 40h | 40h |  | 5.2.3 |
| 97 | 1.6.4.1 | Testing |  | 3d | 2003-04-07 A | 2003-04-09 A | 54 | 100% |  |  |  |  | Crystal | 24h | 24h | Crystal |  |
| 98 | 1.6.4.2 | Delay for Merge to SBT 3.0 |  | 12d | 2003-04-17 A | 2003-05-02 A | 97 | 100% |  |  |  | start no earlier than 2003-04-17 |  |  |  |  |  |
| 99 | 1.6.4.3 | Rotue to Manual Handling |  | 2d | 2003-05-05 A | 2003-05-06 A | 98 | 100% |  |  |  |  | Crystal | 16h | 16h | Crystal |  |
| 100 | 1.6.5 | **Trade Bust** |  | 60d | 2003-04-28 A | 2003-07-18 A |  | 100% | 2003-04-11 | 2003-04-29 | 13d |  |  | 240h | 240h |  | 6.4.8, 6.6.15.2 |
| 101 | 1.6.5.1 | **Detail Design** |  | 14d | 2003-04-28 A | 2003-05-15 A |  | 100% | 2003-04-11 | 2003-04-16 | 4d |  |  | 112h | 112h |  |  |
| 102 | 1.6.5.1.1 | Use Case |  | 2d | 2003-04-28 A | 2003-04-29 A |  | 100% |  |  |  | start no earlier than 2003-04-28 | Eva | 16h | 16h |  |  |
| 103 | 1.6.5.1.2 | Clearing issues and time frames |  | 1d | 2003-04-30 A | 2003-04-30 A | 102 | 100% | 2003-04-11 | 2003-04-11 | 1d |  | Crystal | 8h | 8h | Crystal |  |
| 104 | 1.6.5.1.3 | Database changes |  | 1d | 2003-05-01 A | 2003-05-01 A | 103 | 100% | 2003-04-14 | 2003-04-14 | 1d |  | Crystal | 8h | 8h | Crystal |  |
| 105 | 1.6.5.1.4 | Detail Design |  | 1d | 2003-05-02 A | 2003-05-02 A | 104 | 100% |  |  |  |  | Crystal | 8h | 8h |  |  |
| 106 | 1.6.5.1.5 | Configuration Delay |  | 9d | 2003-05-05 A | 2003-05-15 A | 105 | 100% |  |  |  |  | Crystal | 72h | 72h |  |  |

Notes:
- 96: 5.2.3 - Marketable against CBOE for inbound orders. / This task should be part of SBT. The project plan reflects testing of this piece and ensuring that after the order is displayed for 1 second, it is routed to manual handling. The system should display for one second the remaining quantity after execution. / Includes testing of contingencies.
- 100: 6.4.8 Trade Bust and Adjustment / This section needs a lot of research and explanation to what we can do and what CBOEdirect already does.

| ID | WBS | Task | Type | Duration | Start | Finish | Predecessors | Complete | Baseline start | Baseline finish | Baseline duration | Constraint | Resources | Work | Actual work | Text1 | Text2 |
| --- | --- | --- | --- | --- | --- | --- | --- | --- | --- | --- | --- | --- | --- | --- | --- | --- | --- |
| 107 | 1.6.5.2 | **1st Iteration Coding** |  | 4d | 2003-05-16 A | 2003-05-21 A |  | 100% | 2003-04-17 | 2003-04-23 | 5d |  |  | 48h | 48h |  |  |
| 108 | 1.6.5.2.1 | GUI |  | 2d | 2003-05-16 A | 2003-05-19 A | 106 | 100% | 2003-04-17 | 2003-04-17 | 1d |  | Crystal | 16h | 16h | Crystal |  |
| 109 | 1.6.5.2.2 | **Server** |  | 4d | 2003-05-16 A | 2003-05-21 A |  | 100% | 2003-04-18 | 2003-04-23 | 4d |  |  | 32h | 32h | Crystal |  |
| 110 | 1.6.5.2.2.1 | IDL Changes |  | 1d | 2003-05-16 A | 2003-05-16 A | 106 | 100% |  |  |  |  | Crystal | 8h | 8h |  |  |
| 111 | 1.6.5.2.2.2 | IDL Affected Code |  | 2d | 2003-05-19 A | 2003-05-20 A | 110 | 100% |  |  |  |  | Crystal | 16h | 16h |  |  |
| 112 | 1.6.5.2.2.3 | Trade Service |  | 1d | 2003-05-21 A | 2003-05-21 A | 111 | 100% |  |  |  |  | Crystal | 8h | 8h |  |  |
| 113 | 1.6.5.3 | Detail Design |  | 1d | 2003-05-22 A | 2003-05-22 A | 109 | 100% | 2003-04-24 | 2003-04-24 | 1d |  | Crystal | 8h | 8h | Crystal |  |
| 114 | 1.6.5.4 | **2nd Iteration Coding** |  | 5d | 2003-05-23 A | 2003-05-29 A |  | 100% | 2003-04-24 | 2003-04-29 | 4d |  |  | 40h | 40h |  |  |
| 115 | 1.6.5.4.1 | GUI |  | 2d | 2003-05-23 A | 2003-05-26 A | 113 | 100% | 2003-04-24 | 2003-04-24 | 1d |  | Crystal | 16h | 16h | Crystal |  |
| 116 | 1.6.5.4.2 | Server |  | 3d | 2003-05-27 A | 2003-05-29 A | 115 | 100% | 2003-04-25 | 2003-04-29 | 3d |  | Crystal | 24h | 24h | Crystal |  |
| 117 | 1.6.5.5 | Testing |  | 2d | 2003-07-17 A | 2003-07-18 A | 116 | 100% |  |  |  | start no earlier than 2003-07-17 | Crystal; Nyoman | 32h | 32h |  |  |
| 118 | 1.6.6 | **Trade Bust and Trade Server Integration to Calendar Service** |  | 8d | 2003-09-03 A | 2003-09-12 A |  | 100% |  |  |  |  |  | 80h | 80h |  |  |
| 119 | 1.6.6.1 | Update code in trade bust to read Calendar date |  | 3d | 2003-09-03 A | 2003-09-05 A | 191 | 100% |  |  |  | start no earlier than 2003-08-22 | Crystal | 24h | 24h |  |  |
| 120 | 1.6.6.2 | GUI to read Calendar Service |  | 3d | 2003-09-08 A | 2003-09-10 A | 119 | 100% |  |  |  |  | Nyoman | 24h | 24h |  |  |
| 121 | 1.6.6.3 | Testing |  | 2d | 2003-09-11 A | 2003-09-12 A | 120 | 100% |  |  |  |  | Crystal; Nyoman | 32h | 32h |  |  |
| 122 | 1.6.6.4 | Code Walkthrough | milestone | 0d | 2003-09-12 A | 2003-09-12 A | 121 | 100% |  |  |  |  | Crystal |  |  | Crystal |  |
| 123 | 1.6.7 | **NBBO( IPP ) Protection - NBBO Stepup** |  | 64d | 2003-04-17 A | 2003-07-15 A |  | 100% | 2003-04-15 | 2003-05-02 | 14d |  |  | 128h | 128h |  | 5.2.1, 5.2.2, 5.2.4 |
| 124 | 1.6.7.1 | **Detail Design** |  | 17d | 2003-04-17 A | 2003-05-09 A |  | 100% | 2003-04-15 | 2003-04-18 | 4d |  |  | 32h | 32h |  |  |
| 125 | 1.6.7.1.1 | Plug point for penny rule for ITS |  | 2d | 2003-05-08 A | 2003-05-09 A | 96 | 100% | 2003-04-15 | 2003-04-16 | 2d |  | Crystal | 16h | 16h | Crystal |  |
| 126 | 1.6.7.1.2 | Server |  | 2d | 2003-04-17 A | 2003-04-18 A | 125 | 100% | 2003-04-17 | 2003-04-18 | 2d |  | Crystal | 16h | 16h | Crystal |  |
| 127 | 1.6.7.2 | Design Walkthrough | milestone | 0d | 2003-04-18 A | 2003-04-18 A | 124 | 100% |  |  |  |  | Crystal |  |  | Crystal |  |
| 128 | 1.6.7.3 | **First Iteration Coding** |  | 5d | 2003-06-02 A | 2003-06-06 A |  | 100% | 2003-04-21 | 2003-04-25 | 5d |  |  | 40h | 40h |  |  |
| 129 | 1.6.7.3.1 | **Server** |  | 5d | 2003-06-02 A | 2003-06-06 A |  | 100% | 2003-04-21 | 2003-04-25 | 5d |  |  | 40h | 40h | Crystal |  |
| 130 | 1.6.7.3.1.1 | ITS Strategies |  | 5d | 2003-06-02 A | 2003-06-06 A | 100 | 100% |  |  |  |  | Crystal | 40h | 40h |  |  |
| 131 | 1.6.7.4 | Detail Design |  | 2d | 2003-06-09 A | 2003-06-10 A | 129 | 100% | 2003-04-28 | 2003-04-29 | 2d |  | Crystal | 16h | 16h | Crystal |  |

Notes:
- 123: 5.2.1 - NBBO Step-Up / 5.2.2 - Manual Handling - When re-routed with NBBO protection flag off/on. / 5.2.4 - Unmarketable against CBOE but marketable again NBBO. / This task could potentially have some dependencies on the manual handling agent.
- 125: Not implemented

| ID | WBS | Task | Type | Duration | Start | Finish | Predecessors | Complete | Baseline start | Baseline finish | Baseline duration | Constraint | Resources | Work | Actual work | Text1 | Text2 |
| --- | --- | --- | --- | --- | --- | --- | --- | --- | --- | --- | --- | --- | --- | --- | --- | --- | --- |
| 132 | 1.6.7.5 | **Second Iteration Coding** |  | 3d | 2003-06-11 A | 2003-06-13 A |  | 100% | 2003-04-30 | 2003-05-02 | 3d |  |  | 24h | 24h |  |  |
| 133 | 1.6.7.5.1 | Server |  | 3d | 2003-06-11 A | 2003-06-13 A | 131 | 100% | 2003-04-30 | 2003-05-02 | 3d |  | Crystal | 24h | 24h | Crystal |  |
| 134 | 1.6.7.6 | Testing |  | 1d | 2003-07-15 A | 2003-07-15 A | 133 | 100% |  |  |  | start no earlier than 2003-07-15 | Crystal; Nyoman | 16h | 16h |  |  |
| 135 | 1.6.7.7 | Code Walkthrough | milestone | 0d | 2003-07-15 A | 2003-07-15 A | 134 | 100% |  |  |  |  | Crystal |  |  | Crystal |  |
| 136 | 1.6.8 | **Sell Short** |  | 52d | 2003-06-17 A | 2003-08-27 A |  | 100% | 2003-03-12 | 2003-04-03 | 17d |  |  | 320h | 320h |  | 6.6.6 |
| 137 | 1.6.8.1 | **Detail Design** |  | 3d | 2003-06-17 A | 2003-06-19 A |  | 100% | 2003-03-12 | 2003-03-14 | 3d |  | Crystal | 48h | 48h | Crystal |  |
| 138 | 1.6.8.1.1 | Determine Event Channel to Monitor Ticks |  | 1d | 2003-06-17 A | 2003-06-17 A | 123 | 100% |  |  |  |  | Crystal | 8h | 8h |  |  |
| 139 | 1.6.8.1.2 | Determine Event Channel to Monitor NBBO |  | 1d | 2003-06-18 A | 2003-06-18 A | 138 | 100% |  |  |  |  | Crystal | 8h | 8h |  |  |
| 140 | 1.6.8.1.3 | Design Service to handle the monitoring of sell short |  | 1d | 2003-06-19 A | 2003-06-19 A | 139 | 100% |  |  |  |  | Crystal | 8h | 8h |  |  |
| 141 | 1.6.8.1.4 | Deisgn Walkthrough | milestone | 0d | 2003-06-19 A | 2003-06-19 A | 140 | 100% |  |  |  |  | Crystal |  |  | Crystal |  |
| 142 | 1.6.8.2 | **First Iteration Coding** |  | 36d | 2003-06-20 A | 2003-08-08 A |  | 100% | 2003-03-17 | 2003-03-28 | 10d |  |  | 160h | 160h |  |  |
| 143 | 1.6.8.2.1 | **Server** |  | 36d | 2003-06-20 A | 2003-08-08 A |  | 100% | 2003-03-17 | 2003-03-28 | 10d |  |  | 160h | 160h | Crystal |  |
| 144 | 1.6.8.2.1.1 | Sell Short Strategy/Factory |  | 1d | 2003-06-20 A | 2003-06-20 A | 137 | 100% |  |  |  |  | Crystal | 8h | 8h |  |  |
| 145 | 1.6.8.2.1.2 | Order Book helper methods |  | 1d | 2003-06-25 A | 2003-06-25 A | 144 | 100% |  |  |  |  | Crystal | 8h | 8h |  |  |
| 146 | 1.6.8.2.1.3 | Order Helper Methods |  | 2d | 2003-06-27 A | 2003-06-30 A | 145 | 100% |  |  |  |  | Crystal | 16h | 16h |  |  |
| 147 | 1.6.8.2.1.4 | Sell Short Holder |  | 1d | 2003-07-02 A | 2003-07-02 A | 146 | 100% |  |  |  |  | Crystal | 8h | 8h |  |  |
| 148 | 1.6.8.2.1.5 | Recap consumer XML to receive recap in the short sale service. |  | 1d | 2003-07-21 A | 2003-07-21 A | 147 | 100% |  |  |  | start no earlier than 2003-07-21 | Crystal | 8h | 8h |  |  |
| 149 | 1.6.8.2.1.6 | Testing of sell short order entry |  | 2d | 2003-07-22 A | 2003-07-23 A | 148 | 100% |  |  |  |  | Crystal | 16h | 16h |  |  |
| 150 | 1.6.8.2.1.7 | Test sell short order is booked with derived price |  | 1d | 2003-07-24 A | 2003-07-24 A | 149 | 100% |  |  |  |  | Crystal | 8h | 8h |  |  |
| 151 | 1.6.8.2.1.8 | Test sell short rules not applied for ETF. |  | 1d | 2003-07-25 A | 2003-07-25 A | 150 | 100% |  |  |  |  | Crystal | 8h | 8h |  |  |
| 152 | 1.6.8.2.1.9 | Test 0 minus rule is in effect for principal type orders. |  | 2d | 2003-07-28 A | 2003-07-29 A | 151 | 100% |  |  |  |  | Crystal | 16h | 16h |  |  |
| 153 | 1.6.8.2.1.10 | Monitoring Service and Tick updates |  | 3d | 2003-07-30 A | 2003-08-01 A | 152 | 100% |  |  |  |  | Crystal | 24h | 24h |  |  |
| 154 | 1.6.8.2.1.11 | Test sell short for stop/stop limit |  | 1d | 2003-08-04 A | 2003-08-04 A | 153 | 100% |  |  |  |  | Crystal | 8h | 8h |  |  |
| 155 | 1.6.8.2.1.12 | Recovery of sell short on failover. |  | 4d | 2003-08-05 A | 2003-08-08 A | 154 | 100% |  |  |  |  | Crystal | 32h | 32h |  |  |

Notes:
- 136: 6.6.6 / Sell short logic is lightly described in the use case and requirements.
- 137: Lagged set back because design can start before Matt is done.

| ID | WBS | Task | Type | Duration | Start | Finish | Predecessors | Complete | Baseline start | Baseline finish | Baseline duration | Total slack | Free slack | Constraint | Resources | Work | Actual work | Text1 |
| --- | --- | --- | --- | --- | --- | --- | --- | --- | --- | --- | --- | --- | --- | --- | --- | --- | --- | --- |
| 156 | 1.6.8.3 | **2nd Iteration Coding** |  | 27d | 2003-07-15 A | 2003-08-20 A |  | 100% | 2003-03-31 | 2003-04-03 | 4d |  |  |  |  | 72h | 72h |  |
| 157 | 1.6.8.3.1 | Failover of Derived Order |  | 3d | 2003-08-11 A | 2003-08-13 A | 143 | 100% |  |  |  |  |  |  | Crystal | 24h | 24h |  |
| 158 | 1.6.8.3.2 | Trading Properties - ETF |  | 1d | 2003-07-15 A | 2003-07-15 A | 157 | 100% |  |  |  |  |  |  | Crystal | 8h | 8h |  |
| 159 | 1.6.8.3.3 | Handle market open assignment( using previous day close )] |  | 3d | 2003-08-14 A | 2003-08-18 A | 157 | 100% |  |  |  |  |  |  | Crystal | 24h | 24h |  |
| 160 | 1.6.8.3.4 | Monitor product state changes to determine sell short monitoring |  | 2d | 2003-08-19 A | 2003-08-20 A | 159 | 100% |  |  |  |  |  |  | Crystal | 16h | 16h |  |
| 161 | 1.6.8.4 | Code Walkthrough | milestone | 0d | 2003-08-20 A | 2003-08-20 A | 160 | 100% |  |  |  |  |  |  | Crystal |  |  | Crystal |
| 162 | 1.6.8.5 | Testing |  | 5d | 2003-08-21 A | 2003-08-27 A | 161 | 100% |  |  |  |  |  |  | Crystal | 40h | 40h |  |
| 163 | 1.6.9 | **Allocation Defects** |  | 3d | 2003-08-14 A | 2003-08-18 A |  | 100% |  |  |  |  |  |  |  | 24h | 24h |  |
| 164 | 1.6.9.1 | Sell short orders with remainder entering manual handling |  | 3d | 2003-08-14 A | 2003-08-18 A | 286 | 100% |  |  |  |  |  |  | Matt | 24h | 24h |  |
| 165 | 1.6.10 | **Monitor NBBO For Orders and Trades** |  | 6d | 2003-08-18 A | 2003-08-25 A |  | 100% |  |  |  |  |  |  |  | 48h | 48h |  |
| 166 | 1.6.10.1 | Implementation |  | 4d | 2003-08-18 A | 2003-08-21 A |  | 100% |  |  |  |  |  | start no earlier than 2003-08-18 | Matt | 32h | 32h |  |
| 167 | 1.6.10.2 | Environment setup |  | 1d | 2003-08-22 A | 2003-08-22 A | 166 | 100% |  |  |  |  |  |  | Matt | 8h | 8h |  |
| 168 | 1.6.10.3 | Testing |  | 1d | 2003-08-25 A | 2003-08-25 A | 167 | 100% |  |  |  |  |  |  | Matt | 8h | 8h |  |
| 169 | 1.6.11 | **Market Opening Trade Match( Non-Primary )** |  | 9d | 2003-08-26 A | 2003-09-05 A |  | 100% |  |  |  |  |  |  |  | 72h | 72h |  |
| 170 | 1.6.11.1 | Design |  | 1d | 2003-08-26 A | 2003-08-26 A | 165 | 100% |  |  |  |  |  |  | Matt | 8h | 8h |  |
| 171 | 1.6.11.2 | Coding |  | 5d | 2003-08-27 A | 2003-09-02 A | 170 | 100% |  |  |  |  |  |  | Matt | 40h | 40h |  |
| 172 | 1.6.11.3 | Environment |  | 1d | 2003-09-03 A | 2003-09-03 A | 171 | 100% |  |  |  |  |  |  | Matt | 8h | 8h |  |
| 173 | 1.6.11.4 | Testing |  | 2d | 2003-09-04 A | 2003-09-05 A | 172 | 100% |  |  |  |  |  |  | Matt | 16h | 16h |  |
| 174 | 1.6.12 | **Merge Linkage and test environment** |  | 4d | 2003-09-19 | 2003-09-24 |  |  |  |  |  | 9d | 0d |  |  | 32h |  |  |
| 175 | 1.6.12.1 | Perform Merge |  | 2d | 2003-09-19 | 2003-09-22 |  |  |  |  |  | 9d | 0d | start no earlier than 2003-09-19 | Matt | 16h |  |  |
| 176 | 1.6.12.2 | Test environment |  | 2d | 2003-09-23 | 2003-09-24 | 175 |  |  |  |  | 9d |  |  | Matt | 16h |  |  |
| 177 | 1.6.13 | **Generate BOTR with NBBO information so we don't walk book** |  | 7d | 2003-09-25 | 2003-10-03 |  |  |  |  |  | 9d | 0d |  |  | 56h |  |  |
| 178 | 1.6.13.1 | Design |  | 1d | 2003-09-25 | 2003-09-25 | 174 |  |  |  |  | 9d | 0d |  | Matt | 8h |  |  |
| 179 | 1.6.13.2 | Coding |  | 4d | 2003-09-26 | 2003-10-01 | 178 |  |  |  |  | 9d | 0d |  | Matt | 32h |  |  |
| 180 | 1.6.13.3 | Environment |  | 1d | 2003-10-02 | 2003-10-02 | 179 |  |  |  |  | 9d | 0d |  | Matt | 8h |  |  |
| 181 | 1.6.13.4 | Testing |  | 1d | 2003-10-03 | 2003-10-03 | 180 |  |  |  |  | 9d |  |  | Matt | 8h |  |  |

| ID | WBS | Task | Type | Duration | Start | Finish | Predecessors | Complete | Baseline start | Baseline finish | Baseline duration | Total slack | Free slack | Constraint | Resources | Work | Actual work | Text2 | Text1 |
| --- | --- | --- | --- | --- | --- | --- | --- | --- | --- | --- | --- | --- | --- | --- | --- | --- | --- | --- | --- |
| 182 | 1.6.14 | **Sell Short Orders - Cancelling** |  | 5d | 2003-10-06 | 2003-10-10 |  |  |  |  |  | 9d | 0d |  |  | 40h |  |  |  |
| 183 | 1.6.14.1 | Design |  | 2d | 2003-10-06 | 2003-10-07 | 177 |  |  |  |  | 9d | 0d |  | Matt | 16h |  |  |  |
| 184 | 1.6.14.2 | Coding |  | 3d | 2003-10-08 | 2003-10-10 | 183 |  |  |  |  | 9d |  |  | Matt | 24h |  |  |  |
| 185 | 1.6.15 | Trade Property - Rollout script |  | 2d | 2003-10-13 | 2003-10-14 | 182 |  |  |  |  | 9d |  |  | Matt | 16h |  |  |  |
| 186 | 1.6.16 | **Defect - Orders routed to manual with Trade History** |  | 1d | 2003-09-11 A | 2003-09-11 A |  | 100% |  |  |  |  |  |  |  | 8h | 8h |  |  |
| 187 | 1.6.16.1 | Testing |  | 1d | 2003-09-11 A | 2003-09-11 A | 177, 165 | 100% |  |  |  |  |  |  | Matt | 8h | 8h |  |  |
| 188 | 1.6.17 | **NBBO Crossed Market and NO NBBO - Manual Routing** |  | 5d | 2003-08-26 A | 2003-09-01 A |  | 100% |  |  |  |  |  |  |  | 40h | 40h |  |  |
| 189 | 1.6.17.1 | Design |  | 2d | 2003-08-26 A | 2003-08-27 A | 165 | 100% |  |  |  |  |  |  | Matt | 16h | 16h |  |  |
| 190 | 1.6.17.2 | Coding |  | 3d | 2003-08-28 A | 2003-09-01 A | 189 | 100% |  |  |  |  |  |  | Matt | 24h | 24h |  |  |
| 191 | 1.6.18 | **Stop/Stop Limit** |  | 7d | 2003-08-25 A | 2003-09-02 A |  | 100% | 2003-04-04 | 2003-04-14 | 7d |  |  |  |  | 56h | 56h | 6.6.7 |  |
| 192 | 1.6.18.1 | Detail Design |  | 1d | 2003-08-25 A | 2003-08-25 A |  | 100% | 2003-04-04 | 2003-04-04 | 1d |  |  | start no earlier than 2003-08-25 | Crystal | 8h | 8h |  | Crystal |
| 193 | 1.6.18.2 | Design Walkthrough | milestone | 0d | 2003-08-25 A | 2003-08-25 A | 192 | 100% |  |  |  |  |  |  | Crystal |  |  |  | Crystal |
| 194 | 1.6.18.3 | **First Iteration Coding** |  | 4d | 2003-08-26 A | 2003-08-29 A |  | 100% | 2003-04-07 | 2003-04-08 | 2d |  |  |  |  | 32h | 32h |  |  |
| 195 | 1.6.18.3.1 | Event Channel Changes to monitor Recap |  | 2d | 2003-08-26 A | 2003-08-27 A | 192 | 100% | 2003-04-07 | 2003-04-08 | 2d |  |  |  | Crystal | 16h | 16h |  | Crystal |
| 196 | 1.6.18.3.2 | Triggering Logic Changes |  | 2d | 2003-08-28 A | 2003-08-29 A | 195 | 100% |  |  |  |  |  |  | Crystal | 16h | 16h |  |  |
| 197 | 1.6.18.4 | Test Plan |  | 1d | 2003-09-01 A | 2003-09-01 A | 194 | 100% |  |  |  |  |  |  | Crystal | 8h | 8h |  |  |
| 198 | 1.6.18.5 | Code Walkthough | milestone | 0d | 2003-09-01 A | 2003-09-01 A | 197 | 100% |  |  |  |  |  |  | Crystal |  |  |  | Crystal |
| 199 | 1.6.18.6 | Integration Testesting |  | 1d | 2003-09-02 A | 2003-09-02 A | 198 | 100% |  |  |  |  |  |  | Crystal | 8h | 8h |  |  |
| 200 | 1.6.19 | **DPM Quote for Opening - Change to Trading Property** |  | 2.5d | 2003-09-15 A | 2003-09-17 A |  | 100% |  |  |  |  |  |  |  | 20h | 20h |  |  |
| 201 | 1.6.19.1 | Design |  | 0.5d | 2003-09-15 A | 2003-09-15 A | 191 | 100% |  |  |  |  |  |  | Crystal | 4h | 4h |  |  |
| 202 | 1.6.19.2 | Coding |  | 1.5d | 2003-09-16 A | 2003-09-17 A | 201 | 100% |  |  |  |  |  |  | Crystal | 12h | 12h |  |  |
| 203 | 1.6.19.3 | Testing |  | 0.5d | 2003-09-17 A | 2003-09-17 A | 202 | 100% |  |  |  |  |  |  | Crystal | 4h | 4h |  |  |
| 204 | 1.6.20 | **Done Order Entry** |  | 24d | 2003-08-12 A | 2003-09-12 A |  | 100% | 2003-03-19 | 2003-04-10 | 17d |  |  |  |  | 148h | 148h | 6.4.9 |  |
| 205 | 1.6.20.1 | Mei Vacation | milestone | 0d | 2003-08-12 A | 2003-08-12 A |  | 100% |  |  |  |  |  | start no earlier than 2003-08-12 | Mei Wu [50%]; Crystal |  |  |  |  |

Notes:
- 204: 6.4.9 / Needs some requirements flushing out and screen design. CBOEdirect might have something now.

| ID | WBS | Task | Type | Duration | Start | Finish | Predecessors | Complete | Baseline start | Baseline finish | Baseline duration | Total slack | Free slack | Constraint | Resources | Work | Actual work | Text1 | Text2 |
| --- | --- | --- | --- | --- | --- | --- | --- | --- | --- | --- | --- | --- | --- | --- | --- | --- | --- | --- | --- |
| 206 | 1.6.20.2 | **Detail Design** |  | 3d | 2003-08-12 A | 2003-08-14 A |  | 100% | 2003-03-19 | 2003-03-24 | 4d |  |  |  |  | 24h | 24h |  |  |
| 207 | 1.6.20.2.1 | Review Use Case and Requirement |  | 2d | 2003-08-12 A | 2003-08-13 A | 205 | 100% |  |  |  |  |  | start no earlier than 2003-07-21 | Mei Wu | 16h | 16h |  |  |
| 208 | 1.6.20.2.2 | Determine SCRUM tasks for completion |  | 1d | 2003-08-14 A | 2003-08-14 A | 207 | 100% |  |  |  |  |  |  | Mei Wu | 8h | 8h |  |  |
| 209 | 1.6.20.3 | **Modify Server code to accept entered trades for non block** |  | 11d | 2003-08-15 A | 2003-08-29 A |  | 100% |  |  |  |  |  |  |  | 32h | 32h |  |  |
| 210 | 1.6.20.3.1 | Enter settlement date correctly |  | 1d | 2003-08-15 A | 2003-08-15 A | 206 | 100% |  |  |  |  |  |  | Mei Wu [50%] | 4h | 4h |  |  |
| 211 | 1.6.20.3.2 | Add stock clearing codes to constants |  | 1d | 2003-08-18 A | 2003-08-18 A | 210 | 100% |  |  |  |  |  |  | Mei Wu [50%] | 4h | 4h |  |  |
| 212 | 1.6.20.3.3 | Send Message to CurrentMarket EC in a manner readable by CFN Adapter |  | 1d | 2003-08-22 A | 2003-08-22 A |  | 100% |  |  |  |  |  |  | Mei Wu [50%] | 4h | 4h |  |  |
| 213 | 1.6.20.3.4 | Unkown Tasks |  | 5d | 2003-08-25 A | 2003-08-29 A | 212 | 100% |  |  |  |  |  |  | Mei Wu [50%] | 20h | 20h |  |  |
| 214 | 1.6.20.4 | **GUI Changes** |  | 12d | 2003-08-19 A | 2003-09-03 A |  | 100% |  |  |  |  |  |  |  | 36h | 36h |  |  |
| 215 | 1.6.20.4.1 | Create new dropdown's |  | 3d | 2003-08-19 A | 2003-08-21 A | 211 | 100% |  |  |  |  |  |  | Nyoman | 24h | 24h |  |  |
| 216 | 1.6.20.4.2 | Access Calendar Service |  | 2d | 2003-09-01 A | 2003-09-02 A | 209 | 100% |  |  |  |  |  |  | Mei Wu [50%] | 8h | 8h |  |  |
| 217 | 1.6.20.4.3 | Edit Checks |  | 1d | 2003-09-03 A | 2003-09-03 A | 216 | 100% |  |  |  |  |  |  | Mei Wu [50%] | 4h | 4h |  |  |
| 218 | 1.6.20.5 | Testing |  | 7d | 2003-09-04 A | 2003-09-12 A | 209, 214 | 100% |  |  |  |  |  |  | Mei Wu | 56h | 56h |  |  |
| 219 | 1.6.20.6 | Codewalkthrough | milestone | 0d | 2003-09-12 A | 2003-09-12 A | 218 | 100% |  |  |  |  |  |  | Mei Wu |  |  | Nyoman,Crystal |  |
| 220 | 1.6.21 | **Done Order Entry - Recall Trade** |  | 5d | 2003-09-29 | 2003-10-03 |  |  |  |  |  | 16d |  |  |  | 40h |  |  |  |
| 221 | 1.6.21.1 | Design |  | 1d | 2003-09-29 | 2003-09-29 |  |  |  |  |  | 16d | 0d | start no earlier than 2003-09-29 | Mei/Nyoman | 8h |  |  |  |
| 222 | 1.6.21.2 | GUI |  | 2d | 2003-09-30 | 2003-10-01 | 221 |  |  |  |  | 16d | 0d |  | Nyoman | 16h |  |  |  |
| 223 | 1.6.21.3 | Server |  | 2d | 2003-10-02 | 2003-10-03 | 222 |  |  |  |  | 16d |  |  | Mei | 16h |  |  |  |
| 224 | 1.6 | Inbound SIAC Data - Task has been scratched. |  | 111.1d | 2002-12-19 A | 2003-05-23 A |  | 100% |  |  |  |  |  |  |  | 352h | 352h |  |  |
| 225 | 1.6.23 | **Manual Handling( NBBO Agent )** |  | 3d | 2003-05-16 A | 2003-05-21 A |  | 100% | 2003-03-25 | 2003-04-11 | 14d |  |  |  |  | 24h | 24h |  | 5.2.2 |
| 226 | 1.6.23.1 | **Detail Design** |  | 3d | 2003-05-16 A | 2003-05-21 A |  | 100% | 2003-03-25 | 2003-03-31 | 5d |  |  |  |  | 24h | 24h |  |  |
| 227 | 1.6.23.1.1 | Client |  | 2d | 2003-05-16 A | 2003-05-20 A | 224 | 100% | 2003-03-25 | 2003-03-27 | 3d |  |  |  | Crystal | 16h | 16h | Sandip |  |
| 228 | 1.6.23.1.2 | Server |  | 1d | 2003-05-20 A | 2003-05-21 A | 227 | 100% | 2003-03-28 | 2003-03-31 | 2d |  |  |  | Crystal | 8h | 8h | Sandip |  |
| 229 | 1.6.23.1.3 | Design Walkthrough | milestone | 0d | 2003-05-21 A | 2003-05-21 A | 228 | 100% |  |  |  |  |  |  | Crystal |  |  | Sandip |  |

Notes:
- 225: 5.2.2 - DPM Manual Handling for inbound orders / Covers ability to send order to manual and then book to the book to consciensly lock/cross the overall market. / This task has been completed by SBT. We need to simply review.

| ID | WBS | Task | Type | Duration | Start | Finish | Predecessors | Complete | Remaining | Total slack | Free slack | Constraint | Resources | Work | Actual work | Text2 |
| --- | --- | --- | --- | --- | --- | --- | --- | --- | --- | --- | --- | --- | --- | --- | --- | --- |
| 230 | 1.6.24 | **Book Depth** |  | 27d | 2003-06-24 A | 2003-07-30 A |  | 100% |  |  |  |  |  | 216h | 216h | 6.4.7 |
| 231 | 1.6.24.1 | Detail Design |  | 6d | 2003-06-24 A | 2003-07-01 A | 225 | 100% |  |  |  | start no earlier than 2003-06-24 | Sandip | 48h | 48h |  |
| 232 | 1.6.24.2 | Design Review | milestone | 0d | 2003-07-01 A | 2003-07-01 A | 231 | 100% |  |  |  |  | Sandip |  |  |  |
| 233 | 1.6.24.3 | **1st Iteration Coding** |  | 14d | 2003-07-02 A | 2003-07-21 A |  | 100% |  |  |  |  |  | 112h | 112h |  |
| 234 | 1.6.24.3.1 | Server |  | 3d | 2003-07-02 A | 2003-07-04 A | 231 | 100% |  |  |  |  | Sandip | 24h | 24h |  |
| 235 | 1.6.24.3.2 | IDL |  | 1d | 2003-07-07 A | 2003-07-07 A | 234 | 100% |  |  |  |  | Sandip | 8h | 8h |  |
| 236 | 1.6.24.3.3 | Configuration Delay |  | 4d | 2003-07-08 A | 2003-07-11 A | 235 | 100% |  |  |  |  | Sandip | 32h | 32h |  |
| 237 | 1.6.24.3.4 | Rebasing/Merging |  | 1d | 2003-07-14 A | 2003-07-14 A | 236 | 100% |  |  |  |  | Sandip | 8h | 8h |  |
| 238 | 1.6.24.3.5 | Testing |  | 5d | 2003-07-15 A | 2003-07-21 A | 237 | 100% |  |  |  |  | Sandip | 40h | 40h |  |
| 239 | 1.6.24.4 | **2nd Iteration Coding** |  | 2d | 2003-07-22 A | 2003-07-23 A |  | 100% |  |  |  |  |  | 16h | 16h |  |
| 240 | 1.6.24.4.1 | Server |  | 1d | 2003-07-22 A | 2003-07-22 A | 233 | 100% |  |  |  |  | Sandip | 8h | 8h |  |
| 241 | 1.6.24.4.2 | IDL |  | 1d | 2003-07-23 A | 2003-07-23 A | 240 | 100% |  |  |  |  | Sandip | 8h | 8h |  |
| 242 | 1.6.24.5 | Testing |  | 2d | 2003-07-24 A | 2003-07-25 A | 241 | 100% |  |  |  |  | Sandip | 16h | 16h |  |
| 243 | 1.6.24.6 | Code Walkthrough | milestone | 0d | 2003-07-25 A | 2003-07-25 A | 242 | 100% |  |  |  |  | Sandip |  |  |  |
| 244 | 1.6.24.7 | Label and merge to SBT_DEV |  | 1d | 2003-07-28 A | 2003-07-28 A | 243 | 100% |  |  |  |  | Sandip | 8h | 8h |  |
| 245 | 1.6.24.8 | Minor changes to IDL and structs for Simulator |  | 2d | 2003-07-29 A | 2003-07-30 A | 244 | 100% |  |  |  |  | Sandip | 16h | 16h |  |
| 246 | 1.6.25 | **Market Open - CBOE-is-Not-Primary** |  | 45d | 2003-07-31 A | 2003-10-01 |  | 82% | 8d | 10d | 0d |  |  | 360h | 296h |  |
| 247 | 1.6.25.1 | **Detailed Design** |  | 11d | 2003-07-31 A | 2003-08-14 A |  | 100% |  |  |  |  |  | 88h | 88h |  |
| 248 | 1.6.25.1.1 | Existing Code Walk-through and creating Seq Diagram |  | 3d | 2003-07-31 A | 2003-08-04 A | 230 | 100% |  |  |  |  | Sandip | 24h | 24h |  |
| 249 | 1.6.25.1.2 | Changes for Equity Code & Seq Diagram |  | 2d | 2003-08-05 A | 2003-08-06 A | 248 | 100% |  |  |  |  | Sandp | 16h | 16h |  |
| 250 | 1.6.25.1.3 | Existing Tests walk-through [Code & Env] |  | 3d | 2003-08-07 A | 2003-08-11 A | 249 | 100% |  |  |  |  | Sandip | 24h | 24h |  |
| 251 | 1.6.25.1.4 | Creating new test-cases document |  | 1d | 2003-08-12 A | 2003-08-12 A | 250 | 100% |  |  |  |  | Sandip | 8h | 8h |  |
| 252 | 1.6.25.1.5 | Creating new test-case scripts |  | 2d | 2003-08-13 A | 2003-08-14 A | 251 | 100% |  |  |  |  | Sandip | 16h | 16h |  |
| 253 | 1.6.25.2 | Rebasing to new Stock Dev Updates |  | 1d | 2003-08-15 A | 2003-08-15 A | 252 | 100% |  |  |  |  | Sandip | 8h | 8h |  |
| 254 | 1.6.25.3 | Multiple implementations |  | 15d | 2003-08-18 A | 2003-09-05 A | 253 | 100% |  |  |  |  | Sandip | 120h | 120h |  |
| 255 | 1.6.25.4 | Lock/Unlock Order Book |  | 3d | 2003-09-08 A | 2003-09-10 A | 254 | 100% |  |  |  |  | Sandip | 24h | 24h |  |
| 256 | 1.6.25.5 | Order from DPM when booked is "locked" |  | 2d | 2003-09-11 A | 2003-09-12 A | 255 | 100% |  |  |  |  | Sandip | 16h | 16h |  |
| 257 | 1.6.25.6 | Reroute of non DPM orders to and from when book is "locked" |  | 2d | 2003-09-15 A | 2003-09-16 A | 256 | 100% |  |  |  |  | Sandip | 16h | 16h |  |
| 258 | 1.6.25.7 | Handle Market orders when order book is locked. |  | 1d | 2003-09-17 A | 2003-09-17 A | 257 | 100% |  |  |  |  | Sandip | 8h | 8h |  |
| 259 | 1.6.25.8 | Execute held orders when OB is unlocked |  | 1d | 2003-09-18 A | 2003-09-18 A | 258 | 100% |  |  |  |  | Sandip | 8h | 8h |  |
| 260 | 1.6.25.9 | Execute held order on open with open price |  | 1d | 2003-09-19 A | 2003-09-19 A | 259 | 100% |  |  |  |  | Sandip | 8h | 8h |  |
| 261 | 1.6.25.10 | Cancel Mkt Quotes |  | 1d | 2003-09-22 | 2003-09-22 | 260 |  |  | 10d | 0d |  | Sandip | 8h |  |  |
| 262 | 1.6.25.11 | Handle crosses when OB is locked ( reject ) |  | 1d | 2003-09-23 | 2003-09-23 | 261 |  |  | 10d | 0d |  | Sandip | 8h |  |  |
| 263 | 1.6.25.12 | Handle Stop/Stop Limit |  | 1d | 2003-09-24 | 2003-09-24 | 262 |  |  | 10d | 0d |  | Sandip | 8h |  |  |
| 264 | 1.6.25.13 | Handle Timed Orders( should be rejected ) |  | 1d | 2003-09-25 | 2003-09-25 | 263 |  |  | 10d | 0d |  | Sandip | 8h |  |  |
| 265 | 1.6.25.14 | Execute held orders when Product is opened. |  | 2d | 2003-09-26 | 2003-09-29 | 264 |  |  | 10d | 0d |  | Sandip | 16h |  |  |
| 266 | 1.6.25.15 | Test order matching. |  | 2d | 2003-09-30 | 2003-10-01 | 265 |  |  | 10d |  |  | Sandip | 16h |  |  |

Notes:
- 230: 6.4.7 Book depth / Modification needed as part of the market opening. Book Depth needs to return all orders, not just the aggregate

| ID | WBS | Task | Type | Duration | Start | Finish | Predecessors | Complete | Remaining | Baseline start | Baseline finish | Baseline duration | Total slack | Free slack | Resources | Work | Actual work | Text2 | Text1 |
| --- | --- | --- | --- | --- | --- | --- | --- | --- | --- | --- | --- | --- | --- | --- | --- | --- | --- | --- | --- |
| 267 | 1.6.26 | **Market Open - CBOE-is-Primary** |  | 8d | 2003-09-18 A | 2003-09-29 |  | 38% | 5d |  |  |  | 20d |  |  | 44h | 24h |  |  |
| 268 | 1.6.26.1 | Detailed Design |  | 5d | 2003-09-18 | 2003-09-24 | 200 |  |  |  |  |  | 23d |  | Mei Wu [50%] | 20h |  |  |  |
| 269 | 1.6.26.2 | Modify Trading Properties for DPM quote required to be configured by class |  | 3d | 2003-09-25 A | 2003-09-29 A | 268 | 100% |  |  |  |  |  |  | Crystal | 24h | 24h |  |  |
| 270 | 1.6.27 | **At the Open Contingency** |  | 8d | 2003-10-02 | 2003-10-13 |  |  |  |  |  |  | 10d |  |  | 76h |  | 6.3.2, 6.6.7 |  |
| 271 | 1.6.27.1 | Detail Design |  | 2d | 2003-10-02 | 2003-10-03 | 246 |  |  |  |  |  | 10d | 0d | Sandip | 16h |  |  |  |
| 272 | 1.6.27.2 | IDL Changes and Server compatability changes |  | 5d | 2003-10-06 | 2003-10-10 | 271 |  |  |  |  |  | 10d | 0d | Mei Wu [50%] | 20h |  |  |  |
| 273 | 1.6.27.3 | Open matching related and cancel of OPG coding |  | 3d | 2003-10-06 | 2003-10-08 | 271 |  |  |  |  |  | 12d | 2d | Sandip | 24h |  |  |  |
| 274 | 1.6.27.4 | Testing |  | 1d | 2003-10-13 | 2003-10-13 | 273, 272 |  |  |  |  |  | 10d |  | Sandip; Mei | 16h |  |  |  |
| 275 | 1.6.28 | **Order Book Priority** |  | 0d | 2003-06-25 A | 2003-06-25 A |  | 100% |  | 2003-05-12 | 2003-05-15 | 4d |  |  |  |  |  | 6.3.6 |  |
| 276 | 1.6.28.1 | Design | milestone | 0d | 2003-06-25 A | 2003-06-25 A | 89 | 100% |  | 2003-05-12 | 2003-05-15 | 4d |  |  | Matt |  |  |  | Matt |
| 277 | 1.6.28.2 | Design Walkthrough | milestone | 0d | 2003-06-25 A | 2003-06-25 A | 276 | 100% |  |  |  |  |  |  | Matt |  |  |  | Matt |
| 278 | 1.6.29 | **Trade History/Settlement Changes** |  | 15d | 2003-07-11 A | 2003-07-31 A |  | 100% |  | 2003-04-22 | 2003-04-28 | 5d |  |  |  | 120h | 120h | 6.6.15.2, 6.6.15.3 |  |
| 279 | 1.6.29.1 | Detail Design |  | 2d | 2003-07-11 A | 2003-07-14 A | 275, 91 | 100% |  | 2003-04-22 | 2003-04-23 | 2d |  |  | Matt | 16h | 16h |  | Matt |
| 280 | 1.6.29.2 | Database cleanup design |  | 3d | 2003-07-15 A | 2003-07-17 A | 279 | 100% |  |  |  |  |  |  | Matt | 24h | 24h |  |  |
| 281 | 1.6.29.3 | Design Walkthrough |  | 2d | 2003-07-18 A | 2003-07-21 A | 280 | 100% |  |  |  |  |  |  | Matt | 16h | 16h |  |  |
| 282 | 1.6.29.4 | **1st Iteration Coding** |  | 5d | 2003-07-22 A | 2003-07-28 A |  | 100% |  | 2003-04-24 | 2003-04-28 | 3d |  |  |  | 40h | 40h |  |  |
| 283 | 1.6.29.4.1 | Database Script changes |  | 5d | 2003-07-22 A | 2003-07-28 A | 281 | 100% |  |  |  |  |  |  | Matt | 40h | 40h |  |  |
| 284 | 1.6.29.5 | Testing |  | 3d | 2003-07-29 A | 2003-07-31 A | 282 | 100% |  |  |  |  |  |  | Matt | 24h | 24h |  |  |
| 285 | 1.6.29.6 | Code Walkthrough | milestone | 0d | 2003-07-31 A | 2003-07-31 A | 284 | 100% |  |  |  |  |  |  | Matt |  |  |  | Matt |
| 286 | 1.6.30 | **IPP Modifications for ETF** |  | 9d | 2003-08-01 A | 2003-08-13 A |  | 100% |  |  |  |  |  |  |  | 72h | 72h |  |  |
| 287 | 1.6.30.1 | Detailed Design |  | 2d | 2003-08-01 A | 2003-08-04 A | 278 | 100% |  |  |  |  |  |  | Matt | 16h | 16h |  |  |
| 288 | 1.6.30.2 | **Coding** |  | 5d | 2003-08-05 A | 2003-08-11 A |  | 100% |  |  |  |  |  |  |  | 40h | 40h |  |  |
| 289 | 1.6.30.2.1 | Read ETF properties to determine if a configurable addition/substraction to NBBO Agent |  | 2d | 2003-08-05 A | 2003-08-06 A | 287 | 100% |  |  |  |  |  |  | Matt | 16h | 16h |  |  |
| 290 | 1.6.30.2.2 | Apply the modification to the IPP price protection |  | 1d | 2003-08-07 A | 2003-08-07 A | 289 | 100% |  |  |  |  |  |  | Matt | 8h | 8h |  |  |
| 291 | 1.6.30.2.3 | Perform Trade |  | 2d | 2003-08-08 A | 2003-08-11 A | 290 | 100% |  |  |  |  |  |  | Matt | 16h | 16h |  |  |
| 292 | 1.6.30.3 | Testing |  | 2d | 2003-08-12 A | 2003-08-13 A | 288 | 100% |  |  |  |  |  |  | Matt | 16h | 16h |  |  |

Notes:
- 270: 6.3.2 Order Attributes - At the Open contigency
- 275: 6.3.6 - Order Book Priority / Completed as part of Allocations.
- 278: This task might be rolled into the Trade Bust task.

| ID | WBS | Task | Type | Duration | Start | Finish | Predecessors | Complete | Remaining | Baseline start | Baseline finish | Baseline duration | Total slack | Free slack | Constraint | Resources | Work | Actual work | Text1 | Text2 |
| --- | --- | --- | --- | --- | --- | --- | --- | --- | --- | --- | --- | --- | --- | --- | --- | --- | --- | --- | --- | --- |
| 293 | 1.6.31 | **Trade Through Monitoring Service** |  | 25d | 2003-08-14 A | 2003-09-17 |  | 33% | 16.67d | 2003-02-28 | 2003-03-24 | 17d | 23.4d | 9d |  |  | 48h | 16h |  |  |
| 294 | 1.6.31.1 | **Detail Design** |  | 2d | 2003-08-14 A | 2003-08-15 A |  | 100% |  | 2003-02-28 | 2003-03-06 | 5d |  |  |  |  | 16h | 16h |  |  |
| 295 | 1.6.31.1.1 | Server |  | 2d | 2003-08-14 A | 2003-08-15 A | 286 | 100% |  | 2003-02-28 | 2003-03-06 | 5d |  |  |  | Matt | 16h | 16h | Matt |  |
| 296 | 1.6.31.1.2 | Design Walkthrough | milestone | 0d | 2003-08-15 A | 2003-08-15 A | 295 | 100% |  |  |  |  |  |  |  | Matt |  |  | Matt |  |
| 297 | 1.6.31.2 | **1st Iteration Coding** |  | 3d | 2003-09-12 | 2003-09-16 |  |  |  | 2003-03-07 | 2003-03-13 | 5d | 23.4d | 0d |  |  | 24h |  |  |  |
| 298 | 1.6.31.2.1 | Server |  | 3d | 2003-09-12 | 2003-09-16 | 296, 186, 188 |  |  | 2003-03-07 | 2003-03-13 | 5d | 23.4d | 0d |  | Matt | 24h |  | Matt |  |
| 299 | 1.6.31.3 | Testing |  | 1d | 2003-09-17 | 2003-09-17 | 298 |  |  |  |  |  | 23.4d |  |  | Matt | 8h |  |  |  |
| 300 | 1.6.31.4 | Code Walkthrough | milestone | 0d | 2003-09-16 | 2003-09-16 | 297 |  |  |  |  |  | 24.4d |  |  | Matt |  |  | Matt |  |
| 301 | 1.6.32 | **IPP/NBBO testing** |  | 5d | 2003-09-18 | 2003-09-24 |  |  |  |  |  |  | 18d | 0d |  |  | 40h |  |  |  |
| 302 | 1.6.32.1 | Environment setup |  | 3d | 2003-09-18 | 2003-09-22 |  |  |  |  |  |  | 18d | 0d | start no earlier than 2003-09-18 | Crystal | 24h |  |  |  |
| 303 | 1.6.32.2 | Testing |  | 2d | 2003-09-23 | 2003-09-24 | 302 |  |  |  |  |  | 18d |  |  | Crystal | 16h |  |  |  |
| 304 | 1.6.33 | **Dividend and Corporate Maint Testing** |  | 5d | 2003-09-25 | 2003-10-01 |  |  |  |  |  |  | 18d |  |  |  | 40h |  |  |  |
| 305 | 1.6.33.1 | Create test cases |  | 2d | 2003-09-25 | 2003-09-26 | 301 |  |  |  |  |  | 18d | 0d |  | Eva | 16h |  |  |  |
| 306 | 1.6.33.2 | Testing |  | 3d | 2003-09-29 | 2003-10-01 | 305 |  |  |  |  |  | 18d |  |  | Crystal | 24h |  |  |  |
| 308 | 1.7 | **Supporting Services** |  | 227d | 2002-11-25 A | 2003-10-09 |  | 17% | 188.09d |  |  |  | 12d |  |  |  | 112h | 19.2h |  |  |
| 309 | 1.7.1 | **Equity Maintanance - CUSIP** |  | 4d | 2002-11-25 | 2002-11-28 |  |  |  | 2003-04-29 | 2003-05-12 | 10d | 235d |  |  |  | 32h |  |  | 6.7.1,6.7 |
| 310 | 1.7.1.1 | Design Walkthrough | milestone | 0d | 2002-11-25 | 2002-11-25 |  |  |  |  |  |  | 235d | 0d |  | Matt |  |  |  |  |
| 311 | 1.7.1.2 | **Iteration 1** |  | 4d | 2002-11-25 | 2002-11-28 |  |  |  |  |  |  | 235d |  |  |  | 32h |  |  |  |
| 312 | 1.7.1.2.1 | Client |  | 1d | 2002-11-25 | 2002-11-25 | 310 |  |  |  |  |  | 235d | 0d |  | Mei Wu | 8h |  |  |  |
| 313 | 1.7.1.2.2 | IDL Change |  | 2d | 2002-11-26 | 2002-11-27 | 312 |  |  |  |  |  | 235d | 0d |  | Mei Wu | 16h |  |  |  |
| 314 | 1.7.1.2.3 | Server |  | 1d | 2002-11-28 | 2002-11-28 | 313 |  |  |  |  |  | 235d |  |  | Mei Wu | 8h |  |  |  |
| 315 | 1.7.2 | **NSCC Clearing File Creation** |  | 7d | 2003-10-01 A | 2003-10-09 |  | 30% | 4.9d |  |  |  | 12d |  |  |  | 64h | 19.2h |  | 4.1.1 |
| 316 | 1.7.2.1 | File creation |  | 3d | 2003-10-01 A | 2003-10-03 | 293 | 80% | 0.6d |  |  |  | 12d | 0d | start no earlier than 2003-10-01 | Matt | 24h | 19.2h | Sandip |  |
| 317 | 1.7.2.2 | FTP Process |  | 2d | 2003-10-06 | 2003-10-07 | 316 |  |  |  |  |  | 12d | 0d |  | Matt | 16h |  | Sandip |  |
| 318 | 1.7.2.3 | Intranet Development |  | 1d | 2003-10-08 | 2003-10-08 | 317 |  |  |  |  |  | 13d |  |  | Matt | 8h |  | Sandip |  |
| 319 | 1.7.2.4 | Viewable report |  | 2d | 2003-10-08 | 2003-10-09 | 317 |  |  |  |  |  | 12d |  |  | Matt | 16h |  | Sandip |  |

Notes:
- 297: Dependent upon linkage merge to stock.
- 309: Includes adding new issues - CUSIP, etc.
- 315: 4.1.1 - Clearing - NSCC File Creation / This is a development idea of using J2EE to create a report for NSCC clearing information for regulatory. The time for this can vary. No one has been assigned currently until the idea is flushed out.

| ID | WBS | Task | Type | Duration | Start | Finish | Predecessors | Total slack | Free slack | Constraint | Resources | Work | Text2 | Text1 |
| --- | --- | --- | --- | --- | --- | --- | --- | --- | --- | --- | --- | --- | --- | --- |
| 320 | 1.7.3 | **ISG End of Day File** |  | 2d | 2003-07-01 | 2003-07-02 |  | 83d |  |  |  | 16h | 4.1.1 |  |
| 321 | 1.7.3.1 | File creation |  | 1d | 2003-07-01 | 2003-07-01 |  | 83d | 0d | start no earlier than 2003-07-01 | Stella | 8h |  | Stella |
| 322 | 1.7.3.2 | FTP Process |  | 1d | 2003-07-02 | 2003-07-02 | 321 | 83d |  |  | Stella | 8h |  | Stella |
| 324 | 1.8 | **Linkage Service** |  | 23d | 2002-11-25 | 2002-12-26 |  | 216d |  |  |  |  |  |  |
| 325 | 1.8.1 | Design/Review of Linkage Service |  | 5d | 2002-11-25 | 2002-11-29 |  | 216d | 0d |  |  |  |  |  |
| 326 | 1.8.2 | **CMI Changes for ITS** |  | 4d | 2002-12-02 | 2002-12-05 |  | 216d | 0d |  |  |  |  |  |
| 327 | 1.8.2.1 | Outbound PoI |  | 2d | 2002-12-02 | 2002-12-03 | 325 | 216d | 0d |  |  |  |  |  |
| 328 | 1.8.2.2 | Outbound PoR |  | 2d | 2002-12-04 | 2002-12-05 | 327 | 216d |  |  |  |  |  |  |
| 329 | 1.8.3 | Design Walktrhough | milestone | 0d | 2002-12-05 | 2002-12-05 | 326 | 216d | 0d |  |  |  |  |  |
| 330 | 1.8.4 | **Inbound Committement Processing** |  | 7d | 2002-12-06 | 2002-12-16 |  | 216d | 0d |  |  |  |  |  |
| 331 | 1.8.4.1 | Design |  | 2d | 2002-12-06 | 2002-12-09 | 329 | 216d | 0d |  |  |  |  |  |
| 332 | 1.8.4.2 | Coding |  | 5d | 2002-12-10 | 2002-12-16 | 331 | 216d |  |  |  |  |  |  |
| 333 | 1.8.5 | **Outbound ITS Commitment** |  | 7d | 2002-12-17 | 2002-12-26 |  | 216d |  |  |  |  |  |  |
| 334 | 1.8.5.1 | CMI Message Coding |  | 2d | 2002-12-17 | 2002-12-18 | 330 | 216d | 0d |  |  |  |  |  |
| 335 | 1.8.5.2 | Integration to ITS Adapter |  | 5d | 2002-12-19 | 2002-12-26 | 334 | 216d |  |  |  |  |  |  |
| 336 | 1.8.6 | **Inbound ITS Fill Report** |  | 3d | 2002-11-25 | 2002-11-27 |  | 236d |  |  |  |  |  |  |
| 337 | 1.8.6.1 | ITS Integration |  | 2d | 2002-11-25 | 2002-11-26 |  | 237d |  |  |  |  |  |  |
| 338 | 1.8.6.2 | Trade Server Integration |  | 3d | 2002-11-25 | 2002-11-27 |  | 236d |  |  |  |  |  |  |
| 339 | 1.8.7 | **Outbound POI Message** |  | 3d | 2002-11-25 | 2002-11-27 |  | 236d |  |  |  |  |  |  |
| 340 | 1.8.7.1 | CMI Testing |  | 2d | 2002-11-25 | 2002-11-26 |  | 237d |  |  |  |  |  |  |
| 341 | 1.8.7.2 | Integration to ITS Adapater |  | 3d | 2002-11-25 | 2002-11-27 |  | 236d |  |  |  |  |  |  |
| 342 | 1.8.8 | **Outbound POR Message** |  | 2d | 2002-11-25 | 2002-11-26 |  | 237d |  |  |  |  |  |  |
| 343 | 1.8.8.1 | CMI Testing |  | 2d | 2002-11-25 | 2002-11-26 |  | 237d |  |  |  |  |  |  |
| 344 | 1.8.8.2 | Integration to ITS Adapter |  | 2d | 2002-11-25 | 2002-11-26 |  | 237d |  |  |  |  |  |  |

Notes:
- 320: 4.1.1 - Clearing ( ISG File Format )

| ID | WBS | Task | Duration | Start | Finish | Predecessors | Complete | Remaining | Baseline start | Baseline finish | Baseline duration | Total slack | Constraint | Resources | Work | Actual work | Text2 | Text1 |
| --- | --- | --- | --- | --- | --- | --- | --- | --- | --- | --- | --- | --- | --- | --- | --- | --- | --- | --- |
| 345 | 1.8.9 | **Outbound Complaint Message** | 2d | 2002-11-25 | 2002-11-26 |  |  |  |  |  |  | 237d |  |  |  |  |  |  |
| 346 | 1.8.9.1 | CMI Testing | 2d | 2002-11-25 | 2002-11-26 |  |  |  |  |  |  | 237d |  |  |  |  |  |  |
| 347 | 1.8.9.2 | Integration to ITS Adapter | 2d | 2002-11-25 | 2002-11-26 |  |  |  |  |  |  | 237d |  |  |  |  |  |  |
| 348 | 1.8.10 | **Inbound ITS Complaint** | 2d | 2002-11-25 | 2002-11-26 |  |  |  |  |  |  | 237d |  |  |  |  |  |  |
| 349 | 1.8.10.1 | CMI Testing | 2d | 2002-11-25 | 2002-11-26 |  |  |  |  |  |  | 237d |  |  |  |  |  |  |
| 350 | 1.8.10.2 | Integration to ITS Adapter | 2d | 2002-11-25 | 2002-11-26 |  |  |  |  |  |  | 237d |  |  |  |  |  |  |
| 351 | 1.8.11 | **Inbound POI Message** | 2d | 2002-11-25 | 2002-11-26 |  |  |  |  |  |  | 237d |  |  |  |  |  |  |
| 352 | 1.8.11.1 | CMI Testing | 2d | 2002-11-25 | 2002-11-26 |  |  |  |  |  |  | 237d |  |  |  |  |  |  |
| 353 | 1.8.11.2 | Integration to ITS Adapater | 2d | 2002-11-25 | 2002-11-26 |  |  |  |  |  |  | 237d |  |  |  |  |  |  |
| 354 | 1.8.12 | **Inbound POR Message** | 2d | 2002-11-25 | 2002-11-26 |  |  |  |  |  |  | 237d |  |  |  |  |  |  |
| 355 | 1.8.12.1 | CMI Testing | 2d | 2002-11-25 | 2002-11-26 |  |  |  |  |  |  | 237d |  |  |  |  |  |  |
| 356 | 1.8.12.2 | Integration to ITS Adapter | 2d | 2002-11-25 | 2002-11-26 |  |  |  |  |  |  | 237d |  |  |  |  |  |  |
| 357 | 1.8.13 | **Creation of New Order in book** | 4d | 2002-11-25 | 2002-11-28 |  |  |  |  |  |  | 235d |  |  |  |  |  |  |
| 358 | 1.8.13.1 | CMI Changes | 3d | 2002-11-25 | 2002-11-27 |  |  |  |  |  |  | 236d |  |  |  |  |  |  |
| 359 | 1.8.13.2 | GUI Changes | 2d | 2002-11-25 | 2002-11-26 |  |  |  |  |  |  | 237d |  |  |  |  |  |  |
| 360 | 1.8.13.3 | Execution Report back to requester | 4d | 2002-11-25 | 2002-11-28 |  |  |  |  |  |  | 235d |  |  |  |  |  |  |
| 362 | 1.9 | **Trading Operation Support** | 10d | 2003-05-26 | 2003-06-06 |  |  |  | 2003-05-26 | 2003-05-27 | 2d | 101d |  |  | 80h |  | 6.6.15.5 |  |
| 363 | 1.9.1 | Readable HTML Format of NSCC File | 10d | 2003-05-26 | 2003-06-06 |  |  |  | 2003-05-26 | 2003-05-27 | 2d | 101d | start no earlier than 2003-05-26 | Unknown | 80h |  |  | Eva |
| 364 | 1.10 | **Workstation/Testing GUI** | 223d? | 2002-11-25 A | 2003-10-03 |  | 89% | 23.85d? |  |  |  | 16d |  |  | 1368h | 1208h |  |  |
| 365 | 1.10.1 | Review of SBT GUI and Architecture | 10d | 2003-03-03 | 2003-03-14 |  |  |  |  |  |  | 161d | start no earlier than 2003-03-03 | Nyoman | 80h |  |  |  |
| 366 | 1.10.2 | **Screen Design and Layouts** | 19d | 2003-03-17 A | 2003-04-10 A |  | 100% |  |  |  |  |  |  |  | 152h | 152h |  |  |
| 367 | 1.10.2.1 | Login | 1d | 2003-03-17 A | 2003-03-17 A | 365 | 100% |  |  |  |  |  |  | Nyoman | 8h | 8h |  |  |
| 368 | 1.10.2.2 | Logout | 1d | 2003-03-18 A | 2003-03-18 A | 367 | 100% |  |  |  |  |  |  | Nyoman | 8h | 8h |  |  |
| 369 | 1.10.2.3 | Main Market Data Screen | 1d | 2003-03-19 A | 2003-03-19 A | 368 | 100% |  |  |  |  |  |  | Nyoman | 8h | 8h |  |  |
| 370 | 1.10.2.4 | Update/Send Quote | 1d | 2003-03-20 A | 2003-03-20 A | 369 | 100% |  |  |  |  |  |  | Nyoman | 8h | 8h |  |  |
| 371 | 1.10.2.5 | Cancel Quote | 1d | 2003-03-21 A | 2003-03-21 A | 370 | 100% |  |  |  |  |  |  | Nyoman | 8h | 8h |  |  |
| 372 | 1.10.2.6 | Send Text Message | 1d | 2003-03-24 A | 2003-03-24 A | 371 | 100% |  |  |  |  |  |  | Nyoman | 8h | 8h |  |  |
| 373 | 1.10.2.7 | Respond to RFQ | 1d | 2003-03-25 A | 2003-03-25 A | 372 | 100% |  |  |  |  |  |  | Nyoman | 8h | 8h |  |  |
| 374 | 1.10.2.8 | Enter a new order | 1d | 2003-03-26 A | 2003-03-26 A | 373 | 100% |  |  |  |  |  |  | Nyoman | 8h | 8h |  |  |
| 375 | 1.10.2.9 | ITS Takeout | 1d | 2003-03-27 A | 2003-03-27 A | 374 | 100% |  |  |  |  |  |  | Nyoman | 8h | 8h |  |  |
| 376 | 1.10.2.10 | Hit the bid/Take the Offer | 1d | 2003-03-28 A | 2003-03-28 A | 375 | 100% |  |  |  |  |  |  | Nyoman | 8h | 8h |  |  |
| 377 | 1.10.2.11 | Cancel/Replace Order | 1d | 2003-03-31 A | 2003-03-31 A | 376 | 100% |  |  |  |  |  |  | Nyoman | 8h | 8h |  |  |
| 378 | 1.10.2.12 | Cancel Order | 1d | 2003-04-01 A | 2003-04-01 A | 377 | 100% |  |  |  |  |  |  | Nyoman | 8h | 8h |  |  |
| 379 | 1.10.2.13 | See Order History | 1d | 2003-04-02 A | 2003-04-02 A | 378 | 100% |  |  |  |  |  |  | Nyoman | 8h | 8h |  |  |
| 380 | 1.10.2.14 | Edit Trading Preferences | 1d | 2003-04-03 A | 2003-04-03 A | 379 | 100% |  |  |  |  |  |  | Nyoman | 8h | 8h |  |  |
| 381 | 1.10.2.15 | See Trade History | 1d | 2003-04-04 A | 2003-04-04 A | 380 | 100% |  |  |  |  |  |  | Nyoman | 8h | 8h |  |  |
| 382 | 1.10.2.16 | Edit User Prefernces | 1d | 2003-04-07 A | 2003-04-07 A | 381 | 100% |  |  |  |  |  |  | Nyoman | 8h | 8h |  |  |
| 383 | 1.10.2.17 | View Order Book | 1d | 2003-04-08 A | 2003-04-08 A | 382 | 100% |  |  |  |  |  |  | Nyoman | 8h | 8h |  |  |
| 384 | 1.10.2.18 | Pre-Opening Screen | 1d | 2003-04-09 A | 2003-04-09 A | 383 | 100% |  |  |  |  |  |  | Nyoman | 8h | 8h |  |  |
| 385 | 1.10.2.19 | Manual Handling Screen | 1d | 2003-04-10 A | 2003-04-10 A | 384 | 100% |  |  |  |  |  |  | Nyoman | 8h | 8h |  |  |
| 386 | 1.10.3 | Screen Review | 1d | 2003-04-11 A | 2003-04-11 A | 366 | 100% |  |  |  |  |  |  | All | 8h | 8h |  |  |

Notes:
- 364: Integration with Trade is assumed where needed. Most of the GUI can be tested by running the current SBT trade engine. There are some dependencies on stock tasks however...

| ID | WBS | Task | Type | Duration | Start | Finish | Predecessors | Complete | Remaining | Total slack | Constraint | Resources | Work | Actual work |
| --- | --- | --- | --- | --- | --- | --- | --- | --- | --- | --- | --- | --- | --- | --- |
| 387 | 1.10.4 | **Screen Construction** |  | 223d? | 2002-11-25 A | 2003-10-03 |  | 94% | 14.2d? | 16d |  |  | 1128h | 1048h |
| 388 | 1.10.4.1 | **Login/Logout Screen** |  | 3d | 2003-04-14 A | 2003-04-16 A |  | 100% |  |  |  |  | 24h | 24h |
| 389 | 1.10.4.1.1 | Design |  | 1d | 2003-04-14 A | 2003-04-14 A | 386 | 100% |  |  |  | Nyoman | 8h | 8h |
| 390 | 1.10.4.1.2 | Coding |  | 2d | 2003-04-15 A | 2003-04-16 A | 389 | 100% |  |  |  | Nyoman | 16h | 16h |
| 391 | 1.10.4.2 | **Main Market Data Screen** |  | 59d | 2003-04-17 A | 2003-07-08 A |  | 100% |  |  |  |  | 224h | 224h |
| 392 | 1.10.4.2.1 | Design |  | 5d | 2003-04-17 A | 2003-04-23 A | 388 | 100% |  |  |  | Nyoman | 40h | 40h |
| 393 | 1.10.4.2.2 | Walkthrough | milestone | 0d | 2003-04-23 A | 2003-04-23 A | 392 | 100% |  |  |  | Nyoman |  |  |
| 394 | 1.10.4.2.3 | **Iteration 1** |  | 4d | 2003-04-24 A | 2003-04-29 A |  | 100% |  |  |  |  | 32h | 32h |
| 395 | 1.10.4.2.3.1 | Coding |  | 4d | 2003-04-24 A | 2003-04-29 A | 393 | 100% |  |  |  | Nyoman | 32h | 32h |
| 396 | 1.10.4.2.4 | Design |  | 2d | 2003-04-30 A | 2003-05-01 A | 395 | 100% |  |  |  | Nyoman | 16h | 16h |
| 397 | 1.10.4.2.5 | **Iteration 2** |  | 5d | 2003-04-30 A | 2003-05-06 A |  | 100% |  |  |  |  | 40h | 40h |
| 398 | 1.10.4.2.5.1 | Coding |  | 5d | 2003-04-30 A | 2003-05-06 A | 394 | 100% |  |  |  | Nyoman | 40h | 40h |
| 399 | 1.10.4.2.6 | Code Walkthrough | milestone | 0d | 2003-05-06 A | 2003-05-06 A | 397 | 100% |  |  |  | Nyoman |  |  |
| 400 | 1.10.4.2.7 | **Iteration 3** |  | 10d | 2003-06-19 A | 2003-07-02 A |  | 100% |  |  |  |  | 64h | 64h |
| 401 | 1.10.4.2.7.1 | Market Data Info Panel |  | 4d | 2003-06-19 A | 2003-06-24 A | 397 | 100% |  |  | start no earlier than 2003-06-19 | Nyoman | 32h | 32h |
| 402 | 1.10.4.2.7.2 | Market Data Model |  | 1d | 2003-06-25 A | 2003-06-25 A | 401 | 100% |  |  |  | Nyoman | 8h | 8h |
| 403 | 1.10.4.2.7.3 | Refactoring of MD Info |  | 3d | 2003-06-30 A | 2003-07-02 A | 402FS+2d | 100% |  |  |  | Nyoman | 24h | 24h |
| 404 | 1.10.4.2.8 | Testing |  | 4d | 2003-07-03 A | 2003-07-08 A | 403 | 100% |  |  |  | Nyoman | 32h | 32h |
| 405 | 1.10.4.3 | **Update/Send Quote** |  | 5d | 2003-05-07 A | 2003-05-13 A |  | 100% |  |  |  |  | 40h | 40h |
| 406 | 1.10.4.3.1 | Design |  | 2d | 2003-05-07 A | 2003-05-08 A | 391 | 100% |  |  |  | Nyoman | 16h | 16h |
| 407 | 1.10.4.3.2 | Walkthough | milestone | 0d | 2003-05-08 A | 2003-05-08 A | 406 | 100% |  |  |  | Nyoman |  |  |
| 408 | 1.10.4.3.3 | Coding |  | 3d | 2003-05-09 A | 2003-05-13 A | 407 | 100% |  |  |  | Nyoman | 24h | 24h |
| 409 | 1.10.4.4 | **Cancel Quote** |  | 4d | 2003-05-14 A | 2003-05-19 A |  | 100% |  |  |  | Nyoman | 64h | 64h |
| 410 | 1.10.4.4.1 | Design |  | 1d | 2003-05-14 A | 2003-05-14 A | 405 | 100% |  |  |  | Nyoman | 8h | 8h |
| 411 | 1.10.4.4.2 | Coding |  | 3d | 2003-05-15 A | 2003-05-19 A | 410 | 100% |  |  |  | Nyoman | 24h | 24h |

| ID | WBS | Task | Type | Duration | Start | Finish | Predecessors | Complete | Resources | Work | Actual work |
| --- | --- | --- | --- | --- | --- | --- | --- | --- | --- | --- | --- |
| 412 | 1.10.4.5 | **Respond to RFQ** |  | 7d | 2002-11-25 A | 2002-12-03 A |  | 100% |  | 56h | 56h |
| 413 | 1.10.4.5.1 | Design |  | 2d | 2002-11-25 A | 2002-11-26 A |  | 100% | Nyoman | 16h | 16h |
| 414 | 1.10.4.5.2 | Coding |  | 5d | 2002-11-27 A | 2002-12-03 A | 413 | 100% | Nyoman | 40h | 40h |
| 415 | 1.10.4.6 | **Enter a new Order** |  | 29.1d | 2003-06-05 A | 2003-07-16 A |  | 100% |  | 104h | 104h |
| 416 | 1.10.4.6.1 | Deisgn |  | 2d | 2003-06-05 A | 2003-06-06 A | 405 | 100% | Nyoman | 16h | 16h |
| 417 | 1.10.4.6.2 | **Iteration 1** |  | 5d | 2003-06-09 A | 2003-06-13 A | 416 | 100% |  | 40h | 40h |
| 418 | 1.10.4.6.2.1 | Coding |  | 5d | 2003-06-09 A | 2003-06-13 A |  | 100% | Nyoman | 40h | 40h |
| 419 | 1.10.4.6.3 | **Iteration 2** |  | 6.1d | 2003-07-03 A | 2003-07-11 A |  | 100% |  | 24h | 24h |
| 420 | 1.10.4.6.3.1 | Sell Short |  | 3d | 2003-07-03 A | 2003-07-11 A | 391 | 100% | Nyoman | 24h | 24h |
| 421 | 1.10.4.6.4 | Testing |  | 3d | 2003-07-11 A | 2003-07-16 A | 420 | 100% | Nyoman | 24h | 24h |
| 422 | 1.10.4.7 | **Montage Screen** |  | 29.1d | 2003-06-16 A | 2003-07-25 A |  | 100% |  | 88h | 88h |
| 423 | 1.10.4.7.1 | Design |  | 4d | 2003-06-16 A | 2003-06-19 A | 415 | 100% | Nyoman | 32h | 32h |
| 424 | 1.10.4.7.2 | **Iteration 1** |  | 4d | 2003-07-16 A | 2003-07-22 A |  | 100% |  | 32h | 32h |
| 425 | 1.10.4.7.2.1 | Market Data Model |  | 3d | 2003-07-16 A | 2003-07-21 A | 415 | 100% | Nyoman | 24h | 24h |
| 426 | 1.10.4.7.2.2 | Screen Updates |  | 1d | 2003-07-21 A | 2003-07-22 A | 425 | 100% | Nyoman | 8h | 8h |
| 427 | 1.10.4.7.2.3 | ITS Screens/Takeout | milestone | 0d | 2003-07-22 A | 2003-07-22 A | 426 | 100% | Nyoman |  |  |
| 428 | 1.10.4.7.3 | Testing |  | 3d | 2003-07-22 A | 2003-07-25 A | 424 | 100% | Nyoman | 24h | 24h |
| 429 | 1.10.4.8 | **Hit the bid/Take the Offer** |  | 3d | 2003-06-09 A | 2003-06-11 A |  | 100% |  | 24h | 24h |
| 430 | 1.10.4.8.1 | Design |  | 1d | 2003-06-09 A | 2003-06-09 A | 422 | 100% | Nyoman | 8h | 8h |
| 431 | 1.10.4.8.2 | Coding |  | 2d | 2003-06-10 A | 2003-06-11 A | 430 | 100% | Nyoman | 16h | 16h |
| 432 | 1.10.4.9 | **Refactoring and combination with SBT Code** |  | 6d | 2003-06-12 A | 2003-06-19 A |  | 100% |  | 48h | 48h |
| 433 | 1.10.4.9.1 | Design |  | 2d | 2003-06-12 A | 2003-06-13 A | 429 | 100% | Nyoman | 16h | 16h |
| 434 | 1.10.4.9.2 | Coding |  | 4d | 2003-06-16 A | 2003-06-19 A | 433 | 100% | Nyoman | 32h | 32h |
| 435 | 1.10.4.10 | **Cancel/Replace Order** |  | 3d | 2003-06-20 A | 2003-06-24 A |  | 100% |  | 24h | 24h |
| 436 | 1.10.4.10.1 | Design |  | 1d | 2003-06-20 A | 2003-06-20 A | 432 | 100% | Nyoman | 8h | 8h |
| 437 | 1.10.4.10.2 | Coding |  | 2d | 2003-06-23 A | 2003-06-24 A | 436 | 100% | Nyoman | 16h | 16h |

| ID | WBS | Task | Duration | Start | Finish | Predecessors | Complete | Total slack | Free slack | Constraint | Resources | Work | Actual work |
| --- | --- | --- | --- | --- | --- | --- | --- | --- | --- | --- | --- | --- | --- |
| 438 | 1.10.4.11 | **Cancel Order** | 3d | 2003-06-25 A | 2003-06-27 A |  | 100% |  |  |  |  | 24h | 24h |
| 439 | 1.10.4.11.1 | Design | 1d | 2003-06-25 A | 2003-06-25 A | 435 | 100% |  |  |  | Nyoman | 8h | 8h |
| 440 | 1.10.4.11.2 | Coding | 2d | 2003-06-26 A | 2003-06-27 A | 439 | 100% |  |  |  | Nyoman | 16h | 16h |
| 441 | 1.10.4.12 | **See Order History** | 4d | 2003-07-07 A | 2003-07-10 A |  | 100% |  |  |  |  | 32h | 32h |
| 442 | 1.10.4.12.1 | Design | 2d | 2003-07-07 A | 2003-07-08 A | 438 | 100% |  |  |  | Nyoman | 16h | 16h |
| 443 | 1.10.4.12.2 | Coding | 2d | 2003-07-09 A | 2003-07-10 A | 442 | 100% |  |  |  | Nyoman | 16h | 16h |
| 444 | 1.10.4.13 | **Edit Trading Preferences** | 4d | 2003-09-22 | 2003-09-25 |  |  | 16d | 0d |  |  | 32h |  |
| 445 | 1.10.4.13.1 | Design | 1d | 2003-09-22 | 2003-09-22 | 466 |  | 16d | 0d | start no earlier than 2003-09-22 | Nyoman | 8h |  |
| 446 | 1.10.4.13.2 | Coding | 3d | 2003-09-23 | 2003-09-25 | 445 |  | 16d |  |  | Nyoman | 24h |  |
| 447 | 1.10.4.14 | **See Trade History** | 3d | 2003-07-17 A | 2003-07-21 A |  | 100% |  |  |  |  | 24h | 24h |
| 448 | 1.10.4.14.1 | Design | 1d | 2003-07-17 A | 2003-07-17 A | 444 | 100% |  |  |  | Nyoman | 8h | 8h |
| 449 | 1.10.4.14.2 | Coding | 2d | 2003-07-18 A | 2003-07-21 A | 448 | 100% |  |  |  | Nyoman | 16h | 16h |
| 450 | 1.10.4.15 | **Edit User Prefernces** | 4d | 2003-09-26 | 2003-10-01 |  |  | 16d | 0d |  |  | 32h |  |
| 451 | 1.10.4.15.1 | Design | 1d | 2003-09-26 | 2003-09-26 | 444 |  | 16d | 0d |  | Nyoman | 8h |  |
| 452 | 1.10.4.15.2 | Coding | 3d | 2003-09-29 | 2003-10-01 | 451 |  | 16d |  |  | Nyoman | 24h |  |
| 453 | 1.10.4.16 | **Auto Cancel POR - from the GUI** | 2d? | 2003-10-02 | 2003-10-03 |  |  | 16d |  |  |  | 16h |  |
| 454 | 1.10.4.16.1 | Design | 1d? | 2003-10-02 | 2003-10-02 | 450 |  | 16d | 0d |  | Nyoman | 8h |  |
| 455 | 1.10.4.16.2 | Coding | 1d? | 2003-10-03 | 2003-10-03 | 454 |  | 16d |  |  | Nyoman | 8h |  |
| 456 | 1.10.4.17 | **Normal Book Depth** | 13d | 2003-07-02 A | 2003-07-18 A |  | 100% |  |  |  |  | 104h | 104h |
| 457 | 1.10.4.17.1 | Design | 3d | 2003-07-02 A | 2003-07-04 A | 450 | 100% |  |  |  | Nyoman | 24h | 24h |
| 458 | 1.10.4.17.2 | Coding | 10d | 2003-07-07 A | 2003-07-18 A | 457 | 100% |  |  |  | Nyoman | 80h | 80h |
| 459 | 1.10.4.18 | Simulator Support | 1d? | 2002-11-25 A | 2002-11-25 A |  | 100% |  |  |  |  |  |  |
| 460 | 1.10.4.19 | **Intermarket Control Service** | 6d | 2003-07-25 A | 2003-08-04 A |  | 100% |  |  |  |  |  |  |
| 461 | 1.10.4.19.1 | Coding | 3d | 2003-07-25 A | 2003-07-30 A | 422 | 100% |  |  |  |  |  |  |
| 462 | 1.10.4.19.2 | Testing | 3d | 2003-07-30 A | 2003-08-04 A | 461 | 100% |  |  |  |  |  |  |

| ID | WBS | Task | Duration | Start | Finish | Predecessors | Complete | Total slack | Free slack | Constraint | Resources | Work | Actual work | Text2 |
| --- | --- | --- | --- | --- | --- | --- | --- | --- | --- | --- | --- | --- | --- | --- |
| 463 | 1.10.4.20 | **Pre-Open Order Book** | 8d | 2003-08-06 A | 2003-08-15 A |  | 100% |  |  |  |  |  |  |  |
| 464 | 1.10.4.20.1 | Coding | 5d | 2003-08-06 A | 2003-08-12 A | 480 | 100% |  |  |  |  |  |  |  |
| 465 | 1.10.4.20.2 | Testing | 3d | 2003-08-13 A | 2003-08-15 A | 464 | 100% |  |  |  |  |  |  |  |
| 466 | 1.10.4.21 | **Pre Open Manual Handling Screen** | 7d | 2003-08-18 A | 2003-08-26 A |  | 100% |  |  |  |  | 56h | 56h |  |
| 467 | 1.10.4.21.1 | Design | 2d | 2003-08-18 A | 2003-08-19 A | 463 | 100% |  |  |  | Nyoman | 16h | 16h |  |
| 468 | 1.10.4.21.2 | Coding | 5d | 2003-08-20 A | 2003-08-26 A | 467 | 100% |  |  |  | Nyoman | 40h | 40h |  |
| 469 | 1.10.4.22 | **Held Order Screeen** | 167d | 2002-11-25 A | 2003-07-17 A |  | 100% |  |  |  |  | 24h | 24h |  |
| 470 | 1.10.4.22.1 | Design | 1d | 2002-11-25 A | 2002-11-25 A |  | 100% |  |  |  | Nyoman | 8h | 8h |  |
| 471 | 1.10.4.22.2 | Coding | 1d | 2002-11-25 A | 2002-11-25 A |  | 100% |  |  |  | Nyoman | 8h | 8h |  |
| 472 | 1.10.4.22.3 | Additional Changes to Held Order | 1d | 2003-07-17 A | 2003-07-17 A |  | 100% |  |  | start no earlier than 2003-07-17 | Nyoman | 8h | 8h |  |
| 473 | 1.10.4.23 | **ITS - Pre-opening Simulator Support** | 9d | 2003-07-21 A | 2003-07-31 A |  | 100% |  |  |  |  | 40h | 40h |  |
| 474 | 1.10.4.23.1 | Coding | 5d | 2003-07-21 A | 2003-07-25 A |  | 100% |  |  | start no earlier than 2003-07-21 | Nyoman | 40h | 40h |  |
| 475 | 1.10.4.23.2 | Testing | 4d | 2003-07-28 A | 2003-07-31 A | 474 | 100% |  |  |  |  |  |  |  |
| 476 | 1.10.4.24 | **ITS Admin Message** | 2d | 2003-08-01 A | 2003-08-04 A |  | 100% |  |  |  |  | 16h | 16h |  |
| 477 | 1.10.4.24.1 | Coding | 2d | 2003-08-01 A | 2003-08-04 A | 473 | 100% |  |  | start no earlier than 2002-11-25 | Nyoman | 16h | 16h |  |
| 478 | 1.10.4.25 | **ITS Pre Opening Indication** | 2d | 2003-08-05 A | 2003-08-06 A |  | 100% |  |  |  |  | 16h | 16h |  |
| 479 | 1.10.4.25.1 | Coding | 2d | 2003-08-05 A | 2003-08-06 A | 476 | 100% |  |  |  | Nyoman | 16h | 16h |  |
| 480 | 1.10.4.26 | **ITS Pre Opening Response** | 3d | 2003-08-01 A | 2003-08-05 A |  | 100% |  |  |  |  | 16h | 16h |  |
| 481 | 1.10.4.26.1 | Coding | 2d | 2003-08-01 A | 2003-08-04 A | 478 | 100% |  |  |  | Nyoman | 16h | 16h |  |
| 482 | 1.10.4.26.2 | Testing | 1d | 2003-08-05 A | 2003-08-05 A | 481 | 100% |  |  |  |  |  |  |  |
| 484 | 1.11 | **External Team Depencies** | 119d | 2002-11-25 | 2003-05-12 |  |  | 120d |  |  |  | 256h |  |  |
| 485 | 1.11.1 | **Membership System** | 30d | 2003-04-01 | 2003-05-12 |  |  | 120d |  |  |  | 240h |  | 6.6.15.1 |
| 486 | 1.11.1.1 | Clearing Code | 15d | 2003-04-01 | 2003-04-21 |  |  | 120d | 0d | start no earlier than 2003-04-01 | Membership | 120h |  |  |
| 487 | 1.11.1.2 | SBT Feed | 15d | 2003-04-22 | 2003-05-12 | 486 |  | 120d |  |  | Membership | 120h |  |  |

| ID | WBS | Task | Type | Duration | Start | Finish | Predecessors | Complete | Remaining | Baseline start | Baseline finish | Baseline duration | Total slack | Resources | Work | Actual work | Text2 |
| --- | --- | --- | --- | --- | --- | --- | --- | --- | --- | --- | --- | --- | --- | --- | --- | --- | --- |
| 488 | 1.11.2 | **Regulatory** |  | 1d | 2002-11-25 | 2002-11-25 |  |  |  |  |  |  | 238d |  | 16h |  | 6.6.15.4 |
| 489 | 1.11.2.1 | Reports |  | 1d | 2002-11-25 | 2002-11-25 |  |  |  |  |  |  | 238d | Regulatory | 8h |  |  |
| 490 | 1.11.2.2 | Order Disclosure |  | 1d | 2002-11-25 | 2002-11-25 |  |  |  |  |  |  | 238d | Regulatory | 8h |  |  |
| 492 | 1.12 | External Intefaces Project |  | 243d | 2002-11-21 A | 2003-10-27 |  | 71% | 70.82d | 2002-10-08 | 2003-04-02 | 127d | 0d |  | 2240h | 1965.6h |  |
| 494 | 1.13 | Stock Team internal integration testing | milestone | 0d | 2003-10-27 | 2003-10-27 | 68, 364, 492 |  |  |  |  |  | 0d |  |  |  |  |

Notes:
- 492: This included project covers all external interface estimates. Included in the project are / SIAC - Inbound Market Data / SIAC - Outbound Market Data / ITS - Inbound/'Outbound messaging.
