# External Intefaces

Schedule from MS Project, 2002-11-21 to 2003-09-10, A marks actual dates.
CBOE

## Calendars

- Standard: Mon-Fri 08:00-12:00, 13:00-17:00; Sat-Sun off.

## Resources

| Resource |
| --- |
| Nyoman |
| Sandip |
| Brad/Sandip |
| Brad/Sandip/Rajeev |
| Brad |
| Eva |
| All |
| Sando |
| Mike N |
| Mike Neher |
| Alex |
| Akex |

## Schedule

| ID | WBS | Task | Type | Duration | Start | Finish | Predecessors | Complete | Remaining | Baseline start | Baseline finish | Baseline duration | Total slack | Free slack | Constraint | Resources | Work | Actual work | Text1 | Text2 |
| --- | --- | --- | --- | --- | --- | --- | --- | --- | --- | --- | --- | --- | --- | --- | --- | --- | --- | --- | --- | --- |
| 1 | 1 | **External Interface Iteration** |  | 210d | 2002-11-21 A | 2003-09-10 |  | 80% | 42.86d | 2002-11-21 | 2003-03-18 | 84d | 0d |  |  |  | 2064h | 1688h |  |  |
| 2 | 1.1 | Analysis of SBT code |  | 9d | 2002-11-21 A | 2002-12-03 A |  | 100% |  | 2002-11-21 | 2002-12-03 | 9d |  |  |  | Brad; Sandip; Nyoman | 216h | 216h | Brad,Sandip,Nyoman |  |
| 3 | 1.2 | **Outbound SIAC Trades/Quotes** |  | 172d | 2002-12-02 A | 2003-07-29 |  | 83% | 29.66d | 2002-12-02 | 2003-03-18 | 77d | 31d |  |  |  | 688h | 576h |  | 6.6.13, 6.6.14 |
| 4 | 1.2.1 | **Determine feasability of CFN** |  | 6d | 2002-12-02 A | 2002-12-09 A |  | 100% |  | 2002-12-02 | 2002-12-09 | 6d |  |  |  |  | 48h | 48h |  |  |
| 5 | 1.2.1.1 | Meet with CFN developers |  | 1d | 2002-12-02 A | 2002-12-02 A |  | 100% |  | 2002-12-02 | 2002-12-02 | 1d |  |  | start no earlier than 2002-12-02 | Nyoman | 8h | 8h | Nyoman |  |
| 6 | 1.2.1.2 | Analyze interface |  | 2d | 2002-12-03 A | 2002-12-04 A | 5 | 100% |  | 2002-12-03 | 2002-12-04 | 2d |  |  |  | Nyoman | 16h | 16h | Nyoman |  |
| 7 | 1.2.1.3 | Create IDL Structure |  | 3d | 2002-12-05 A | 2002-12-09 A | 6 | 100% |  | 2002-12-05 | 2002-12-09 | 3d |  |  |  | Nyoman | 24h | 24h | Nyoman |  |
| 8 | 1.2.2 | **Design SIAC interface with CFN** |  | 6d | 2002-12-05 A | 2002-12-12 A |  | 100% |  | 2002-12-05 | 2002-12-12 | 6d |  |  |  |  | 48h | 48h |  |  |
| 9 | 1.2.2.1 | Façade to Cfn |  | 2d | 2002-12-05 A | 2002-12-06 A | 6 | 100% |  | 2002-12-05 | 2002-12-06 | 2d |  |  |  | Nyoman | 16h | 16h | Nyoman |  |
| 10 | 1.2.2.2 | Create the Mapping document |  | 4d | 2002-12-09 A | 2002-12-12 A | 9 | 100% |  | 2002-12-09 | 2002-12-12 | 4d |  |  |  | Nyoman | 32h | 32h | Nyoman |  |
| 11 | 1.2.3 | CATS Development for Nyoman |  | 46d | 2002-12-13 A | 2003-02-14 A | 10 | 100% |  | 2002-12-13 | 2003-02-14 | 46d |  |  |  | Nyoman | 368h | 368h | Nyoman |  |
| 12 | 1.2.4 | **Outbound Market Data Serivce Design Phase** |  | 117d | 2003-02-17 A | 2003-07-29 |  | 48% | 60.52d | 2003-02-17 | 2003-03-18 | 22d | 31d |  |  |  | 224h | 112h |  |  |
| 13 | 1.2.4.1 | **High Level Design** |  | 4d | 2003-02-17 A | 2003-02-20 |  | 50% | 2d | 2003-02-17 | 2003-02-20 | 4d | 144d |  |  |  | 32h | 16h |  |  |
| 14 | 1.2.4.1.1 | Normal Outbound Quotes/Trade |  | 2d | 2003-02-17 A | 2003-02-18 A | 11 | 100% |  | 2003-02-17 | 2003-02-18 | 2d |  |  |  | Nyoman | 16h | 16h | Nyoman |  |
| 15 | 1.2.4.1.2 | X-Dividend Trade |  | 1d | 2003-02-19 | 2003-02-19 | 14 |  |  | 2003-02-19 | 2003-02-19 | 1d | 144d | 0d |  | Nyoman | 8h |  | Nyoman |  |
| 16 | 1.2.4.1.3 | Halt Message |  | 1d | 2003-02-20 | 2003-02-20 | 15 |  |  | 2003-02-20 | 2003-02-20 | 1d | 144d |  |  | Nyoman | 8h |  | Nyoman |  |
| 17 | 1.2.4.1.4 | Design Walktrhough | milestone | 0d | 2003-02-20 A | 2003-02-20 A | 16 | 100% |  | 2003-02-20 | 2003-02-20 | 0d? |  |  |  | Nyoman |  |  | Nyoman |  |
| 18 | 1.2.4.2 | Class Design |  | 5d | 2003-02-21 A | 2003-02-27 A | 16 | 100% |  | 2003-02-21 | 2003-02-27 | 5d |  |  |  | Nyoman | 40h | 40h | Nyoman |  |
| 19 | 1.2.4.3 | 1st Coding Iteration |  | 5d | 2003-02-28 A | 2003-03-06 A | 18 | 100% |  | 2003-02-28 | 2003-03-06 | 5d |  |  |  | Nyoman | 40h | 40h | Nyoman |  |
| 20 | 1.2.4.4 | Class Design |  | 2d | 2003-03-07 A | 2003-03-10 A | 19 | 100% |  | 2003-03-07 | 2003-03-10 | 2d |  |  |  | Nyoman | 16h | 16h | Nyoman |  |
| 21 | 1.2.4.5 | Wait for CFN To Be Complete |  | 1d | 2003-07-11 | 2003-07-11 |  |  |  | 2003-07-11 | 2003-07-11 | 1d | 31d | 0d | start no earlier than 2003-07-11 |  |  |  |  |  |
| 22 | 1.2.4.6 | 2nd Iteration Coding |  | 7d | 2003-07-14 | 2003-07-22 | 21 |  |  | 2003-03-11 | 2003-03-13 | 3d | 31d | 0d |  | Nyoman | 56h |  | Nyoman |  |
| 23 | 1.2.4.7 | Testing with CFN |  | 5d | 2003-07-23 | 2003-07-29 | 22 |  |  | 2003-03-14 | 2003-03-18 | 3d | 31d |  |  | Nyoman | 40h |  | Nyoman |  |
| 24 | 1.3 | **Inbound SIAC Data - 2nd Iteration** |  | 60d | 2003-06-16 A | 2003-09-05 |  | 70% | 18d | 2003-06-16 | 2003-08-07 | 39d | 3d |  |  |  | 432h | 304h |  |  |
| 25 | 1.3.1 | **Initial Setup and Review** |  | 10d | 2003-06-16 A | 2003-06-27 A |  | 100% |  | 2003-06-16 | 2003-06-27 | 10d |  |  |  |  | 80h | 80h |  |  |
| 26 | 1.3.1.1 | Determine EC and TIPS Adapater Design with SBT |  | 3d | 2003-06-16 A | 2003-06-18 A |  | 100% |  | 2003-06-16 | 2003-06-18 | 3d |  |  | start no earlier than 2003-06-16 | Mike Neher | 24h | 24h |  |  |
| 27 | 1.3.1.2 | Setup Environment |  | 4d | 2003-06-19 A | 2003-06-24 A | 26 | 100% |  | 2003-06-19 | 2003-06-24 | 4d |  |  |  | Mike Neher | 32h | 32h |  |  |
| 28 | 1.3.1.3 | Review Codebase |  | 3d | 2003-06-25 A | 2003-06-27 A | 27 | 100% |  | 2003-06-25 | 2003-06-27 | 3d |  |  |  | Mike Neher | 24h | 24h |  |  |

Notes:
- 3: 6.6.13/6.6.14 Quote and trade dissemination to SIAC.
- 5: Talk about changes needed to support a new NBBO message into the event channels.
- 11: Task inserted as a placeholder for Nyoman's time on CATS.

| ID | WBS | Task | Type | Duration | Start | Finish | Predecessors | Complete | Remaining | Baseline start | Baseline finish | Baseline duration | Total slack | Free slack | Constraint | Resources | Work | Actual work |
| --- | --- | --- | --- | --- | --- | --- | --- | --- | --- | --- | --- | --- | --- | --- | --- | --- | --- | --- |
| 29 | 1.3.2 | **TIPS Adapter** |  | 32d | 2003-06-30 A | 2003-08-12 A |  | 100% |  | 2003-06-26 | 2003-07-23 | 20d |  |  |  |  | 224h | 224h |
| 30 | 1.3.2.1 | Design |  | 15d | 2003-06-30 A | 2003-07-18 A | 25 | 100% |  | 2003-06-26 | 2003-07-02 | 5d |  |  |  | Mike Neher | 120h | 120h |
| 31 | 1.3.2.2 | Design Review | milestone | 0d | 2003-07-18 A | 2003-07-18 A | 30 | 100% |  | 2003-07-04 | 2003-07-04 | 0d? |  |  |  | Mike Neher |  |  |
| 32 | 1.3.2.3 | Add methods to TIPSLWMessage |  | 9d | 2003-07-21 A | 2003-07-31 A | 31 | 100% |  | 2003-07-21 | 2003-07-31 | 9d |  |  |  | Mike Neher | 72h | 72h |
| 33 | 1.3.2.4 | Modify TIPSEquityUpdateImpl |  | 4d | 2003-08-01 A | 2003-08-06 A | 32 | 100% |  | 2003-08-01 | 2003-08-06 | 4d |  |  |  | Mike Neher | 32h | 32h |
| 34 | 1.3.2.5 | Change TCPTIPSEquityImpl |  | 4d | 2003-08-07 A | 2003-08-12 A | 33 | 100% |  | 2003-08-07 | 2003-08-12 | 4d |  |  |  |  |  |  |
| 35 | 1.3.3 | **Event Channel Changes** |  | 11d | 2003-08-13 | 2003-08-27 |  |  |  | 2003-07-24 | 2003-07-31 | 6d | 3d | 0d |  |  | 88h |  |
| 36 | 1.3.3.1 | Modify publishRecap for NBBOStruct and CurrentMarket |  | 11d | 2003-08-13 | 2003-08-27 | 29 |  |  | 2003-07-24 | 2003-07-28 | 3d | 3d |  |  | Mike Neher | 88h |  |
| 37 | 1.3.4 | Modify Adapter to Tag Sybols |  | 2d | 2003-08-28 | 2003-08-29 | 35 |  |  | 2003-08-28 | 2003-08-29 | 2d | 3d | 0d |  |  |  |  |
| 38 | 1.3.5 | Integration Testing |  | 5d | 2003-09-01 | 2003-09-05 | 37 |  |  | 2003-08-01 | 2003-08-07 | 5d | 3d |  |  | Mike Neher | 40h |  |
| 39 | 1.4 | **Compass Adapter** |  | 38d | 2003-07-21 A | 2003-09-10 |  | 55% | 17d | 2003-08-15 | 2003-09-11 | 20d | 0d |  |  |  | 304h | 168h |
| 40 | 1.4.1 | Analysis of Current Adapater |  | 7d | 2003-07-21 A | 2003-07-29 A |  | 100% |  | 2003-08-15 | 2003-08-21 | 5d |  |  | start no earlier than 2003-07-21 | Alex | 56h | 56h |
| 41 | 1.4.2 | Simple TCP Communication for testing |  | 5d | 2003-07-30 A | 2003-08-05 A | 40 | 100% |  | 2003-07-30 | 2003-08-05 | 5d |  |  |  | Alex | 40h | 40h |
| 42 | 1.4.3 | **Data Message Formats** |  | 12d | 2003-08-06 A | 2003-08-21 | 41 | 75% | 3d | 2003-08-06 | 2003-08-21 | 12d | 0d |  |  |  | 96h | 72h |
| 43 | 1.4.3.1 | New Order |  | 3d | 2003-08-06 A | 2003-08-08 A |  | 100% |  | 2003-08-06 | 2003-08-08 | 3d |  |  |  | Alex | 24h | 24h |
| 44 | 1.4.3.2 | Modify Order |  | 3d | 2003-08-11 A | 2003-08-13 A | 43 | 100% |  | 2003-08-11 | 2003-08-13 | 3d |  |  |  | Alex | 24h | 24h |
| 45 | 1.4.3.3 | Cancel Order |  | 3d | 2003-08-14 A | 2003-08-18 A | 44 | 100% |  | 2003-08-14 | 2003-08-18 | 3d |  |  |  | Alex | 24h | 24h |
| 46 | 1.4.3.4 | Unprocessed Order |  | 3d | 2003-08-19 | 2003-08-21 | 45 |  |  | 2003-08-19 | 2003-08-21 | 3d | 0d |  |  | Alex | 24h |  |
| 47 | 1.4.4 | **Reports** |  | 9d | 2003-08-22 | 2003-09-03 |  |  |  | 2003-08-22 | 2003-09-03 | 9d | 0d |  |  |  | 72h |  |
| 48 | 1.4.4.1 | Fill Report |  | 3d | 2003-08-22 | 2003-08-26 | 42 |  |  | 2003-08-22 | 2003-08-26 | 3d | 0d |  |  | Alex | 24h |  |
| 49 | 1.4.4.2 | Nothing Done Report |  | 3d | 2003-08-27 | 2003-08-29 | 48 |  |  | 2003-08-27 | 2003-08-29 | 3d | 0d |  |  | Alex | 24h |  |
| 50 | 1.4.4.3 | Cancel Report |  | 3d | 2003-09-01 | 2003-09-03 | 49 |  |  | 2003-09-01 | 2003-09-03 | 3d | 0d |  |  | Alex | 24h |  |
| 51 | 1.4.5 | Integration Testing |  | 5d | 2003-09-04 | 2003-09-10 | 47 |  |  | 2003-09-05 | 2003-09-11 | 5d | 0d |  |  | Alex | 40h |  |
| 53 | 1.6.12.1.1 | Client |  | 2d | 2003-05-16 A | 2003-05-20 A | 56 | 100% |  | 2003-04-08 | 2003-04-09 | 2d |  |  |  |  | 16h | 16h |
| 54 | 1.6.12.1.1 | Client |  | 2d | 2003-05-16 A | 2003-05-20 A | 56 | 100% |  | 2003-05-16 | 2003-05-20 | 2d |  |  |  |  | 16h | 16h |
| 55 | 1.7.20.1.1 | Client |  | 2d | 2003-05-16 A | 2003-05-20 A | 56 | 100% |  | 2003-05-16 | 2003-05-20 | 2d |  |  |  |  | 16h | 16h |

| ID | WBS | Task | Type | Duration | Start | Finish | Predecessors | Complete | Remaining | Baseline start | Baseline finish | Baseline duration | Total slack | Constraint | Resources | Work | Actual work | Text1 |
| --- | --- | --- | --- | --- | --- | --- | --- | --- | --- | --- | --- | --- | --- | --- | --- | --- | --- | --- |
| 56 | 1.8 | **Inbound SIAC Data - Task has been scratched.** |  | 111.1d | 2002-12-19 A | 2003-05-23 A |  | 100% |  | 2002-12-19 | 2003-03-05 | 55d |  |  |  | 352h | 352h |  |
| 57 | 1.8.1 | Changes to TIPS to send NBBO appendage |  | 6d | 2003-01-07 A | 2003-01-14 A | 10 | 100% |  | 2003-01-07 | 2003-01-14 | 6d |  | start no earlier than 2003-01-07 | Sandip | 48h | 48h | Sandip |
| 58 | 1.8.2 | Analysis of TIPS Adapater |  | 3d | 2003-01-15 A | 2003-01-17 A | 57 | 100% |  | 2003-01-15 | 2003-01-17 | 3d |  |  | Sandip | 24h | 24h | Sandip |
| 59 | 1.8.3 | **Anayslis of event channels** |  | 5d | 2003-01-20 A | 2003-01-24 A |  | 100% |  | 2003-01-20 | 2003-01-24 | 5d |  |  |  | 40h | 40h |  |
| 60 | 1.8.3.1 | Trades |  | 2d | 2003-01-20 A | 2003-01-21 A | 58 | 100% |  | 2003-01-20 | 2003-01-21 | 2d |  |  | Sandip | 16h | 16h | Sandip |
| 61 | 1.8.3.2 | Current Market |  | 2d | 2003-01-22 A | 2003-01-23 A | 60 | 100% |  | 2003-01-22 | 2003-01-23 | 2d |  |  | Sandip | 16h | 16h | Sandip |
| 62 | 1.8.3.3 | Market Recap |  | 1d | 2003-01-24 A | 2003-01-24 A | 61 | 100% |  | 2003-01-24 | 2003-01-24 | 1d |  |  | Sandip | 8h | 8h | Sandip |
| 63 | 1.8.4 | **Market Data Service** |  | 30d | 2002-12-19 A | 2003-01-29 A |  | 100% |  | 2002-12-19 | 2003-01-29 | 30d |  |  |  | 32h | 32h |  |
| 64 | 1.8.4.1 | Analysis of current MDS |  | 3d | 2003-01-27 A | 2003-01-29 A | 59 | 100% |  | 2003-01-27 | 2003-01-29 | 3d |  |  | Sandip | 24h | 24h | Sandip |
| 65 | 1.8.4.2 | Broker Service |  | 1d | 2002-12-19 A | 2002-12-19 A |  | 100% |  | 2002-12-19 | 2002-12-19 | 1d |  |  | Sandip | 8h | 8h | Sandip |
| 66 | 1.8.5 | **Detailed Technical Design** |  | 6d | 2003-01-30 A | 2003-02-06 A |  | 100% |  | 2003-01-30 | 2003-02-06 | 6d |  |  |  | 48h | 48h |  |
| 67 | 1.8.5.1 | Sequence Diagrams |  | 3d | 2003-01-30 A | 2003-02-03 A | 63 | 100% |  | 2003-01-30 | 2003-02-03 | 3d |  |  | Sandip | 24h | 24h | Sandip |
| 68 | 1.8.5.2 | Object Diagram |  | 3d | 2003-02-04 A | 2003-02-06 A | 67 | 100% |  | 2003-02-04 | 2003-02-06 | 3d |  |  | Sandip | 24h | 24h | Sandip |
| 69 | 1.3 | Development Enviroment setup |  | 81d | 2002-11-21 A | 2003-03-17 |  | 81% | 15.15d | 2002-11-21 | 2003-02-12 | 58d | 0d |  |  | 704h | 575.2h |  |
| 70 | 1.8.7 | **Iteration 1** |  | 8d | 2003-04-25 A | 2003-05-07 A |  | 100% |  | 2003-02-13 | 2003-03-05 | 15d |  |  |  | 64h | 64h |  |
| 71 | 1.3 | Development Enviroment setup |  | 109.1d | 2002-11-21 A | 2003-04-25 A |  | 100% |  | 2002-11-21 | 2003-03-17 | 81d |  |  |  | 1961.6h | 1961.6h |  |
| 72 | 1.3 | Development Enviroment setup |  | 109.1d | 2002-11-21 A | 2003-04-25 |  | 43% | 62.6d | 2002-11-21 | 2003-04-25 | 109.1d | 87d |  |  | 1961.6h | 575.2h |  |
| 73 | 1.3 | Development Enviroment setup |  | 109.1d | 2002-11-21 A | 2003-04-25 A |  | 100% |  | 2002-11-21 | 2003-04-25 | 109.1d |  |  |  | 1961.6h | 1961.6h |  |
| 74 | 1.4 | Development Enviroment setup |  | 109.1d | 2002-11-21 A | 2003-04-25 A |  | 100% |  | 2002-11-21 | 2003-04-25 | 109.1d |  |  |  | 1961.6h | 1961.6h |  |
| 75 | 1.8.7.5 | Detail Design |  | 3d | 2003-04-25 A | 2003-04-30 A | 66, 69, 71, 72, 73, 74 | 100% |  | 2003-03-31 | 2003-04-02 | 3d |  |  | Sandip | 24h | 24h | Sandip |
| 76 | 1.8.7.6 | Design Walkthrough | milestone | 0d | 2003-04-30 A | 2003-04-30 A | 75 | 100% |  | 2003-04-02 | 2003-04-02 | 0d? |  |  | Sandip |  |  | Sandip |
| 77 | 1.8.7.7 | Coding |  | 5d | 2003-04-30 A | 2003-05-07 A | 76 | 100% |  | 2003-04-03 | 2003-04-09 | 5d |  |  | Sandip | 40h | 40h | Sandip |
| 78 | 1.8.8 | **Iteration2** |  | 12d | 2003-05-07 A | 2003-05-23 A | 77 | 100% |  | 2003-04-10 | 2003-04-18 | 7d |  |  |  | 96h | 96h |  |
| 79 | 1.8.8.1 | Configuration Delay |  | 10d | 2003-05-07 A | 2003-05-21 A |  | 100% |  | 2003-05-07 | 2003-05-21 | 10d |  |  | Sandip | 80h | 80h |  |
| 80 | 1.8.8.2 | Design |  | 2d | 2003-05-21 A | 2003-05-23 A | 79 | 100% |  | 2003-04-10 | 2003-04-11 | 2d |  |  | Sandip | 16h | 16h | Sandip |

Notes:
- 56: Note - This task might be scratched due to new information on 6/13/03 which changes how we designed. Adding a new task to cover the new changes.
- 57: Date moved due to meeting with TIPS people on 1/7/02. / Changes will be made to TIPS adapater to broadcast the data to Stock. / Sandip is responsible for coordinating this effort with Jerry Hamm and creating the necessary data in CBOEdirect. / Estimates are padded somewhat due to continuing CATS support and development on Sandip.

| ID | WBS | Task | Duration | Start | Finish | Predecessors | Complete | Baseline start | Baseline finish | Baseline duration | Constraint | Resources | Work | Actual work | Text1 |
| --- | --- | --- | --- | --- | --- | --- | --- | --- | --- | --- | --- | --- | --- | --- | --- |
| 81 | 1.9 | **Clearing** | 23d | 2003-01-06 A | 2003-02-05 A |  | 100% | 2003-01-06 | 2003-02-05 | 23d |  |  | 40h | 40h |  |
| 82 | 1.9.1 | Get clearing information for SEMS | 1d | 2003-01-06 A | 2003-01-06 A |  | 100% | 2003-01-06 | 2003-01-06 | 1d | start no earlier than 2003-01-06 | Brad | 8h | 8h | Brad |
| 83 | 1.9.2 | Analize the clearing code | 1d | 2003-01-15 A | 2003-01-15 A | 82 | 100% | 2003-01-15 | 2003-01-15 | 1d | start no earlier than 2003-01-15 | Eva | 8h | 8h | Eva |
| 84 | 1.9.3 | Discuss Changes needed for Clearing | 1d | 2003-02-04 A | 2003-02-04 A | 83 | 100% | 2003-02-04 | 2003-02-04 | 1d | start no earlier than 2003-02-04 | Eva; Brad | 16h | 16h | Eva,Brad |
| 85 | 1.9.4 | Create field layout document | 1d | 2003-02-05 A | 2003-02-05 A | 84 | 100% | 2003-02-05 | 2003-02-05 | 1d |  | Eva | 8h | 8h | Eva |
| 86 | 1.10 | **Regulatory** | 1d | 2003-01-14 A | 2003-01-14 A |  | 100% | 2003-01-14 | 2003-01-14 | 1d |  |  | 16h | 16h |  |
| 87 | 1.10.1 | Meet with regulatory to determine requirements. | 1d | 2003-01-14 A | 2003-01-14 A |  | 100% | 2003-01-14 | 2003-01-14 | 1d | start no earlier than 2003-01-14 | Eva; Brad | 16h | 16h | Eva,Brad |
| 88 | 1.11 | **Database** | 2d | 2003-01-10 A | 2003-01-13 A |  | 100% | 2003-01-10 | 2003-01-13 | 2d |  |  | 16h | 16h |  |
| 89 | 1.11.1 | Schedule meeting with CDB | 1d | 2003-01-10 A | 2003-01-10 A |  | 100% | 2003-01-10 | 2003-01-10 | 1d | start no earlier than 2003-01-10 | Eva; Brad | 16h | 16h | Eva,Brad |
| 90 | 1.11.2 | Meet with database team and get layouts | 1d | 2003-01-13 A | 2003-01-13 A | 89 | 100% | 2003-01-13 | 2003-01-13 | 1d |  |  |  |  |  |

Notes:
- 82: Bob Peterson has sent a layout on the membership information. / Eva and Brad need to decipher this and determine how to send it out.
