Schedule from MS Project, 2002-11-25 to 2003-08-06, A marks actual dates.

## Calendars

- Standard: Mon-Fri 08:00-12:00, 13:00-17:00; Sat-Sun off.

## Resources

| Resource |
| --- |
| Brad |
| Carol |

## Schedule

| ID | WBS | Task | Duration | Start | Finish | Predecessors | Complete | Remaining | Baseline start | Baseline finish | Baseline duration | Total slack | Free slack | Constraint | Resources | Work | Actual work | Text1 |
| --- | --- | --- | --- | --- | --- | --- | --- | --- | --- | --- | --- | --- | --- | --- | --- | --- | --- | --- |
| 1 | 1 | **ITS Socket Adapter/Messaging** | 183d | 2002-11-25 A | 2003-08-06 |  | 39% | 111.33d | 2002-11-25 | 2003-05-26 | 131d | 0d |  |  |  | 1608h | 715.05h |  |
| 2 | 1.1 | **Adapter Requirements** | 22d | 2002-11-25 A | 2002-12-24 A |  | 100% |  | 2002-11-25 | 2002-12-24 | 22d |  |  |  |  | 16h | 16h |  |
| 3 | 1.1.1 | Analyze RCI Manual | 1d | 2002-11-25 A | 2002-11-25 A |  | 100% |  | 2002-11-25 | 2002-11-25 | 1d |  |  | start no earlier than 2002-11-25 | Carol | 8h | 8h | Carol |
| 4 | 1.1.2 | Adapter Training | 1d | 2002-11-26 A | 2002-11-26 A | 3 | 100% |  | 2002-11-26 | 2002-11-26 | 1d |  |  |  | Carol | 8h | 8h | Carol |
| 5 | 1.1.3 | CBOEdirect famialization | 20d | 2002-11-27 A | 2002-12-24 A | 4 | 100% |  | 2002-11-27 | 2002-12-24 | 20d |  |  |  |  |  |  |  |
| 6 | 1.2 | **High Level Technical Design** | 38d | 2002-12-25 A | 2003-02-14 |  | 72% | 10.72d | 2002-12-25 | 2003-02-14 | 38d | 123d |  |  | Carol | 528h | 442.25h | Carol |
| 7 | 1.2.1 | CBOEdirect coordination | 5d | 2002-12-25 A | 2002-12-31 A | 2 | 100% |  | 2002-12-25 | 2002-12-31 | 5d |  |  |  | Carol | 40h | 40h | Carol |
| 8 | 1.2.2 | ITS - CBOEdirect mapping document | 8d | 2003-01-01 A | 2003-01-10 A | 7 | 100% |  | 2003-01-01 | 2003-01-10 | 8d |  |  |  | Carol | 64h | 64h | Carol |
| 9 | 1.2.3 | Object Design | 10d | 2003-01-13 A | 2003-01-24 A | 8 | 100% |  | 2003-01-13 | 2003-01-24 | 10d |  |  |  | Carol | 80h | 80h | Carol |
| 10 | 1.2.4 | Sequence Diagram | 5d | 2003-01-27 A | 2003-01-31 A | 9 | 100% |  | 2003-01-27 | 2003-01-31 | 5d |  |  |  | Carol | 40h | 40h | Carol |
| 11 | 1.2.5 | X.25 Card and Middlewear Evaluation Testing | 11d | 2003-01-31 | 2003-02-14 |  |  |  | 2003-01-31 | 2003-02-14 | 11d | 123d |  | finish no earlier than 2003-02-14 |  |  |  |  |
| 12 | 1.3 | X.25 Card connection test | 3d | 2003-02-18 | 2003-02-20 |  |  |  | 2003-02-18 | 2003-02-20 | 3d | 119d |  | start no earlier than 2003-02-18 | Carol | 24h |  | Carol |
| 13 | 1.4 | **Iteration 1 - Adapter Development and Test with SIAC** | 41d | 2003-02-03 A | 2003-03-31 |  | 87% | 5.25d | 2003-03-18 | 2003-04-14 | 20d | 92d |  |  |  | 288h | 256.8h |  |
| 14 | 1.4.1 | **Initial Development and Test with SIAC** | 41d | 2003-02-03 A | 2003-03-31 |  | 87% | 5.25d | 2003-03-18 | 2003-04-07 | 15d | 92d |  |  |  | 288h | 256.8h |  |
| 15 | 1.4.1.1 | **Base ItsMessage** | 10d | 2003-02-03 A | 2003-02-14 |  | 70% | 3d | 2003-02-26 | 2003-03-17 | 14d | 120d | 0d |  |  | 80h | 56h |  |
| 16 | 1.4.1.1.1 | Message Formatting | 3d | 2003-02-03 | 2003-02-05 |  |  |  | 2003-03-13 | 2003-03-17 | 3d | 127d |  | start no earlier than 2003-02-03 | Carol | 24h |  | Carol |
| 17 | 1.4.1.1.2 | Communication Header | 3d | 2003-02-06 A | 2003-02-10 A | 16 | 100% |  | 2003-02-26 | 2003-02-28 | 3d |  |  |  | Carol | 24h | 24h | Carol |
| 18 | 1.4.1.1.3 | Message Header | 4d | 2003-02-11 A | 2003-02-14 A | 17 | 100% |  | 2003-03-03 | 2003-03-05 | 3d |  |  |  | Carol | 32h | 32h | Carol |
| 19 | 1.4.1.2 | **ItsConnectionService and Message Processors** | 30d | 2003-02-17 A | 2003-03-28 | 15 | 90% | 3d | 2003-03-26 | 2003-04-07 | 9d | 93d |  |  |  | 88h | 88h |  |
| 20 | 1.4.1.2.1 | ItsConnectionServiceImpl | 5d | 2003-02-17 A | 2003-02-21 A |  | 100% |  | 2003-03-26 | 2003-03-26 | 1d |  |  | start no earlier than 2003-02-17 | Carol | 40h | 40h | Carol |
| 21 | 1.4.1.2.2 | ItsControlServiceImpl and ItsMsgFactory | 5d | 2003-02-24 A | 2003-02-28 | 20 | 50% | 2.5d | 2003-03-03 | 2003-03-28 | 20d | 113d |  | start no earlier than 2003-02-24 |  |  |  |  |
| 22 | 1.4.1.2.3 | Base InboundCommitment to Order processing | 3d | 2003-03-03 A | 2003-03-05 A | 21 | 100% |  | 2003-03-10 | 2003-03-12 | 3d |  |  |  |  |  |  |  |
| 23 | 1.4.1.2.4 | Base Outbound Order to Outbound Commitment processing | 3d | 2003-03-06 A | 2003-03-10 A | 22 | 100% |  | 2003-03-13 | 2003-03-17 | 3d |  |  |  |  |  |  |  |
| 24 | 1.4.1.2.5 | ItsOutboundImpl | 3d | 2003-03-11 A | 2003-03-13 A | 23 | 100% |  | 2003-03-19 | 2003-03-19 | 1d |  |  |  | Carol | 24h | 24h | Carol |
| 25 | 1.4.1.2.6 | Its Ack and Reject Handling | 3d | 2003-03-14 A | 2003-03-18 A | 24 | 100% |  | 2003-04-01 | 2003-04-01 | 1d |  |  |  | Carol | 24h | 24h | Carol |
| 26 | 1.4.1.2.7 | Its Sequence Number Processing | 3d | 2003-03-26 A | 2003-03-28 A |  | 100% |  | 2003-03-26 | 2003-03-28 | 3d |  |  | start no earlier than 2003-03-26 |  |  |  |  |

Notes:
- 5: Familairization with the ConnectionServer and other CBOEdirect utilitizy classes.
- 6: Will include High level class diagram and sequence diagram (with as much detail as possible here).
- 11: Write a test client that will connect to SIAC, send out commitments (read from a file) Also read in messages from SIAC and print to screen or file. This should work before the card is purchased
- 13: The goal for this iteration is: / 1. Link into ITS Adapter Low level with the true message formats. / 2. Recieve simulated ITS messages and convert to correct data structures. / 3. Send simulated ITS messages in the proper format.

| ID | WBS | Task | Duration | Start | Finish | Predecessors | Complete | Remaining | Baseline start | Baseline finish | Baseline duration | Total slack | Free slack | Constraint | Resources | Work | Actual work | Text1 |
| --- | --- | --- | --- | --- | --- | --- | --- | --- | --- | --- | --- | --- | --- | --- | --- | --- | --- | --- |
| 27 | 1.4.1.3 | **Test with ITS NMS Test Station** | 15d | 2003-03-11 A | 2003-03-31 |  | 94% | 0.9d | 2003-03-26 | 2003-04-07 | 9d | 92d |  |  |  | 120h | 112.8h |  |
| 28 | 1.4.1.3.1 | Configure and setup JBM Box to Test ITS RCI | 3d | 2003-03-11 A | 2003-03-13 |  | 70% | 0.9d | 2003-03-26 | 2003-03-26 | 1d | 104d |  | start no earlier than 2003-03-11 | Carol | 24h | 16.8h | Carol |
| 29 | 1.4.1.3.2 | Integrate with SBT Connection Server on stkdev | 3d | 2003-03-14 A | 2003-03-18 A | 28 | 100% |  | 2003-03-20 | 2003-03-20 | 1d |  |  |  | Carol | 24h | 24h | Carol |
| 30 | 1.4.1.3.3 | Test receiving inbound commitments from ITS Manual Station | 3d | 2003-03-19 A | 2003-03-21 A | 29 | 100% |  | 2003-03-19 | 2003-03-19 | 1d |  |  |  | Carol | 24h | 24h | Carol |
| 31 | 1.4.1.3.4 | Test sending outbound commitments, receiving reject, acks | 6d | 2003-03-24 A | 2003-03-31 A | 30 | 100% |  | 2003-04-01 | 2003-04-01 | 1d |  |  |  | Carol | 48h | 48h | Carol |
| 32 | 1.5 | **Iteration 2- Develop Enhance ITS Message Classes** | 47d | 2003-04-01 | 2003-06-04 |  |  |  | 2003-04-01 | 2003-05-05 | 25d | 0d |  |  |  | 296h |  |  |
| 33 | 1.5.1 | **Develop ITS Message classes** | 47d | 2003-04-01 | 2003-06-04 |  |  |  | 2003-04-01 | 2003-05-05 | 25d | 0d |  |  |  | 296h |  |  |
| 34 | 1.5.1.1 | **Commitment Message Creation** | 10d | 2003-04-01 | 2003-04-14 | 31 |  |  | 2003-03-26 | 2003-04-07 | 9d | 0d |  |  |  | 80h |  |  |
| 35 | 1.5.1.1.1 | Enhance Inbound commitment | 5d | 2003-04-01 | 2003-04-07 |  |  |  | 2003-03-26 | 2003-03-26 | 1d | 0d |  | start no earlier than 2003-02-24 | Carol | 40h |  | Carol |
| 36 | 1.5.1.1.2 | Enhance outbound Commitment | 5d | 2003-04-08 | 2003-04-14 | 35 |  |  | 2003-03-26 | 2003-03-26 | 1d | 0d |  | start no earlier than 2003-04-08 | Carol | 40h |  | Carol |
| 37 | 1.5.1.2 | **Commitment Cancel Creation** | 9d | 2003-04-15 | 2003-04-25 |  |  |  | 2003-03-26 | 2003-04-07 | 9d | 0d |  |  |  | 32h |  |  |
| 38 | 1.5.1.2.1 | Inbound ITS Cancel | 4d | 2003-04-15 | 2003-04-18 | 36 |  |  | 2003-03-26 | 2003-03-26 | 1d | 0d |  | start no earlier than 2003-02-24 | Carol | 32h |  | Carol |
| 39 | 1.5.1.2.2 | Outbound ITS Cancel | 5d | 2003-04-21 | 2003-04-25 | 38 |  |  | 2003-04-14 | 2003-04-18 | 5d | 0d |  |  |  |  |  |  |
| 40 | 1.5.1.3 | **Trade Report Processing** | 10d | 2003-04-28 | 2003-05-09 |  |  |  | 2003-03-26 | 2003-04-07 | 9d | 0d |  |  |  | 40h |  |  |
| 41 | 1.5.1.3.1 | Inbound ITS Trade Report | 5d | 2003-04-28 | 2003-05-02 | 39 |  |  | 2003-03-26 | 2003-03-26 | 1d | 0d |  | start no earlier than 2003-04-22 | Carol | 40h |  | Carol |
| 42 | 1.5.1.3.2 | Outbound Trade Report | 5d | 2003-05-05 | 2003-05-09 | 41 |  |  | 2003-04-29 | 2003-05-05 | 5d | 0d |  |  |  |  |  |  |
| 43 | 1.5.1.4 | **PreOpening** | 15d | 2003-05-12 | 2003-05-30 | 31 |  |  | 2003-03-26 | 2003-04-07 | 9d | 0d |  |  |  | 120h |  |  |
| 44 | 1.5.1.4.1 | Pre-opening Indication | 2d | 2003-05-12 | 2003-05-13 | 42 |  |  | 2003-03-26 | 2003-03-26 | 1d | 0d |  | start no earlier than 2003-02-24 | Carol | 16h |  | Carol |
| 45 | 1.5.1.4.2 | Pre-opening Response | 3d | 2003-05-14 | 2003-05-16 | 44 |  |  | 2003-03-20 | 2003-03-20 | 1d | 0d |  |  | Carol | 24h |  | Carol |
| 46 | 1.5.1.4.3 | OneSided Response to Trade | 5d | 2003-05-19 | 2003-05-23 | 45 |  |  | 2003-03-19 | 2003-03-19 | 1d | 0d |  |  | Carol | 40h |  | Carol |
| 47 | 1.5.1.4.4 | Pre-opening Response Cancel | 5d | 2003-05-26 | 2003-05-30 | 46 |  |  | 2003-04-01 | 2003-04-01 | 1d | 0d |  |  | Carol | 40h |  | Carol |
| 48 | 1.5.1.5 | **Admin Message** | 3d | 2003-06-02 | 2003-06-04 |  |  |  | 2003-04-04 | 2003-04-04 | 1d | 0d |  |  | Carol | 24h |  | Carol |
| 49 | 1.5.1.5.1 | Admin Message | 3d | 2003-06-02 | 2003-06-04 | 47 |  |  | 2003-04-29 | 2003-05-01 | 3d | 0d |  | start no earlier than 2003-04-29 |  |  |  |  |
| 50 | 1.6 | **Iteration 3- Mapping to CBOE Objects and Integration with TradeEngine** | 43d | 2003-06-05 | 2003-08-04 | 49 |  |  | 2003-05-02 | 2003-07-21 | 57d | 0d |  |  |  | 336h |  |  |
| 51 | 1.6.1 | **Develop Mapping Code** | 43d | 2003-06-05 | 2003-08-04 |  |  |  | 2003-05-02 | 2003-07-21 | 57d | 0d |  |  |  | 336h |  |  |
| 52 | 1.6.1.1 | **Commitment Message Creation** | 10d | 2003-06-05 | 2003-06-18 |  |  |  | 2003-03-26 | 2003-04-07 | 9d | 26d |  |  |  | 80h |  |  |
| 53 | 1.6.1.1.1 | Inbound commitment to OrderStruct | 5d | 2003-06-05 | 2003-06-11 |  |  |  | 2003-03-26 | 2003-03-26 | 1d | 26d | 0d | start no earlier than 2003-02-24 | Carol | 40h |  | Carol |
| 54 | 1.6.1.1.2 | OrderStruct to Outbound Commitment | 5d | 2003-06-12 | 2003-06-18 | 53 |  |  | 2003-03-26 | 2003-03-26 | 1d | 26d | 0d | start no earlier than 2003-02-24 | Carol | 40h |  | Carol |

| ID | WBS | Task | Duration | Start | Finish | Predecessors | Baseline start | Baseline finish | Baseline duration | Total slack | Free slack | Constraint | Resources | Work | Text1 |
| --- | --- | --- | --- | --- | --- | --- | --- | --- | --- | --- | --- | --- | --- | --- | --- |
| 55 | 1.6.1.2 | **Commitment Cancel Creation** | 9d | 2003-06-19 | 2003-07-01 |  | 2003-03-26 | 2003-04-07 | 9d | 26d |  |  |  | 32h |  |
| 56 | 1.6.1.2.1 | Inbound ITS Cancel to Order Cancel | 4d | 2003-06-19 | 2003-06-24 | 54 | 2003-03-26 | 2003-03-26 | 1d | 26d | 0d | start no earlier than 2003-02-24 | Carol | 32h | Carol |
| 57 | 1.6.1.2.2 | Outbound Order Cancel to Commitment Cancel | 5d | 2003-06-25 | 2003-07-01 | 56 | 2003-05-22 | 2003-05-28 | 5d | 26d |  |  |  |  |  |
| 58 | 1.6.1.3 | **Trade Report Processing** | 20d | 2003-06-05 | 2003-07-02 |  | 2003-03-26 | 2003-04-07 | 9d | 0d |  |  |  | 40h |  |
| 59 | 1.6.1.3.1 | Inbound ITS Trade Report to TradeReport | 5d | 2003-06-05 | 2003-06-11 |  | 2003-03-26 | 2003-03-26 | 1d | 0d |  | start no earlier than 2003-05-22 | Carol | 40h | Carol |
| 60 | 1.6.1.3.2 | Outbound Trade Report(s) to Outbound Response | 15d | 2003-06-12 | 2003-07-02 | 59 | 2003-05-29 | 2003-06-18 | 15d | 0d |  |  |  |  |  |
| 61 | 1.6.1.4 | **PreOpening** | 20d | 2003-07-03 | 2003-07-30 |  | 2003-03-26 | 2003-04-07 | 9d | 0d |  |  |  | 160h |  |
| 62 | 1.6.1.4.1 | Pre-opening Indication | 5d | 2003-07-03 | 2003-07-09 | 60 | 2003-03-26 | 2003-03-26 | 1d | 0d |  | start no earlier than 2003-02-24 | Carol | 40h | Carol |
| 63 | 1.6.1.4.2 | Pre-opening Response | 5d | 2003-07-10 | 2003-07-16 | 62 | 2003-03-20 | 2003-03-20 | 1d | 0d |  |  | Carol | 40h | Carol |
| 64 | 1.6.1.4.3 | OneSided Response to Trade | 5d | 2003-07-17 | 2003-07-23 | 63 | 2003-03-19 | 2003-03-19 | 1d | 0d |  |  | Carol | 40h | Carol |
| 65 | 1.6.1.4.4 | Pre-opening Response Cancel | 5d | 2003-07-24 | 2003-07-30 | 64 | 2003-04-01 | 2003-04-01 | 1d | 0d |  |  | Carol | 40h | Carol |
| 66 | 1.6.1.5 | **Admin Message** | 3d | 2003-07-31 | 2003-08-04 |  | 2003-04-04 | 2003-04-04 | 1d | 0d |  |  | Carol | 24h | Carol |
| 67 | 1.6.1.5.1 | Admin Message | 3d | 2003-07-31 | 2003-08-04 | 65 | 2003-07-17 | 2003-07-21 | 3d | 0d |  | start no earlier than 2003-04-29 |  |  |  |
| 68 | 1.7 | **ITS Simulator** | 13d | 2003-06-05 | 2003-06-23 | 32 | 2003-04-08 | 2003-04-14 | 5d | 32d |  |  | Carol | 104h | Carol |
| 69 | 1.7.1 | Connect ItsAdapter to ITSSimulator Running on Stratus M5 via JBMBoxOR | 3d | 2003-06-05 | 2003-06-09 |  | 2003-05-06 | 2003-05-08 | 3d | 32d | 0d |  |  |  |  |
| 70 | 1.7.2 | Develop ITS Java Simulator | 10d | 2003-06-10 | 2003-06-23 | 69 | 2003-05-09 | 2003-05-22 | 10d | 32d |  |  |  |  |  |
| 71 | 1.8 | ITS Integration Testing | 1d | 2003-08-05 | 2003-08-05 | 67 | 2003-04-08 | 2003-04-14 | 5d | 0d |  |  | Carol | 8h | Carol |
| 72 | 1.9 | **ITS Administration GUI** | 1d | 2003-08-06 | 2003-08-06 | 71 | 2003-04-08 | 2003-04-14 | 5d | 0d |  |  | Carol | 8h | Carol |
| 73 | 1.9.1 | Operations GUI to administer SIAC ITS Lines | 1d | 2003-08-06 | 2003-08-06 |  | 2003-07-23 | 2003-07-23 | 1d | 0d |  |  |  |  |  |
| 74 | 1.9.2 | Help Desk ITS GUI - Enhancement to HelpDesk GUI(Reqs not defined) | 1d | 2003-08-06 | 2003-08-06 |  | 2003-07-23 | 2003-07-23 | 1d | 0d |  |  |  |  |  |

Notes:
- 68: Implemtation of this is to be determined from Adapter Training. / Assumption is either a service or event channel will be used to place the messages to and from the ITS adapter to interested parties.
- 71: Implemtation of this is to be determined from Adapter Training. / Assumption is either a service or event channel will be used to place the messages to and from the ITS adapter to interested parties.
- 72: Implemtation of this is to be determined from Adapter Training. / Assumption is either a service or event channel will be used to place the messages to and from the ITS adapter to interested parties.
