# Stock Project - Final Phase 1

Schedule from MS Project, 2004-01-30 to 2004-03-23, A marks actual dates.
CBOE

## Calendars

- Standard: Mon-Fri 08:00-12:00, 13:00-17:00; Sat-Sun off.

## Resources

| Resource |
| --- |
| Carol |
| Car |
| Sandip |
| Nyoman |
| Crystal |
| Brad |
| Alex / Sandip |
| Crystal / Sandip |
| Sandip / Mike |
| Mike |
| Matt |
| Crystal / Mat |
| Crystal / Matt |
| Sandip / Brad |
| Brad / Sandip |
| Brad / Sandip / Ravi |
| Alex / Nyoman |
| Carol / Nyoman |
| Mike / Crystal |
| Crystal / Mike |
| Jerry / Crystal |

## Schedule

| ID | WBS | Task | Duration | Start | Finish | Predecessors | Baseline start | Baseline finish | Baseline duration | Total slack | Free slack | Resources | Work |
| --- | --- | --- | --- | --- | --- | --- | --- | --- | --- | --- | --- | --- | --- |
| 1 | 1 | **ClearCASE** | 0.25d | 2004-01-30 | 2004-01-30 |  |  |  |  | 37.75d |  |  | 2h |
| 2 | 1.1 | Move documentation in stock vob to the documents vob for stock. | 0.25d | 2004-01-30 | 2004-01-30 |  |  |  |  | 4.75d |  | Sandip | 2h |
| 3 | 2 | **Defect Correction** | 1d? | 2004-01-30 | 2004-01-30 |  | 2004-01-30 | 2004-01-30 | 1d? | 37d |  |  | 16h |
| 4 | 2.1 | Recap is not providing trade quantity - Waiting for TIPS changes | 1d? | 2004-01-30 | 2004-01-30 |  |  |  |  | 37d |  | Jerry / Crystal | 8h |
| 5 | 2.2 | Compass Adapter is not getting quantity in TLTC field from SBT. Same test works in SBT. Sasha is researching. Update: Investigating if this is a problem or not. | 1d? | 2004-01-30 | 2004-01-30 |  |  |  |  | 4d |  | Alex / Sandip | 8h |
| 6 | 3 | **Intermarket Trading System** | 7.5d | 2004-01-30 | 2004-02-10 |  | 2004-01-30 | 2004-01-30 | 1d? | 0d |  |  | 66h |
| 7 | 3.1 | Handling of POC's | 0.5d | 2004-02-10 | 2004-02-10 | 8 | 2004-01-30 | 2004-01-30 | 1d? | 30.5d |  | Carol | 4h |
| 8 | 3.2 | One sided response/POR - Inbound | 1d | 2004-02-09 | 2004-02-09 | 9 | 2004-01-30 | 2004-01-30 | 1d? | 30.5d | 0d | Carol | 8h |
| 9 | 3.3 | Test Sending Help Desk Message | 1d | 2004-02-06 | 2004-02-06 | 12 | 2004-01-30 | 2004-01-30 | 1d? | 30.5d | 0d | Carol | 8h |
| 10 | 3.4 | ITS Admin Table to be truncated at the end of the Day | 0.25d | 2004-02-04 | 2004-02-04 | 32, 11 | 2004-01-30 | 2004-01-30 | 1d? | 34.75d |  | Carol | 2h |
| 11 | 3.5 | Handling of multiple POR's [Cancel an existing one and replace it with the new one for the case when CBOE is primary] | 3d | 2004-01-30 | 2004-02-03 |  | 2004-01-30 | 2004-01-30 | 1d? | 0d |  | Carol | 24h |
| 12 | 3.6 | Cancel an incoming POR/ POI and POC for a product for which CBOE is not primary | 2d | 2004-02-04 | 2004-02-05 | 11 | 2004-01-30 | 2004-01-30 | 1d? | 0d |  | Sandip | 16h |
| 13 | 3.7 | DPM should enter a rolled up version of the orders to the system based on multiple admin messages for the POR [more] | 0.5d | 2004-01-30 | 2004-01-30 |  | 2004-01-30 | 2004-01-30 | 1d? | 37.5d |  | Sandip | 4h |
| 14 | 4 | **Failover** | 6d? | 2004-02-04 | 2004-02-11 |  |  |  |  | 15.75d |  |  | 24h |
| 15 | 4.10 | Check to see if any of the processes come up in the slave mode | 1d? | 2004-02-04 | 2004-02-04 | 33 |  |  |  | 29d | 0d | Crystal | 8h |
| 16 | 3.8 | Failover testing for ITS | 2d | 2004-02-10 | 2004-02-11 | 15, 24, 44 | 2004-01-30 | 2004-01-30 | 1d? | 15.75d | 0d | Crystal | 16h |
| 17 | 4 | **Miscellaneous Tasks** | 38d? | 2004-01-30 | 2004-03-23 |  |  |  |  | 0d |  |  | 70h |
| 18 | 4.1 | X-Dividend CFN Adapter | 3d | 2004-02-06 | 2004-02-10 | 53 |  |  |  | 27d | 0d | Nyoman | 24h |
| 19 | 4.3 | prepBatch in setContext | 0.25d | 2004-01-30 | 2004-01-30 |  |  |  |  | 37.75d |  | Matt | 2h |
| 20 | 4.5 | Change the trading property scripts to add stock trading properties | 1d | 2004-02-25 | 2004-02-25 | 39 |  |  |  | 0d |  | Crystal / Sandip | 8h |
| 21 | 4.6 | Include the W_STOCK session in the function setEmailListForSession() in the setContext file. | 0.5d | 2004-02-26 | 2004-02-26 | 71 |  |  |  | 18.5d |  | Crystal | 4h |
| 22 | 4.7 | TipsBOTRProcessThread . Issues with the mentioned file. Need to get it resolved by Jack / Henry | 1d | 2004-02-26 | 2004-02-26 | 20 |  |  |  | 0d |  | Sandip | 8h |
| 23 | 4.8 | look into the Stock Trade Validation Strategy Impl to update the method that does trade validation for stock. Merge has created some issued with this method [public void validateUpdateTrade(TradeReportEntry entry, AtomicTradeStruct atomicTrade ) | 1d | 2004-02-06 | 2004-02-06 | 12 |  |  |  | 32d |  | Sandip | 8h |
| 24 | 4.9 | Check to see the Calendar Admin Service related problem | 1d? | 2004-02-05 | 2004-02-05 | 33, 15 |  |  |  | 29d | 0d | Crystal | 8h |
| 25 | 4.11 | Configure HAPS printer to test compass rejects | 1d? | 2004-01-30 | 2004-01-30 |  |  |  |  | 37d |  |  |  |
| 26 | 4.12 | Check all the different types of Orders that we accept into our system | 1d? | 2004-03-23 | 2004-03-23 | 65 |  |  |  | 0d |  | Sandip / Mike | 8h |

| ID | WBS | Task | Type | Duration | Start | Finish | Predecessors | Complete | Remaining | Total slack | Free slack | Resources | Work | Actual work |
| --- | --- | --- | --- | --- | --- | --- | --- | --- | --- | --- | --- | --- | --- | --- |
| 27 | 5 | **MarketOpen CBOE is not Primary** |  | 3d? | 2004-01-30 | 2004-02-03 |  |  |  | 32d |  |  | 8h |  |
| 28 | 5.1 | Change for Exception Codes for Market Open | milestone | 0d | 2004-01-30 | 2004-01-30 |  |  |  | 38d |  | Sandip |  |  |
| 29 | 5.2 | Test Buy/Sell Quantity. Awaiting for rebase and merge |  | 1d? | 2004-02-03 | 2004-02-03 | 36 |  |  | 30d | 0d | Mike | 8h |  |
| 30 | 6 | **Environment Rebase Tasks** |  | 4d? | 2004-01-30 | 2004-02-04 |  |  |  | 3d |  |  | 72h |  |
| 31 | 6.1 | Install linkage on assr1c01b |  | 2d | 2004-01-30 | 2004-02-02 |  |  |  | 29d | 0d | Crystal | 16h |  |
| 32 | 6.2 | Install DEVENV1 [test2/test2] |  | 2d | 2004-01-30 | 2004-02-02 |  |  |  | 3d | 0d | Matt | 16h |  |
| 33 | 6.3 | Creation of Scripts for the DB tables |  | 1d? | 2004-02-03 | 2004-02-03 | 31, 32 |  |  | 29d | 0d | Crystal / Matt | 8h |  |
| 34 | 6.4 | Install DEVENV1 [Test8/test8] |  | 4d | 2004-01-30 | 2004-02-04 |  |  |  | 34d |  | Crystal / Sandip | 32h |  |
| 35 | 7 | **Equity Trade Server Tasks** |  | 22.25d | 2004-01-30 | 2004-03-02 |  |  |  | 15.75d |  |  | 32h |  |
| 36 | 7.1 | Make the sell short rule changes so as not to be able to trade in a down tick |  | 2d | 2004-01-30 | 2004-02-02 |  |  |  | 30d | 0d | Mike | 16h |  |
| 37 | 7.2 | Ar - Display RECAP by session. This will same as the displayNBBO command |  | 2d | 2004-02-27 | 2004-03-02 | 69 |  |  | 15.75d |  | Crystal | 16h |  |
| 38 | 8 | **Documentation** |  | 20d | 2004-02-06 | 2004-03-04 |  |  |  | 8d |  |  | 84h |  |
| 39 | 8.1 | Operator Procedure document update |  | 5d | 2004-02-18 | 2004-02-24 | 62 |  |  | 0d |  | Sandip / Brad | 40h |  |
| 40 | 8.2 | Configuration Guide update |  | 5d | 2004-02-27 | 2004-03-04 | 22 |  |  | 0d |  | Sandip / Brad | 40h |  |
| 41 | 8.3 | Document the code changes and test cases for the Session related changes in ETS |  | 0.5d | 2004-02-06 | 2004-02-06 | 24 |  |  | 32.5d |  | Crystal | 4h |  |
| 42 | 9 | **Rollout Preparation** |  | 31d? | 2004-02-06 | 2004-03-19 |  |  |  | 0d |  |  | 136h |  |
| 43 | 9.1 | Rollout Procedure - Trading Properties Scripts/Docs |  | 1d? | 2004-03-05 | 2004-03-05 | 40 |  |  | 0d |  | Brad / Sandip | 8h |  |
| 44 | 9.2 | Update Environment Scripts and Test( startTESystem, etc ) |  | 2d | 2004-02-06 | 2004-02-09 | 24 |  |  | 29d | 0d | Crystal | 16h |  |
| 45 | 9.3 | Prepare the EOD document and the related scripts. Also check for the NEW RIO format. |  | 5d | 2004-03-15 | 2004-03-19 | 46 |  |  | 0d |  | Sandip / Brad | 40h |  |
| 46 | 9.4 | Prepare the necessary documents / processes for Patrol |  | 5d | 2004-03-08 | 2004-03-12 | 43 |  |  | 0d |  | Brad / Sandip / Ravi | 40h |  |
| 47 | 9.5 | Acceptance Test Plan |  | 4d | 2004-02-10 | 2004-02-13 | 61, 70 |  |  | 0d |  | Sandip / Mike | 32h |  |
| 48 | 10 | **External Team Tasks** |  | 13d | 2004-01-30 A | 2004-02-17 |  | 33% | 8.67d | 25d |  |  | 48h | 16h |
| 49 | 10.1 | Setting up Test Environment |  | 2d | 2004-02-16 | 2004-02-17 | 55 |  |  | 21d | 0d | Alex / Nyoman | 16h |  |
| 50 | 10.2 | TIPS Changes for last sale quantity and tick dir. |  | 2d | 2004-01-30 | 2004-02-02 |  |  |  | 36d |  | Brad / Sandip | 16h |  |
| 51 | 10.3 | CAS Simulator changes for User Enablements |  | 2d | 2004-01-30 A | 2004-02-02 A |  | 100% |  |  |  | Nyoman | 16h | 16h |

| ID | WBS | Task | Duration | Start | Finish | Predecessors | Complete | Remaining | Total slack | Free slack | Constraint | Resources | Work | Actual work |
| --- | --- | --- | --- | --- | --- | --- | --- | --- | --- | --- | --- | --- | --- | --- |
| 52 | 11 | **Stock CFN Tasks** | 11d | 2004-01-30 | 2004-02-13 |  |  |  | 21d |  |  |  | 64h |  |
| 53 | 11.1 | Stock Integration to CFN Adapter | 5d | 2004-01-30 | 2004-02-05 |  |  |  | 27d | 0d |  | Nyoman | 40h |  |
| 54 | 12.3 | Add the admin consumer for Inbound SIAC messages | 1d | 2004-02-11 | 2004-02-11 | 18 |  |  | 21d | 0d |  | Nyoman | 8h |  |
| 55 | 12.4 | Persist the incoming messages and send it to helpdesk | 2d | 2004-02-12 | 2004-02-13 | 54 |  |  | 21d | 0d |  | Nyoman | 16h |  |
| 56 | 12 | **Stock GUI Enhancements** | 17d | 2004-01-30 A | 2004-02-23 |  | 19% | 13.76d | 21d |  |  |  | 42h | 8h |
| 57 | 12.1 | Trader/User Preferences | 4d | 2004-02-18 | 2004-02-23 | 49 |  |  | 21d |  |  | Nyoman | 32h |  |
| 58 | 12.2 | Add a screen to enter a cancel POR | 1d | 2004-01-30 A | 2004-01-30 A |  | 100% |  |  |  |  | Nyoman | 8h | 8h |
| 59 | 12.5 | Find from Bob Peterson on how to test the rejection of inbound messages from ITS | 0.25d | 2004-01-30 | 2004-01-30 |  |  |  | 37.75d |  |  | Carol / Nyoman | 2h |  |
| 60 | 13 | **Unit Testing Tasks** | 34d | 2004-02-04 | 2004-03-22 |  |  |  | 1d |  |  |  | 170h |  |
| 61 | 13.1 | Market Open Testing CBOE is primary | 1d | 2004-02-06 | 2004-02-06 | 32, 12 |  |  | 0d |  |  | Sandip / Mike | 8h |  |
| 62 | 13.2 | Market Open Testing CBOE is not primary | 2d | 2004-02-16 | 2004-02-17 | 47 |  |  | 0d |  | start no earlier than 2004-01-30 | Sandip / Mike | 16h |  |
| 63 | 13.3 | Trade Bust Testing | 2d | 2004-02-04 | 2004-02-05 | 29 |  |  | 30d | 0d |  | Mike | 16h |  |
| 64 | 13.4 | Done Order Testing | 1d | 2004-02-06 | 2004-02-06 | 63 |  |  | 30d | 0d |  | Mike | 8h |  |
| 65 | 13.5 | Check the trade settlement dates in the DB | 1d | 2004-03-22 | 2004-03-22 | 45 |  |  | 0d |  |  | Sandip / Mike | 8h |  |
| 66 | 13.7 | Test the Trade Through Monitoring Service | 1d | 2004-02-09 | 2004-02-09 | 64 |  |  | 30d | 0d |  | Mike | 8h |  |
| 67 | 13.8 | Event channel publishing is correct. | 1d | 2004-02-10 | 2004-02-10 | 66 |  |  | 30d |  |  | Mike / Crystal | 8h |  |
| 68 | 13.9 | Test STOP / STOP Limit after the Session related changes | 1d | 2004-02-26 | 2004-02-26 | 71 |  |  | 15.75d | 0d |  | Crystal / Mike | 8h |  |
| 69 | 13.10 | Test that the DPM can see a list of Admin Messages for POR and then enter a rolled up order for all the messages | 0.25d | 2004-02-27 | 2004-02-27 | 68 |  |  | 15.75d | 0d |  | Crystal | 2h |  |
| 70 | 13.11 | Contact Chris Hield for getting the test script to pump data (Orders and Quotes) into the ETS system | 1d | 2004-02-09 | 2004-02-09 | 61 |  |  | 0d |  |  | Sandip | 8h |  |
| 71 | 14.11 | ITS Test Cases | 10d | 2004-02-12 | 2004-02-25 | 16 |  |  | 15.75d | 0d | start no earlier than 2004-02-12 | Crystal | 80h |  |
